# Foggia

Schedule from Primavera P6, 2021-09-07 to 2024-11-26, data date 2023-07-07, A marks actual dates.

## Calendars

- Foggia_5x8 w/ Holidays: Mon-Fri 08:00-16:00; Sat-Sun off. Exceptions (off unless hours are given): 2021-11-11, 2021-11-25 to 2021-11-26, 2021-12-24, 2021-12-27, 2021-12-31, 2022-01-03, 2022-01-17, 2022-02-21, 2022-05-30, 2022-06-20, 2022-07-04, 2022-09-05, 2022-11-11, 2022-11-24 to 2022-11-25, 2022-12-23, 2022-12-26 to 2022-12-30, 2023-01-02, 2023-01-16, 2023-02-20, 2023-05-29, 2023-06-19, 2023-07-04, 2023-09-04, 2023-11-10, 2023-11-23 to 2023-11-24, 2023-12-25 to 2023-12-29, 2024-01-01 to 2024-01-02, 2024-01-15, 2024-02-19, 2024-05-27, 2024-06-19, 2024-07-04.
- Foggia_7x8 No Holidays: Mon-Sun 8:00-16:00.
- Foggia_5x8 No Holidays: Mon-Fri 8:00-16:00; Sat-Sun off.
- Foggia_6x8 w/ Holidays: Mon-Sat 8:00-16:00; Sun off. Exceptions (off unless hours are given): 2021-11-11, 2021-11-25 to 2021-11-26, 2021-12-24 to 2021-12-25, 2021-12-31 to 2022-01-01, 2022-01-17, 2022-02-21, 2022-05-30, 2022-06-20, 2022-07-04, 2022-09-05, 2022-11-11, 2022-11-24 to 2022-11-25, 2022-12-24, 2022-12-26, 2022-12-31, 2023-01-02, 2023-01-16, 2023-02-20, 2023-05-29, 2023-06-19, 2023-07-04, 2023-09-04, 2023-11-11, 2023-11-23 to 2023-11-24, 2023-12-23, 2023-12-25, 2024-01-01.
- Foggia_6x8 No Holidays: Mon-Sat 8:00-16:00; Sun off.

## Schedule

| ID | WBS | Activity | Type | Duration | Start | Finish | Predecessors | Complete | Planned start | Planned finish | Total float | Free float | Constraint | Calendar | Requested Expected Finish Approved | MSP Activity ID | Pre-requisites | BL Comp | Substation Activities | ETL Milestones | LEVELS | Scope | Execution Teams | Key Milestone? | Activity Note | Executive Level Reporting |
| --- | --- | --- | --- | --- | --- | --- | --- | --- | --- | --- | --- | --- | --- | --- | --- | --- | --- | --- | --- | --- | --- | --- | --- | --- | --- | --- |
|  | WBS1 | **Key Milestones** |  |  | 2021-09-07 | 2024-11-26 |  |  |  |  |  |  |  |  |  |  |  |  |  |  |  |  |  |  |  |  |
| KM2000 |  | EPC Kickoff | milestone | 0d | 2021-09-07 A | 2021-09-07 A | PRO.1000 SS | 100% | 2021-10-26 | 2021-10-26 |  |  |  |  | N | 18 | ENG_PREREQ | True | True | EKO | LV1 | KEY |  |  |  |  |
| KM1000 |  | Engineering RFP | milestone | 0d | 2021-10-08 A | 2021-10-08 A | ENG.1000 SS | 100% | 2021-12-09 | 2021-12-09 |  |  |  | Foggia_7x8 No Holidays | N | 2 |  |  |  |  | LV1 | KEY | Blue Team | True |  |  |
| KM1020 |  | Construction Start / Mobilization | milestone | 0d | 2022-07-05 A | 2022-07-05 A | P4.CIV.1000 SS | 100% | 2022-07-11 | 2022-07-11 |  |  |  | Foggia_7x8 No Holidays | N | 6 |  | True |  | CS | LV1 | KEY | Blue Team | True |  |  |
| KM1010 |  | Ready for Construction | milestone | 0d | 2022-10-01 A | 2022-10-01 A | A18810 | 100% |  |  |  |  | start on or after 2022-10-01 | Foggia_7x8 No Holidays | N | 4 |  | True | True | RFC | LV1 | KEY | Blue Team | True |  |  |
| KM1050 |  | Substation Pad Turnover Date | milestone | 0d | 2022-10-17 A | 2022-10-17 A | SUB1040 FF | 100% |  |  |  |  |  | Foggia_7x8 No Holidays | N | 8 |  |  | True |  | LV1 | KEY |  |  | This need to move out. Not enough time | Level 1 |
| KM1070 |  | Anticipated Commercial Operation Date | milestone | 0d | 2024-03-25 | 2024-03-25 | CX1010 FF |  |  |  | 0d |  |  | Foggia_7x8 No Holidays | N | 10 |  |  | True | COD | LV1 | KEY |  |  |  |  |
| KM1090 |  | Anticipated Substantial Completion Date | milestone | 0d | 2024-06-04 | 2024-06-04 | CX1030 FF |  |  |  | 0d |  |  | Foggia_7x8 No Holidays | N | 13 |  | True | True | SC | LV1 | KEY | Blue Team | True |  |  |
| KM1080 |  | Guaranteed Substantial Completion Date | milestone | 0d | 2024-06-14 | 2024-06-14 |  |  |  |  | 0d | 166d | finish on 2024-06-14 | Foggia_7x8 No Holidays | N | 12 |  |  | True |  | LV1 | KEY | Blue Team | True |  |  |
| KM1100 |  | Anticipated Final Completion | milestone | 0d | 2024-11-26 | 2024-11-26 | PC1000 FF |  |  |  | 0d |  |  | Foggia_7x8 No Holidays | N | 16 |  |  |  | FC | LV1 | KEY | Blue Team | True |  |  |
|  | WBS2 | **Project Milestones** |  |  | 2023-08-07 | 2024-03-08 |  |  |  |  |  |  |  |  |  |  |  |  |  |  |  |  |  |  |  |  |
|  | WBS1277 | **Anticipated MC** |  |  | 2023-08-07 | 2023-12-21 |  |  |  |  |  |  |  |  |  |  |  |  |  |  |  |  |  |  |  |  |
| PM1060 |  | Anticipated Mechanical Completion Date Phase 1 | milestone | 0d | 2023-08-07 | 2023-08-07 | P1.CX.1050 FF, P1.CX.1090 FF, P1.WM.1000 FF, P1.MV.1020 FF, A18920 FF |  |  |  | 85d | 0d |  | Foggia_7x8 No Holidays | N | 22 |  | True |  |  | LV1 | MC | Blue Team | True |  |  |
| PM1070 |  | Anticipated Mechanical Completion Date Phase 2 | milestone | 0d | 2023-09-13 | 2023-09-13 | P2.CX.1090 FF, P2.CX.1050 FF, P2.CX.1070 FF, P2.WM.1000 FF, P2.CX.1040 FF, P2.CX.1030 FF, P2.MV.1020 FF |  |  |  | 50d | 0d |  | Foggia_7x8 No Holidays | N | 30 |  | True |  |  | LV1 | MC | Blue Team | True |  |  |
| PM1080 |  | Anticipated Mechanical Completion Date Phase 3 | milestone | 0d | 2023-10-25 | 2023-10-25 | P3.CX.1050 FF, P3.CX.1070 FF, P3.CX.1090 FF, P3.WM.1000 FF, P3.CX.1030 FF, P3.CX.1040 FF, P3.MV.1020 FF |  |  |  | 20d | 0d |  | Foggia_7x8 No Holidays | N | 37 |  | True |  |  | LV1 | MC | Blue Team | True |  |  |
| PM1090 |  | Anticipated Mechanical Completion Date Phase 4 | milestone | 0d | 2023-12-21 | 2023-12-21 | P4.MT.1000 FF, P4.CX.1070 FF, P4.FT.1000 FF, P4.CX.1050 FF, P4.CX.1100 FF, P4.WM.1000 FF, A14130 FF, P4.CX.1040 FF, P4.CX.1030 FF, P4.MV.1020 FF |  |  |  | 0d |  |  | Foggia_7x8 No Holidays | N | 44 |  | True |  | MC | LV1 | MC | Blue Team | True |  |  |
|  | WBS1287 | **Placed in Service** |  |  | 2023-10-20 | 2024-03-08 |  |  |  |  |  |  |  |  |  |  |  |  |  |  |  |  |  |  |  |  |
| PM1110 |  | Anticipated PIS Date Phase 2 | milestone | 0d | 2023-10-20 | 2023-10-20 | P2.CX.1150 FF |  |  |  | 56d | 118d | finish on or before 2023-12-15 | Foggia_7x8 No Holidays | N | 55 |  | True |  |  | LV1 | PIS | Blue Team | True |  |  |
| PM1120 |  | Anticipated PIS Date Phase 1 | milestone | 0d | 2023-10-25 | 2023-10-25 | P1.CX.1150 FF |  |  |  | 51d | 113d | finish on or before 2023-12-15 | Foggia_7x8 No Holidays | N | 57 |  | True |  |  | LV1 | PIS | Blue Team | True |  |  |
| PM1140 |  | Guaranteed PIS Date Phase 1 | milestone | 0d | 2023-12-15 | 2023-12-15 |  |  |  |  | 0d | 235.75d | finish on 2023-12-15 |  |  | 61 |  |  |  |  | LV1 | PIS |  |  |  |  |
| PM1150 |  | Guaranteed PIS Date Phase 2 | milestone | 0d | 2023-12-15 | 2023-12-15 |  |  |  |  | 0d | 235d | finish on 2023-12-15 |  |  | 62 |  |  |  |  | LV1 | PIS |  |  |  |  |
| PM1130 |  | Anticipated PIS Date Phase 3 | milestone | 0d | 2024-01-29 | 2024-01-29 | P3.CX.1150 FF |  |  |  | 17d |  |  | Foggia_7x8 No Holidays | N | 59 |  | True |  |  | LV1 | PIS | Blue Team | True |  |  |
| PM1100 |  | Anticipated PIS Date Phase 4 | milestone | 0d | 2024-02-15 | 2024-02-15 | P4.CX.1150 FF |  |  |  | 0d |  |  | Foggia_7x8 No Holidays | N | 53 |  | True |  | PIS | LV1 | PIS | Blue Team | True |  |  |
| PM1160 |  | Guaranteed PIS Date Phase 3 | milestone | 0d | 2024-03-08 | 2024-03-08 |  |  |  |  | 0d | 184d | finish on 2024-03-08 |  |  | 63 |  |  |  |  | LV1 | PIS |  |  |  |  |
| PM1170 |  | Guaranteed PIS Date Phase 4 | milestone | 0d | 2024-03-08 | 2024-03-08 |  |  |  |  | 0d | 184d | finish on 2024-03-08 |  |  | 64 |  |  |  |  | LV1 | PIS |  |  |  |  |

| ID | WBS | Activity | Type | Duration | Start | Finish | Predecessors | Complete | Remaining | Planned start | Planned finish | Total float | Free float | Requested Expected Finish Approved | MSP Activity ID | Executive Level Reporting | ETL Milestones | Pre-requisites | Substation Activities | Department | PBB | Requested Expected Finish | Current Notes | Activity Note |
| --- | --- | --- | --- | --- | --- | --- | --- | --- | --- | --- | --- | --- | --- | --- | --- | --- | --- | --- | --- | --- | --- | --- | --- | --- |
|  | WBS11 | **Levels of Effort** |  |  | 2022-07-05 | 2024-06-04 |  |  |  |  |  |  |  |  |  |  |  |  |  |  |  |  |  |  |
| A14130 |  | Construction LoE | level of effort | 311d | 2022-07-05 A | 2023-12-21 | KM1020 SS | 63% | 114d | 2022-07-11 | 2023-10-17 | 0d |  | N | 51 | Level 1 | Constr |  |  |  |  |  |  |  |
| A18690 |  | Civil LoE | level of effort | 187d | 2022-07-05 A | 2023-04-28 A | KM1020 SS | 100% |  | 2022-07-11 | 2023-04-14 |  |  | N | 86 | Level 1 | Civil |  |  |  |  |  |  |  |
| A14110 |  | Electrical LoE | level of effort | 262d | 2022-11-07 A | 2023-12-21 | P4.WM.1000 FF, P1.MV.1000 SS | 56% | 114d | 2023-03-06 | 2024-03-27 | 0d |  | N | 77 | Level 1 | ElecLoE |  |  |  |  |  |  |  |
| A14030 |  | Piles LoE | level of effort | 101d | 2022-11-29 A | 2023-06-28 A | P1.RF.1000 SS | 100% |  | 2022-12-14 | 2023-05-16 |  |  | N | 66 | Level 1 | Piles |  |  |  |  |  |  |  |
| A14060 |  | Mechanical LoE | level of effort | 171d | 2022-11-29 A | 2023-09-29 | P1.RF.1000 SS | 66% | 58d | 2022-12-14 | 2023-08-25 | 37d | 0d | N | 73 | Level 1 | Mech |  |  |  |  |  |  |  |
| A14040 |  | Racking LoE | level of effort | 134d | 2023-02-03 A | 2023-07-25 | P1.RA.1000 SS, P1.RA.1010 SS | 91% | 12d | 2023-02-06 | 2023-08-22 | 56.5d | 0d | N | 68 | Level 1 | Racking |  |  |  |  |  |  |  |
| A14100 |  | POI LoE | level of effort | 100d | 2023-03-09 A | 2023-09-20 | SUB1050 SS, SUB1320 FF | 49% | 51d | 2023-03-15 | 2023-08-07 | 34d | 0d | N | 74 |  | POI |  |  |  |  |  |  |  |
| A14050 |  | Modules LoE | level of effort | 116.5d | 2023-03-10 A | 2023-09-29 | P1.MO.1000 SS | 50% | 58d | 2023-03-10 | 2023-08-24 | 37d | 0d | N | 71 | Level 1 | Modules |  |  |  |  |  |  |  |
| A18640 |  | Commissioning LoE | level of effort | 222d | 2023-07-10 | 2024-06-04 | KM1090 FF |  |  |  |  | 0d |  | N | 15 | Level 1 | CX |  |  |  |  |  |  |  |
|  | WBS21 | **Big Three Selection** |  |  | 2021-09-07 | 2022-01-28 |  |  |  |  |  |  |  |  |  |  |  |  |  |  |  |  |  |  |
| PRO.1000 |  | Dev/ENG Kickoff |  | 5d | 2021-09-07 A | 2021-09-13 A |  | 100% |  |  |  |  |  | N | 19 |  |  | ENG_PREREQ |  |  |  |  |  |  |
| PRO.1010 |  | Equipment Selections |  | 15d | 2021-09-14 A | 2022-01-24 A | PRO.1000 | 100% |  | 2021-09-14 | 2021-10-04 |  |  | N | 88 |  |  | ENG_PREREQ | True |  |  |  |  |  |
| PRO.1020 |  | Select Equipment Procurement | milestone | 0d | 2022-01-24 A | 2022-01-24 A | PRO.1010 FF | 100% |  | 2022-01-25 | 2022-01-25 |  |  | N | 89 |  |  | ENG_PREREQ | True |  |  |  |  |  |
| PRO.1030 |  | Managerial Sign-Off |  | 2d | 2022-01-25 A | 2022-01-26 A | PRO.1010 | 100% |  | 2021-10-05 | 2021-10-06 |  |  | N | 90 |  |  | ENG_PREREQ | True |  |  |  |  |  |
| PRO.1040 |  | Engineering Kickoff Meeting |  | 2d | 2022-01-26 A | 2022-01-27 A | PRO.1030 | 100% |  | 2021-10-06 | 2021-10-07 |  |  | N | 91 |  |  | ENG_PREREQ | True |  |  |  |  |  |
| PRO.1050 |  | Construction PM/ENG Sign-Off |  | 2d | 2022-01-27 A | 2022-01-28 A | PRO.1040 | 100% |  | 2021-10-07 | 2021-10-08 |  |  | N | 92 |  |  | ENG_PREREQ | True |  |  |  |  |  |
|  | WBS3 | **Engineering** |  |  | 2021-10-08 | 2023-03-08 |  |  |  |  |  |  |  |  |  |  |  |  |  |  |  |  |  |  |
| A18810 |  | Permits |  | 5d | 2022-05-02 A | 2022-09-30 A |  | 100% |  | 2022-09-19 | 2022-09-23 |  |  |  | 5 |  |  |  |  |  |  |  |  |  |
| ENG.1200 |  | Electrical Redesign |  | 5d | 2022-06-03 A | 2022-07-15 A |  | 100% |  | 2022-06-27 | 2022-07-01 |  |  | N | 94 |  |  |  |  |  |  |  |  |  |
|  | WBS1267 | **Generation Engineering** |  |  | 2021-10-08 | 2022-12-21 |  |  |  |  |  |  |  |  |  |  |  |  |  |  |  |  |  |  |
| ENG.1000 |  | Engineering RFP |  | 10d | 2021-10-08 A | 2021-11-01 A |  | 100% |  | 2021-10-13 | 2021-10-26 |  |  | N | 3 |  | ENG RFP |  |  | ENG |  |  |  |  |
| ENG.1010 |  | Constraints Map |  | 5d | 2021-10-12 A | 2021-12-13 A | ENG.1000 | 100% |  | 2021-11-01 | 2021-11-05 |  |  | N | 96 |  |  |  |  | ENG |  |  |  |  |
| ENG.1020 |  | PRESET |  | 6d | 2021-12-07 A | 2022-03-10 A | ENG.1010 SS | 100% |  | 2021-11-08 | 2021-11-16 |  |  | N | 97 |  |  | PROC_PREREQ |  | ENG | PBB_PRESET |  |  |  |
| ENG.1030 |  | IFP - Civil PV - DRAFT |  | 35d | 2021-12-20 A | 2022-04-08 A | ENG.1020 FF | 100% |  | 2022-01-20 | 2022-03-10 |  |  | N | 98 |  |  |  |  | ENG |  | 2022-04-08 |  |  |
| ENG.1040 |  | IFP - Structural BOS |  | 45d | 2021-12-20 A | 2022-04-30 A | ENG.1020 FF | 100% |  | 2022-01-20 | 2022-03-24 |  |  | N | 99 |  |  |  |  | ENG |  |  |  |  |
| ENG.1050 |  | IFP - Structural Racking |  | 42d | 2021-12-20 A | 2022-07-28 A | ENG.1020 FF | 100% |  | 2022-01-20 | 2022-03-21 |  |  | N | 100 |  |  |  |  | ENG |  | 2022-07-28 | 90% foundation plans rec'd. Pile plan in progress. | Adjusted based on Terracon Contract |
| ENG.1060 |  | Pre-Con SLD |  | 15d | 2021-12-20 A | 2022-03-04 A | ENG.1020 SS, ENG.1010 | 100% |  | 2022-01-10 | 2022-01-31 |  |  | N | 101 |  |  | PROC_PREREQ |  | ENG | PBB_Pre-Con SLD |  |  |  |
| ENG.1070 |  | IFP - Civil Sub - DRAFT |  | 5d | 2021-12-20 A | 2022-04-08 A | ENG.1020 FF | 100% |  | 2021-12-14 | 2021-12-20 |  |  | N | 102 |  |  |  |  | ENG |  | 2022-04-08 |  |  |
| ENG.1080 |  | IFP - Electrical PV - DRAFT |  | 35d | 2022-01-19 A | 2022-03-30 A | ENG.1020 FF | 100% |  | 2022-01-20 | 2022-03-10 |  |  | N | 103 |  |  |  |  | ENG |  |  |  |  |
| ENG.1100 |  | IFP - Electrical PV - FINAL |  | 10d | 2022-03-31 A | 2022-05-13 A | ENG.1080 | 100% |  | 2022-03-31 | 2022-04-13 |  |  | N | 104 |  |  |  |  | ENG | PBB_IFP_ELEC | 2022-05-13 |  |  |
| ENG.1110 |  | IFP - Civil PV - FINAL |  | 10d | 2022-04-11 A | 2022-04-29 A | ENG.1030 | 100% |  | 2022-04-13 | 2022-04-26 |  |  | N | 105 |  |  |  |  | ENG |  | 2022-04-29 |  |  |
| ENG.1120 |  | IFP - Civil Sub - FINAL |  | 9d | 2022-04-11 A | 2022-04-29 A | ENG.1070 | 100% |  | 2022-04-14 | 2022-04-26 |  |  | N | 106 |  |  |  |  | ENG |  |  |  |  |
| ENG.1140 |  | IFC - Structural BOS |  | 20d | 2022-07-29 A | 2022-08-26 A | ENG.1200, ENG.1100 FS+10d, ENG.1040 | 100% |  | 2022-09-06 | 2022-10-03 |  |  | N | 108 |  |  |  |  | ENG |  |  |  |  |
| ENG.1150 |  | IFC - Electrical PV |  | 20d | 2022-07-29 A | 2022-08-26 A | ENG.1100 FS+10d, ENG.1200 | 100% |  | 2022-09-06 | 2022-10-03 |  |  | N | 109 |  |  |  |  | ENG | PBB_IFC_ELEC |  |  |  |
| ENG.1170 |  | IFC - Structural Racking |  | 20d | 2022-07-29 A | 2022-09-20 A | ENG.1100 FS+10d, ENG.1050, ENG.1200 | 100% |  | 2022-09-12 | 2022-10-07 |  |  | N | 110 |  |  |  |  | ENG |  |  |  |  |
| ENG.1180 |  | IFC - Civil PV |  | 5d | 2022-07-29 A | 2022-08-10 A | ENG.1110 FS+10d, ENG.1200 | 100% |  | 2022-09-06 | 2022-09-12 |  |  | N | 111 |  |  |  |  | ENG |  |  |  |  |
| ENG.1190 |  | IFC - Civil Sub |  | 5d | 2022-07-29 A | 2022-08-10 A | ENG.1120 FS+10d, ENG.1200 | 100% |  | 2022-09-06 | 2022-09-12 |  |  | N | 112 |  |  |  |  | ENG |  |  |  |  |
| ENG.1130 |  | IFC - SCADA PV |  | 20d | 2022-10-03 A | 2022-12-21 A | ENG.1200, ENG.1100 FS+10d | 100% |  | 2022-10-03 | 2022-10-28 |  |  | N | 107 |  |  |  |  | ENG |  |  |  |  |

| ID | WBS | Activity | Duration | Start | Finish | Predecessors | Complete | Remaining | Planned start | Planned finish | Total float | Free float | Constraint | Expected finish | Calendar | Requested Expected Finish Approved | MSP Activity ID | Department | ETL Procurement Scope | ETL Procurement Task | Executive Level Reporting | PBB | LEVELS | Scope |
| --- | --- | --- | --- | --- | --- | --- | --- | --- | --- | --- | --- | --- | --- | --- | --- | --- | --- | --- | --- | --- | --- | --- | --- | --- |
|  | WBS1297 | **Interconnection Engineering** |  | 2022-07-25 | 2023-03-08 |  |  |  |  |  |  |  |  |  |  |  |  |  |  |  |  |  |  |  |
| A18740 |  | 90% IFR Design | 50d | 2022-07-25 A | 2022-11-11 A |  | 100% |  | 2022-07-25 | 2022-10-03 |  |  |  |  |  | N | 114 | ENG |  |  |  |  |  |  |
| A18760 |  | 90% Design Review | 14d | 2022-11-01 A | 2022-11-18 A | A18740 FF+1d | 100% |  | 2022-11-01 | 2022-11-21 |  |  |  |  |  | N | 116 | ENG |  |  |  |  |  |  |
| A18770 |  | Pre-Bid Meeting | 1d | 2022-11-21 A | 2022-11-21 A | A18760 | 100% |  | 2022-12-21 | 2022-12-21 |  |  |  |  |  | N | 117 | ENG |  |  |  |  |  |  |
| A18750 |  | Substation Labor - RFP | 15d | 2022-11-22 A | 2022-11-30 A | A18760, A18770 | 100% |  | 2022-12-22 | 2023-01-23 |  |  |  |  |  | N | 115 | ENG |  |  |  |  |  |  |
| A18790 |  | Review Labor Bids | 15d | 2022-12-01 A | 2022-12-22 A | A18750 | 100% |  | 2023-01-24 | 2023-02-13 |  |  |  |  |  | N | 119 | ENG |  |  |  |  |  |  |
| A18780 |  | Award Labor Contract | 5d | 2022-12-22 A | 2023-03-08 A | A18790 | 100% |  | 2023-02-14 | 2023-02-21 |  |  |  |  |  | N | 118 | ENG |  |  |  |  |  |  |
|  | WBS4 | **Permitting** |  |  |  |  |  |  |  |  |  |  |  |  |  |  |  |  |  |  |  |  |  |  |
|  | WBS5 | **Pre-Construction** |  |  |  |  |  |  |  |  |  |  |  |  |  |  |  |  |  |  |  |  |  |  |
|  | WBS6 | **Procurement** |  | 2022-01-18 | 2023-07-31 |  |  |  |  |  |  |  |  |  |  |  |  |  |  |  |  |  |  |  |
|  | WBS1 | **PV Equipment** |  | 2022-02-16 | 2023-07-31 |  |  |  |  |  |  |  |  |  |  |  |  |  |  |  |  |  |  |  |
|  | WBS10 | **Racking Foundation/Piles** |  | 2022-03-24 | 2023-05-01 |  |  |  |  |  |  |  |  |  |  |  |  |  |  |  |  |  |  |  |
| PRO.1620 |  | Racking Foundation/Piles Order | 5d | 2022-03-24 A | 2022-05-31 A | ENG.1020 FF | 100% |  | 2022-04-13 | 2022-04-19 |  |  |  |  |  | N | 125 |  | 01 | PT01 |  |  |  |  |
| PRO.1630 |  | Racking Foundation/Piles Lead Time | 58d | 2022-06-01 A | 2022-11-04 A | PRO.1620 | 100% |  | 2022-07-26 | 2022-10-14 |  |  |  |  |  | N | 126 |  | 01 | PT02 |  |  |  |  |
| PRO.1640 |  | Racking Foundation/Piles - Deliver | 73d | 2022-11-07 A | 2023-05-01 A | PRO.1630 | 100% |  | 2022-11-04 | 2023-03-02 |  |  |  |  |  | N | 127 | LOG | 01 | PT04 | Level 1 | PBB_POST | LV1 | PROC |
|  | WBS20 | **Racking** |  | 2022-02-16 | 2023-05-12 |  |  |  |  |  |  |  |  |  |  |  |  |  |  |  |  |  |  |  |
| PRO.1650 |  | Racking Order | 50d | 2022-02-16 A | 2022-05-31 A | ENG.1020 FF | 100% |  | 2022-04-13 | 2022-06-23 |  |  |  |  |  | N | 129 |  | 02 | PT01 |  |  |  |  |
| PRO.1660 |  | Racking Lead Time | 77d | 2022-05-31 A | 2022-11-17 A | PRO.1650 | 100% |  | 2022-07-06 | 2022-10-21 |  |  |  |  |  | N | 130 |  | 02 | PT02 |  |  |  |  |
| PRO.1670 |  | Racking - Deliver | 128d | 2022-11-18 A | 2023-05-12 A | PRO.1660 | 100% |  | 2022-11-18 | 2023-06-02 |  |  |  |  |  | N | 131 | LOG | 02 | PT04 | Level 1 | PBB_RACK | LV1 | PROC |
|  | WBS30 | **Modules** |  | 2022-04-14 | 2023-07-13 |  |  |  |  |  |  |  |  |  |  |  |  |  |  |  |  |  |  |  |
| PRO.1080 |  | Module Order | 20d | 2022-04-14 A | 2022-04-22 A | ENG.1020 FF | 100% |  | 2022-07-05 | 2022-08-01 |  |  |  |  |  | N | 133 | PROC | 03 | PT01 |  |  |  |  |
| PRO.1090 |  | Modules Lead Time | 120d | 2022-04-25 A | 2023-02-21 A | PRO.1080 | 100% |  | 2022-08-02 | 2023-01-16 |  |  |  |  | Foggia_5x8 No Holidays | N | 134 | PROC | 03 | PT02 |  |  |  |  |
| PRO.1100 |  | Modules - Deliver | 112d | 2023-02-22 A | 2023-07-13 | PRO.1090 | 96% | 4d | 2023-02-27 | 2023-08-01 | 15d | 0d |  | 2023-07-13 | Foggia_5x8 No Holidays | N | 135 | LOG | 03 | PT04 |  | PBB_MODS | LV1 | PROC |
|  | WBS40 | **Inverters** |  | 2022-03-18 | 2023-07-17 |  |  |  |  |  |  |  |  |  |  |  |  |  |  |  |  |  |  |  |
| PRO.1110 |  | Inverter Order | 30d | 2022-03-18 A | 2022-07-26 A | ENG.1060 | 100% |  | 2022-03-04 | 2022-04-14 |  |  |  |  |  | N | 137 | PROC | 04 | PT01 |  |  |  |  |
| PRO.1120 |  | Inverters Lead Time | 105d | 2022-07-27 A | 2023-03-17 A | PRO.1110 | 100% |  | 2022-08-15 | 2023-01-06 |  |  |  |  | Foggia_5x8 No Holidays | N | 138 | PROC | 04 | PT02 |  |  |  |  |
| PRO.1130 |  | Integrated Skids - Deliver | 17d | 2023-03-20 A | 2023-04-11 A | PRO.1120 | 100% |  |  |  |  |  |  |  |  | N | 139 | LOG | 04 | PT04 |  | PBB_INV |  |  |
| A18820 |  | Safe Harbor Skids - Deliver | 1d | 2023-07-17 | 2023-07-17 |  |  |  |  |  | 339d |  | start on or after 2023-07-17 |  |  |  | 140 |  | 04 | PT04 |  | PBB_XFMR |  |  |

| ID | WBS | Activity | Duration | Start | Finish | Predecessors | Complete | Remaining | Planned start | Planned finish | Total float | Free float | Constraint | Expected finish | Calendar | Requested Expected Finish Approved | MSP Activity ID | Department | ETL Procurement Scope | ETL Procurement Task | PBB | LEVELS | Scope | Substation Activities |
| --- | --- | --- | --- | --- | --- | --- | --- | --- | --- | --- | --- | --- | --- | --- | --- | --- | --- | --- | --- | --- | --- | --- | --- | --- |
|  | WBS1227 | **Skid Integration** |  |  |  |  |  |  |  |  |  |  |  |  |  |  |  |  |  |  |  |  |  |  |
|  | WBS50 | **Transformers** |  |  |  |  |  |  |  |  |  |  |  |  |  |  |  |  |  |  |  |  |  |  |
|  | WBS60 | **DC BLA Conductor** |  | 2022-05-17 | 2023-06-19 |  |  |  |  |  |  |  |  |  |  |  |  |  |  |  |  |  |  |  |
| PRO.1170 |  | DC BLA Conductor Order | 20d | 2022-05-17 A | 2022-07-29 A | ENG.1020 FF, ENG.1100 | 100% |  | 2022-07-05 | 2022-08-01 |  |  |  |  |  | N | 144 | PROC | 06 | PT01 |  |  |  |  |
| PRO.1180 |  | DC BLA Conductor Lead Time | 86d | 2022-08-01 A | 2023-03-08 A | PRO.1170 | 100% |  | 2022-08-08 | 2022-12-05 |  |  |  |  | Foggia_5x8 No Holidays | N | 145 | PROC | 06 | PT02 |  |  |  |  |
| PRO.1190 |  | DC BLA Conductor - Deliver | 30d | 2023-03-09 A | 2023-06-19 A | PRO.1180 | 100% |  | 2023-03-06 | 2023-04-14 |  |  |  |  |  | N | 146 | LOG | 06 | PT04 | PBB_BLA |  |  |  |
|  | 1 | **CAB** |  | 2022-05-17 | 2023-04-14 |  |  |  |  |  |  |  |  |  |  |  |  |  |  |  |  |  |  |  |
| PRO.1740 |  | CAB Order | 20d | 2022-05-17 A | 2022-07-29 A |  | 100% |  | 2022-07-05 | 2022-08-01 |  |  |  |  |  | N | 148 | PROC |  | PT01 |  |  |  |  |
| PRO.1750 |  | CAB Lead Time | 86d | 2022-08-01 A | 2023-01-23 A | PRO.1740 | 100% |  | 2022-08-08 | 2022-12-05 |  |  |  |  | Foggia_5x8 No Holidays | N | 149 | PROC |  | PT02 |  |  |  |  |
| PRO.1760 |  | CAB - Deliver | 103d | 2023-01-23 A | 2023-04-14 A | PRO.1750 | 100% |  | 2023-01-23 | 2023-06-21 |  |  |  |  |  | N | 150 | LOG |  | PT04 | PBB_BLA | LV1 | PROC |  |
|  | WBS70 | **MV Cable** |  | 2022-07-25 | 2023-01-20 |  |  |  |  |  |  |  |  |  |  |  |  |  |  |  |  |  |  |  |
| PRO.1680 |  | MV Cable Order | 20d | 2022-07-25 A | 2022-08-25 A | ENG.1200 | 100% |  | 2022-08-01 | 2022-08-26 |  |  |  |  |  | N | 152 | PROC | 09 | PT01 |  |  |  | True |
| PRO.1690 |  | MV Cable Lead Time | 41d | 2022-08-26 A | 2022-10-31 A | PRO.1680 | 100% |  | 2022-10-17 | 2022-12-12 |  |  |  |  | Foggia_5x8 No Holidays | N | 153 | PROC | 09 | PT02 |  |  |  | True |
| PRO.1700 |  | MV Cable - Deliver | 20d | 2022-10-31 A | 2023-01-20 A | PRO.1690 | 100% |  | 2022-10-31 | 2022-11-30 |  |  |  |  |  | N | 154 | LOG | 09 | PT04 | PBB_MVW | LV1 | PROC | True |
|  | WBS1257 | **DC Cable** |  | 2022-07-25 | 2023-01-20 |  |  |  |  |  |  |  |  |  |  |  |  |  |  |  |  |  |  |  |
| PRO.1710 |  | DC Cable Order | 20d | 2022-07-25 A | 2022-08-25 A | ENG.1200 | 100% |  | 2022-08-01 | 2022-08-26 |  |  |  |  |  | N | 156 | PROC | 08 | PT01 |  |  |  | True |
| PRO.1720 |  | DC Cable Lead Time | 46d | 2022-08-26 A | 2022-10-31 A | PRO.1710 | 100% |  | 2022-10-17 | 2022-12-19 |  |  |  |  | Foggia_5x8 No Holidays | N | 157 | PROC | 08 | PT02 |  |  |  | True |
| PRO.1730 |  | DC Cable - Deliver | 20d | 2022-10-31 A | 2023-01-20 A | PRO.1720 | 100% |  | 2022-12-20 | 2023-01-26 |  |  |  |  |  | N | 158 | LOG | 08 | PT04 | PBB_DCW | LV1 | PROC | True |
|  | WBS80 | **DC Disconnect Box** |  | 2022-05-17 | 2023-05-12 |  |  |  |  |  |  |  |  |  |  |  |  |  |  |  |  |  |  |  |
| PRO.1230 |  | DC Disconnect Box Order | 30d | 2022-05-17 A | 2022-07-29 A | ENG.1060 | 100% |  | 2022-06-17 | 2022-08-01 |  |  |  |  |  | N | 160 | PROC | 07 | PT01 |  |  |  |  |
| PRO.1240 |  | DC Disconnect Box Lead Time | 86d | 2022-08-01 A | 2023-03-13 A | PRO.1230 | 100% |  | 2022-08-08 | 2022-12-05 |  |  |  |  | Foggia_5x8 No Holidays | N | 161 | PROC | 07 | PT02 |  |  |  |  |
| PRO.1250 |  | DC Disconnect Box - Deliver | 40d | 2023-03-14 A | 2023-05-12 A | PRO.1240 | 100% |  | 2023-03-13 | 2023-05-08 |  |  |  |  |  | N | 162 | LOG | 07 | PT04 |  | LV1 | PROC |  |
|  | WBS90 | **Skid Foundations** |  |  |  |  |  |  |  |  |  |  |  |  |  |  |  |  |  |  |  |  |  |  |
|  | WBS91 | **Production Meter** |  |  |  |  |  |  |  |  |  |  |  |  |  |  |  |  |  |  |  |  |  |  |
|  | WBS92 | **LV AC Recombiner/Switchgear** |  |  |  |  |  |  |  |  |  |  |  |  |  |  |  |  |  |  |  |  |  |  |
|  | WBS97 | **SCADA** |  | 2022-07-01 | 2023-07-31 |  |  |  |  |  |  |  |  |  |  |  |  |  |  |  |  |  |  |  |
| PRO.1350 |  | SCADA Order | 10d | 2022-07-01 A | 2022-08-11 A | ENG.1100 | 100% |  | 2022-06-27 | 2022-07-11 |  |  | start on or after 2022-06-06 |  |  | N | 167 | PROC | 12 | PT01 |  |  |  |  |
| PRO.1360 |  | SCADA Lead Time | 111d | 2022-08-12 A | 2023-03-06 A | PRO.1350 | 100% |  | 2022-08-15 | 2023-01-16 |  |  |  |  | Foggia_5x8 No Holidays | N | 168 | PROC | 12 | PT02 |  |  |  |  |
| PRO.1370 |  | SCADA - Deliver | 2d | 2023-03-07 A | 2023-07-31 | PRO.1360 |  | 6d | 2023-06-20 | 2023-06-21 | 49d | 0d |  | 2023-07-31 |  | N | 169 | LOG | 12 | PT04 | PBB_SCADA | LV1 | PROC |  |

| ID | WBS | Activity | Duration | Start | Finish | Predecessors | Complete | Remaining | Planned start | Planned finish | Total float | Free float | Constraint | Expected finish | Calendar | Requested Expected Finish Approved | MSP Activity ID | Department | Substation Activities | ETL Procurement Scope | ETL Procurement Task | PBB | LEVELS | Scope | Placeholder |
| --- | --- | --- | --- | --- | --- | --- | --- | --- | --- | --- | --- | --- | --- | --- | --- | --- | --- | --- | --- | --- | --- | --- | --- | --- | --- |
|  | WBS2 | **Sub Station Equipment** |  | 2022-01-18 | 2023-07-17 |  |  |  |  |  |  |  |  |  |  |  |  |  |  |  |  |  |  |  |  |
|  | WBS10 | **GSU** |  | 2022-01-18 | 2023-06-06 |  |  |  |  |  |  |  |  |  |  |  |  |  |  |  |  |  |  |  |  |
| PRO.1380 |  | GSU Order | 30d | 2022-01-18 A | 2022-03-16 A |  | 100% |  | 2022-01-18 | 2022-03-01 |  |  | as late as possible |  |  | N | 172 | PROC | True | 01 | PT01 |  |  |  |  |
| PRO.1390 |  | GSU Lead Time | 200d | 2022-03-17 A | 2023-06-05 A | PRO.1380 | 100% |  | 2022-08-01 | 2023-05-05 |  |  |  |  | Foggia_5x8 No Holidays | N | 173 | PROC | True | 01 | PT02 |  |  |  |  |
| PRO.1400 |  | GSU - Deliver | 1d | 2023-06-06 A | 2023-06-06 A | PRO.1390 | 100% |  |  |  |  |  |  |  |  | N | 174 | LOG | True | 01 | PT04 | PBB_GSU | LV1 | PROC |  |
|  | WBS20 | **Capacitor Bank** |  |  |  |  |  |  |  |  |  |  |  |  |  |  |  |  |  |  |  |  |  |  |  |
|  | WBS247 | **MV - Breaker** |  | 2022-05-17 | 2023-05-10 |  |  |  |  |  |  |  |  |  |  |  |  |  |  |  |  |  |  |  |  |
| PRO.1440 |  | MV Breaker Order | 10d | 2022-05-17 A | 2022-06-01 A |  | 100% |  | 2022-06-22 | 2022-07-06 |  |  |  |  |  | N | 177 | PROC | True | 03 | PT01 |  |  |  |  |
| PRO.1450 |  | MV Breaker Lead Time | 220d | 2022-06-02 A | 2023-05-08 A | PRO.1440 | 100% |  | 2022-06-02 | 2023-04-05 |  |  |  |  | Foggia_5x8 No Holidays | N | 178 | PROC | True | 03 | PT02 |  |  |  |  |
| PRO.1460 |  | MV Breaker - Deliver | 1d | 2023-05-09 A | 2023-05-10 A | PRO.1450 | 100% |  | 2023-05-18 | 2023-05-18 |  |  |  |  |  | N | 179 | LOG | True | 03 | PT04 | PBB_MVB | LV1 | PROC |  |
|  | WBS30 | **HV - Breaker** |  | 2022-04-01 | 2023-07-10 |  |  |  |  |  |  |  |  |  |  |  |  |  |  |  |  |  |  |  |  |
| PRO.1470 |  | HV Breaker Order | 10d | 2022-04-01 A | 2022-06-15 A |  | 100% |  | 2022-06-01 | 2022-06-14 |  |  |  |  |  | N | 181 | PROC | True | 04 | PT01 |  |  |  |  |
| PRO.1480 |  | HV Breaker Lead Time | 263d | 2022-06-16 A | 2023-07-10 | PRO.1470 | 100% | 0d | 2022-06-21 | 2023-06-22 | 55d | 0d |  | 2023-06-29 | Foggia_5x8 No Holidays | N | 182 | PROC | True | 04 | PT02 |  |  |  |  |
| PRO.1490 |  | HV Breaker - Deliver | 1d | 2023-07-10 | 2023-07-10 | PRO.1480 |  |  |  |  | 53d | 16d |  |  |  | N | 183 | LOG | True | 04 | PT04 | PBB_HVB | LV1 | PROC |  |
|  | WBS40 | **Structures and Equipment** |  | 2022-08-19 | 2023-07-17 |  |  |  |  |  |  |  |  |  |  |  |  |  |  |  |  |  |  |  |  |
| PRO.1500 |  | Structure & Equipment Order | 10d | 2022-08-19 A | 2022-09-02 A |  | 100% |  | 2022-09-06 | 2022-09-19 |  |  |  |  |  | N | 185 | PROC | True | 05 | PT01 |  |  |  |  |
| PRO.1510 |  | Structures and Equipment Lead Time | 130d | 2022-09-02 A | 2023-05-22 A | PRO.1500 | 100% |  | 2022-09-20 | 2023-03-20 |  |  |  |  | Foggia_5x8 No Holidays | N | 186 | PROC | True | 05 | PT02 |  |  |  |  |
| PRO.1520 |  | Structures and Equipment - Deliver | 10d | 2023-05-22 A | 2023-07-17 | PRO.1510 | 40% | 6d | 2023-05-22 | 2023-06-06 | 34d | 0d |  | 2023-07-17 |  | N | 187 | LOG | True | 05 | PT04 | PBB_S&E | LV1 | PROC |  |
|  | WBS50 | **Control Building** |  | 2022-08-30 | 2023-06-02 |  |  |  |  |  |  |  |  |  |  |  |  |  |  |  |  |  |  |  |  |
| PRO.1530 |  | Control Enclosure - Order | 10d | 2022-08-30 A | 2022-09-02 A |  | 100% |  | 2022-08-30 | 2022-09-13 |  |  | as late as possible |  |  | N | 189 | PROC | True | 06 | PT01 |  |  |  |  |
| PRO.1540 |  | Control Enclosure - Lead Time | 115d | 2022-09-02 A | 2023-06-01 A | PRO.1530 | 100% |  | 2022-09-13 | 2023-02-20 |  |  |  |  | Foggia_5x8 No Holidays | N | 190 | PROC | True | 06 | PT02 |  |  |  |  |
| PRO.1550 |  | Control Enclosure - Deliver | 1d | 2023-06-02 A | 2023-06-02 A | PRO.1540 | 100% |  |  |  |  |  |  |  |  | N | 191 | LOG | True | 06 | PT04 | PBB_ENCLOSURE | LV1 | PROC | HOLD |
|  | WBS60 | **Relay Panel** |  | 2022-09-30 | 2023-06-02 |  |  |  |  |  |  |  |  |  |  |  |  |  |  |  |  |  |  |  |  |
| PRO.1560 |  | Relay Panel Order | 10d | 2022-09-30 A | 2022-10-03 A |  | 100% |  | 2022-11-09 | 2022-11-23 |  |  | as late as possible |  |  | N | 193 | PROC | True | 07 | PT01 |  |  |  |  |
| PRO.1570 |  | Relay Panel Lead Time | 75d | 2022-10-04 A | 2023-06-01 A | PRO.1560 | 100% |  | 2022-11-25 | 2023-03-09 |  |  |  |  | Foggia_5x8 No Holidays | N | 194 | PROC | True | 07 | PT02 |  |  |  |  |
| PRO.1580 |  | Relay Panel - Deliver | 1d | 2023-06-02 A | 2023-06-02 A | PRO.1570 | 100% |  |  |  |  |  |  |  |  | N | 195 | LOG | True | 07 | PT04 | PBB_RELAY | LV1 | PROC |  |

| ID | WBS | Activity | Duration | Start | Finish | Predecessors | Complete | Planned start | Planned finish | Calendar | Requested Expected Finish Approved | MSP Activity ID | Department | Executive Level Reporting |
| --- | --- | --- | --- | --- | --- | --- | --- | --- | --- | --- | --- | --- | --- | --- |
|  | WBS70 | **Sub Station Backup Generator** |  |  |  |  |  |  |  |  |  |  |  |  |
|  | WBS3 | **BESS Equipment** |  |  |  |  |  |  |  |  |  |  |  |  |
|  | WBS10 | **Battery** |  |  |  |  |  |  |  |  |  |  |  |  |
|  | WBS7 | **Construction** |  | 2022-07-05 | 2024-02-15 |  |  |  |  |  |  |  |  |  |
|  | WBS267 | **Phase 1** |  | 2022-10-01 | 2023-10-25 |  |  |  |  |  |  |  |  |  |
|  | WBS2 | **Phase 1 Civil** |  | 2022-10-01 | 2022-12-19 |  |  |  |  |  |  |  |  |  |
| P1.CIV.1020 |  | Clearing & Grubbing | 13d | 2022-10-01 A | 2022-10-25 A | KM1010 SS | 100% | 2022-10-01 | 2022-10-15 | Foggia_6x8 w/ Holidays | N | 203 | CONS - Civil |  |
| P1.CIV.1030 |  | SWPP - Site Stormwater - Install measures | 47d | 2022-10-01 A | 2022-12-19 A | P1.CIV.1020 SS | 100% | 2022-10-01 | 2022-11-28 | Foggia_6x8 w/ Holidays | N | 211 | CONS - Civil |  |
| P1.CIV.1050 |  | Road Install | 22d | 2022-10-03 A | 2022-11-10 A | P1.CIV.1060 SS | 100% | 2022-10-03 | 2022-11-01 |  | N | 212 | CONS - Civil |  |
| P1.CIV.1060 |  | Site Grade, Cut & Fill, Seed & Straw | 38d | 2022-10-03 A | 2022-12-19 A | P1.CIV.1030 FF, P1.CIV.1020 SS+1d, P1.PD.1000 SS+15d | 100% | 2022-10-03 | 2022-11-28 |  | N | 202 | CONS - Civil | Level 1 |
|  | WBS4 | **Phase 1 Mechanical** |  | 2022-11-28 | 2023-07-14 |  |  |  |  |  |  |  |  |  |
|  | WBS101 | **Pre-Drill** |  | 2022-11-28 | 2023-02-06 |  |  |  |  |  |  |  |  |  |
| P1.PD.1000 |  | Pre-Drill PB23 | 4d | 2022-11-28 A | 2022-12-08 A |  | 100% | 2022-11-28 | 2022-12-01 |  | N | 206 | CONS - PILES |  |
| P1.PD.1010 |  | Pre-Drill PB22 | 2d | 2022-12-06 A | 2022-12-14 A | P1.PD.1000 SS | 100% | 2022-12-02 | 2022-12-05 |  | N | 216 | CONS - PILES |  |
| P1.PD.1020 |  | Pre-Drill PB21 | 2d | 2022-12-15 A | 2022-12-16 A | P1.PD.1010 | 100% |  |  |  | N | 217 | CONS - PILES |  |
| P1.PD.1030 |  | Pre-Drill PB11 | 2d | 2022-12-19 A | 2022-12-20 A | P1.PD.1020 SS | 100% |  |  |  | N | 218 | CONS - PILES |  |
| P1.PD.1040 |  | Pre-Drill PB20 | 2d | 2022-12-19 A | 2022-12-22 A | P1.PD.1030 SS | 100% | 2022-12-21 | 2022-12-22 |  | N | 219 | CONS - PILES |  |
| P1.PD.1050 |  | Pre-Drill PB19 | 2d | 2022-12-19 A | 2023-01-04 A | P1.PD.1040 SS | 100% | 2023-01-03 | 2023-01-04 |  | N | 220 | CONS - PILES |  |
| P1.PD.1060 |  | Pre-Drill PB12 | 2d | 2022-12-20 A | 2023-01-06 A | P1.PD.1050 SS+1d | 100% | 2023-01-05 | 2023-01-06 |  | N | 221 | CONS - PILES |  |
| P1.PD.1070 |  | Pre-Drill PB13 | 2d | 2023-01-05 A | 2023-01-10 A | P1.PD.1060 SS+3d | 100% | 2023-01-09 | 2023-01-10 |  | N | 222 | CONS - PILES |  |
| P1.PD.1080 |  | Pre-Drill PB14 | 2d | 2023-01-11 A | 2023-01-12 A | P1.PD.1070 | 100% |  |  |  | N | 224 | CONS - PILES |  |
| P1.PD.1090 |  | Pre-Drill PB15 | 2d | 2023-01-13 A | 2023-01-13 A | P1.PD.1080 | 100% | 2023-01-13 | 2023-01-17 |  | N | 223 | CONS - PILES |  |
| P1.PD.1100 |  | Pre-Drill PB25 | 2d | 2023-01-16 A | 2023-01-16 A | P1.PD.1090 | 100% | 2023-01-18 | 2023-01-19 |  | N | 225 | CONS - PILES |  |
| P1.PD.1110 |  | Pre-Drill PB24 | 2d | 2023-01-17 A | 2023-01-17 A | P1.PD.1100 | 100% | 2023-01-20 | 2023-01-23 |  | N | 226 | CONS - PILES |  |
| P1.PD.1120 |  | Pre-Drill PB18 | 2d | 2023-01-18 A | 2023-01-19 A | P1.PD.1110 | 100% | 2023-01-24 | 2023-01-25 |  | N | 227 | CONS - PILES |  |
| P1.PD.1140 |  | Pre-Drill PB16 | 2d | 2023-01-18 A | 2023-01-20 A | P1.PD.1110 | 100% | 2023-01-30 | 2023-01-31 |  | N | 229 | CONS - PILES |  |
| P1.PD.1130 |  | Pre-Drill PB17 | 2d | 2023-01-19 A | 2023-01-24 A | P1.PD.1120 | 100% | 2023-01-26 | 2023-01-27 |  | N | 228 | CONS - PILES |  |
| P1.PD.1150 |  | Pre-Drill PB10 | 1d | 2023-01-25 A | 2023-01-25 A | P1.PD.1130 SS | 100% |  |  |  | N | 230 | CONS - PILES |  |
| P1.PD.1160 |  | Pre-Drill PB09 | 1d | 2023-01-25 A | 2023-01-26 A | P1.PD.1150 SS | 100% | 2023-01-26 | 2023-01-26 |  | N | 231 | CONS - PILES |  |
| P1.PD.1170 |  | Pre-Drill PB08 | 1d | 2023-01-26 A | 2023-01-26 A | P1.PD.1160 SS | 100% | 2023-01-27 | 2023-01-27 |  | N | 232 | CONS - PILES |  |
| P1.PD.1180 |  | Pre-Drill PB07 | 1d | 2023-01-26 A | 2023-01-27 A | P1.PD.1170 SS | 100% | 2023-01-30 | 2023-01-30 |  | N | 233 | CONS - PILES |  |
| P1.PD.1190 |  | Pre-Drill PB06 | 1d | 2023-01-27 A | 2023-01-27 A | P1.PD.1180 SS | 100% | 2023-01-31 | 2023-01-31 |  | N | 234 | CONS - PILES |  |
| P1.PD.1200 |  | Pre-Drill PB05 | 1d | 2023-01-27 A | 2023-01-30 A | P1.PD.1190 SS | 100% | 2023-02-01 | 2023-02-01 |  | N | 235 | CONS - PILES |  |
| P1.PD.1210 |  | Pre-Drill PB04 | 1d | 2023-01-27 A | 2023-01-31 A | P1.PD.1200 SS | 100% | 2023-02-02 | 2023-02-02 |  | N | 236 | CONS - PILES |  |
| P1.PD.1220 |  | Pre-Drill PB03 | 1d | 2023-02-01 A | 2023-02-02 A | P1.PD.1210 SS | 100% | 2023-02-06 | 2023-02-06 |  | N | 237 | CONS - PILES |  |
| P1.PD.1240 |  | Pre-Drill PB01 | 1d | 2023-02-03 A | 2023-02-03 A | P1.PD.1230 | 100% | 2023-02-06 | 2023-02-06 |  | N | 239 | CONS - PILES |  |
| P1.PD.1230 |  | Pre-Drill PB02 | 1d | 2023-02-06 A | 2023-02-06 A | P1.PD.1220 | 100% |  |  |  | N | 238 | CONS - PILES |  |

| ID | WBS | Activity | Duration | Start | Finish | Predecessors | Complete | Planned start | Planned finish | Requested Expected Finish Approved | MSP Activity ID | Department |
| --- | --- | --- | --- | --- | --- | --- | --- | --- | --- | --- | --- | --- |
|  | WBS10 | **Racking Foundation** |  | 2022-11-29 | 2023-05-05 |  |  |  |  |  |  |  |
|  | 1 | **Racking Foundation Install** |  | 2022-11-29 | 2023-02-23 |  |  |  |  |  |  |  |
| P1.RF.1000 |  | Piles PB23 | 2d | 2022-11-29 A | 2022-12-20 A | PRO.1640 SS+8d, ENG.1170, P1.PD.1000 SS, P1.CIV.1060 FF, P1.CIV.1050 | 100% | 2022-12-14 | 2022-12-15 | N | 67 | CONS - PILES |
| P1.RF.1010 |  | Piles PB22 | 2d | 2022-12-19 A | 2022-12-22 A | P1.PD.1010 SS+5d | 100% | 2023-01-03 | 2023-01-04 | N | 241 | CONS - PILES |
| P1.RF.1020 |  | Piles PB21 | 2d | 2022-12-22 A | 2023-01-04 A | P1.RF.1010 SS+1d, P1.PD.1020 | 100% | 2023-01-05 | 2023-01-06 | N | 242 | CONS - PILES |
| P1.RF.1030 |  | Piles PB11 | 2d | 2023-01-03 A | 2023-01-10 A | P1.RF.1020 SS+1d, P1.PD.1030 | 100% | 2023-01-09 | 2023-01-10 | N | 243 | CONS - PILES |
| P1.RF.1040 |  | Piles PB20 | 2d | 2023-01-11 A | 2023-01-12 A | P1.RF.1030, P1.PD.1040 | 100% |  |  | N | 244 | CONS - PILES |
| P1.RF.1050 |  | Piles PB19 | 2d | 2023-01-13 A | 2023-01-16 A | P1.RF.1040, P1.PD.1050 | 100% | 2023-01-13 | 2023-01-17 | N | 245 | CONS - PILES |
| P1.RF.1060 |  | Piles PB12 | 4d | 2023-01-17 A | 2023-01-17 A | P1.RF.1050, P1.PD.1060 | 100% | 2023-01-18 | 2023-01-23 | N | 246 | CONS - PILES |
| P1.RF.1070 |  | Piles PB13 | 4d | 2023-01-17 A | 2023-01-18 A | P1.RF.1060 SS, P1.PD.1070 | 100% | 2023-01-18 | 2023-01-23 | N | 247 | CONS - PILES |
| P1.RF.1090 |  | Piles PB14 | 2d | 2023-01-18 A | 2023-01-19 A | P1.RF.1070, P1.PD.1080 | 100% | 2023-01-24 | 2023-01-25 | N | 249 | CONS - PILES |
| P1.RF.1080 |  | Piles PB15 | 2d | 2023-01-19 A | 2023-01-19 A | P1.RF.1090, P1.PD.1090 | 100% | 2023-01-26 | 2023-01-27 | N | 248 | CONS - PILES |
| P1.RF.1100 |  | Piles PB25 | 2d | 2023-01-19 A | 2023-01-20 A | P1.RF.1080, P1.PD.1100 | 100% | 2023-01-30 | 2023-01-31 | N | 250 | CONS - PILES |
| P1.RF.1110 |  | Piles PB24 | 2d | 2023-01-20 A | 2023-01-23 A | P1.RF.1100, P1.PD.1110 | 100% | 2023-02-01 | 2023-02-02 | N | 251 | CONS - PILES |
| P1.RF.1120 |  | Piles PB18 | 2d | 2023-01-24 A | 2023-01-25 A | P1.RF.1110, P1.PD.1120 | 100% |  |  | N | 252 | CONS - PILES |
| P1.RF.1130 |  | Piles PB17 | 4d | 2023-01-25 A | 2023-01-30 A | P1.RF.1120 SS, P1.PD.1130 | 100% |  |  | N | 253 | CONS - PILES |
| P1.RF.1140 |  | Piles PB16 | 2d | 2023-01-31 A | 2023-02-01 A | P1.RF.1130, P1.PD.1140 | 100% |  |  | N | 254 | CONS - PILES |
| P1.RF.1150 |  | Piles PB10 | 3d | 2023-01-31 A | 2023-02-02 A | P1.RF.1140 SS, P1.PD.1150 | 100% |  |  | N | 255 | CONS - PILES |
| P1.RF.1160 |  | Piles PB09 | 2d | 2023-02-03 A | 2023-02-06 A | P1.RF.1150, P1.PD.1160 | 100% |  |  | N | 256 | CONS - PILES |
| P1.RF.1170 |  | Piles PB08 | 3d | 2023-02-03 A | 2023-02-07 A | P1.RF.1160 SS, P1.PD.1170 | 100% |  |  | N | 257 | CONS - PILES |
| P1.RF.1180 |  | Piles PB07 | 2d | 2023-02-08 A | 2023-02-09 A | P1.RF.1170, P1.PD.1180 | 100% |  |  | N | 258 | CONS - PILES |
| P1.RF.1190 |  | Piles PB06 | 3d | 2023-02-08 A | 2023-02-13 A | P1.RF.1180 SS, P1.PD.1190 | 100% | 2023-02-08 | 2023-02-10 | N | 259 | CONS - PILES |
| P1.RF.1200 |  | Piles PB05 | 2d | 2023-02-09 A | 2023-02-14 A | P1.RF.1190 FF+1d, P1.PD.1200 | 100% | 2023-02-13 | 2023-02-14 | N | 260 | CONS - PILES |
| P1.RF.1210 |  | Piles PB04 | 3d | 2023-02-13 A | 2023-02-15 A | P1.RF.1200 SS, P1.PD.1210 | 100% |  |  | N | 261 | CONS - PILES |
| P1.RF.1220 |  | Piles PB03 | 2d | 2023-02-16 A | 2023-02-17 A | P1.RF.1210, P1.PD.1220 | 100% |  |  | N | 262 | CONS - PILES |
| P1.RF.1230 |  | Piles PB02 | 3d | 2023-02-16 A | 2023-02-22 A | P1.RF.1220 SS, P1.PD.1230 | 100% | 2023-02-16 | 2023-02-21 | N | 263 | CONS - PILES |
| P1.RF.1240 |  | Piles PB01 | 2d | 2023-02-20 A | 2023-02-23 A | P1.RF.1230, P1.PD.1240 | 100% | 2023-02-28 | 2023-03-01 | N | 264 | CONS - PILES |

| ID | WBS | Activity | Duration | Start | Finish | Predecessors | Complete | Remaining | Planned start | Planned finish | Total float | Free float | Expected finish | Requested Expected Finish Approved | MSP Activity ID | Department |
| --- | --- | --- | --- | --- | --- | --- | --- | --- | --- | --- | --- | --- | --- | --- | --- | --- |
|  | 2 | **Racking Foundation QC** |  | 2022-12-21 | 2023-05-05 |  |  |  |  |  |  |  |  |  |  |  |
| A18840 |  | Phase 1 Pile QC | 38d | 2022-12-21 A | 2023-05-05 A | P1.RF.1240 FF+5d, P1.RF.1000 | 100% |  | 2023-02-21 | 2023-04-13 |  |  |  |  |  |  |
|  | WBS20 | **Racking** |  | 2023-02-03 | 2023-07-10 |  |  |  |  |  |  |  |  |  |  |  |
|  | 1 | **Racking Install** |  | 2023-02-03 | 2023-07-10 |  |  |  |  |  |  |  |  |  |  |  |
| P1.RA.1000 |  | Racking PB23 | 2d | 2023-02-03 A | 2023-02-13 A | PRO.1670 SS+21d, P1.RF.1000, A18840 SS | 100% |  | 2023-02-06 | 2023-02-07 |  |  |  | N | 70 | CONS - RACK |
| P1.RA.1010 |  | Racking PB22 | 2d | 2023-02-08 A | 2023-02-14 A | P1.RA.1000, P1.RF.1010 | 100% |  | 2023-02-08 | 2023-02-09 |  |  |  | N | 69 | CONS - RACK |
| P1.RA.1020 |  | Racking PB21 | 2d | 2023-02-10 A | 2023-03-06 A | P1.RA.1010, P1.RF.1020 | 100% |  | 2023-02-10 | 2023-02-13 |  |  |  | N | 266 | CONS - RACK |
| P1.RA.1040 |  | Racking PB20 | 2d | 2023-02-22 A | 2023-03-06 A | P1.RF.1040 | 100% |  | 2023-02-22 | 2023-02-23 |  |  |  | N | 268 | CONS - RACK |
| P1.RA.1050 |  | Racking PB19 | 2d | 2023-02-27 A | 2023-03-07 A | P1.RF.1050, P1.RA.1040 SS | 100% |  | 2023-02-27 | 2023-02-28 |  |  |  | N | 269 | CONS - RACK |
| P1.RA.1030 |  | Racking PB11 | 2d | 2023-03-06 A | 2023-07-10 | P1.RF.1030, P1.RA.1050 SS+1d | 100% | 0d | 2023-03-06 | 2023-03-07 | 38d | 0d | 2023-07-07 | N | 267 | CONS - RACK |
| P1.RA.1060 |  | Racking PB12 | 2d | 2023-03-06 A | 2023-03-21 A | P1.RF.1060 | 100% |  | 2023-03-06 | 2023-03-07 |  |  |  | N | 270 | CONS - RACK |
| P1.RA.1070 |  | Racking PB13 | 2d | 2023-03-21 A | 2023-03-22 A | P1.RF.1070, P1.RA.1060 FF+1d | 100% |  |  |  |  |  |  | N | 271 | CONS - RACK |
| P1.RA.1080 |  | Racking PB14 | 2d | 2023-03-22 A | 2023-03-23 A | P1.RF.1090, P1.RA.1070 SS+1d | 100% |  |  |  |  |  |  | N | 272 | CONS - RACK |
| P1.RA.1090 |  | Racking PB15 | 2d | 2023-03-23 A | 2023-03-24 A | P1.RF.1080, P1.RA.1080 SS+1d | 100% |  |  |  |  |  |  | N | 273 | CONS - RACK |
| P1.RA.1100 |  | Racking PB25 | 2d | 2023-03-23 A | 2023-03-24 A | P1.RF.1100, P1.RA.1090 SS | 100% |  |  |  |  |  |  | N | 274 | CONS - RACK |
| P1.RA.1110 |  | Racking PB24 | 2d | 2023-03-24 A | 2023-03-27 A | P1.RA.1100 SS+1d, P1.RF.1110 | 100% |  |  |  |  |  |  | N | 275 | CONS - RACK |
| P1.RA.1120 |  | Racking PB18 | 2d | 2023-03-27 A | 2023-03-28 A | P1.RA.1110 SS+1d, P1.RF.1120 | 100% |  |  |  |  |  |  | N | 276 | CONS - RACK |
| P1.RA.1130 |  | Racking PB17 | 2d | 2023-03-27 A | 2023-03-28 A | P1.RA.1120 SS, P1.RF.1130 | 100% |  |  |  |  |  |  | N | 277 | CONS - RACK |
| P1.RA.1140 |  | Racking PB16 | 2d | 2023-03-28 A | 2023-04-04 A | P1.RA.1130 SS+1d, P1.RF.1140 | 100% |  | 2023-03-28 | 2023-03-29 |  |  |  | N | 278 | CONS - RACK |
| P1.RA.1150 |  | Racking PB10 | 2d | 2023-03-28 A | 2023-04-10 A | P1.RA.1140 SS, P1.RF.1150 SS | 100% |  | 2023-03-28 | 2023-03-29 |  |  |  | N | 279 | CONS - RACK |
| P1.RA.1160 |  | Racking PB09 | 2d | 2023-04-03 A | 2023-04-11 A | P1.RF.1160, P1.RA.1150 SS+1d | 100% |  | 2023-04-03 | 2023-04-04 |  |  |  | N | 280 | CONS - RACK |
| P1.RA.1170 |  | Racking PB08 | 2d | 2023-04-03 A | 2023-04-11 A | P1.RF.1170, P1.RA.1160 SS | 100% |  | 2023-04-03 | 2023-04-04 |  |  |  | N | 281 | CONS - RACK |
| P1.RA.1180 |  | Racking PB07 | 2d | 2023-04-10 A | 2023-04-12 A | P1.RA.1170 SS+1d, P1.RF.1180 | 100% |  | 2023-04-10 | 2023-04-11 |  |  |  | N | 282 | CONS - RACK |
| P1.RA.1190 |  | Racking PB06 | 2d | 2023-04-10 A | 2023-07-10 | P1.RA.1180 SS, P1.RF.1190 | 100% | 0d | 2023-04-10 | 2023-04-11 | 33d | 0d | 2023-07-07 | N | 283 | CONS - RACK |
| P1.RA.1200 |  | Racking PB05 | 2d | 2023-04-12 A | 2023-04-14 A | P1.RF.1200 | 100% |  | 2023-04-11 | 2023-04-12 |  |  |  | N | 284 | CONS - RACK |
| P1.RA.1210 |  | Racking PB04 | 2d | 2023-04-12 A | 2023-04-17 A | P1.RA.1200 SS, P1.RF.1210 | 100% |  | 2023-04-11 | 2023-04-12 |  |  |  | N | 285 | CONS - RACK |
| P1.RA.1220 |  | Racking PB03 | 1d | 2023-04-14 A | 2023-04-20 A | P1.RA.1210 SS+1d, P1.RF.1220 | 100% |  | 2023-04-12 | 2023-04-12 |  |  |  | N | 286 | CONS - RACK |
| P1.RA.1230 |  | Racking PB02 | 1d | 2023-04-17 A | 2023-04-21 A | P1.RA.1220 SS+1d, P1.RF.1230 | 100% |  | 2023-04-13 | 2023-04-13 |  |  |  | N | 287 | CONS - RACK |
| P1.RA.1240 |  | Racking PB01 | 1d | 2023-04-20 A | 2023-04-26 A | P1.RA.1230 SS, P1.RF.1240, A18840 FF | 100% |  | 2023-04-18 | 2023-04-18 |  |  |  | N | 288 | CONS - RACK |

| ID | WBS | Activity | Duration | Start | Finish | Predecessors | Complete | Remaining | Planned start | Planned finish | Total float | Free float | Expected finish | Requested Expected Finish Approved | MSP Activity ID | Department |
| --- | --- | --- | --- | --- | --- | --- | --- | --- | --- | --- | --- | --- | --- | --- | --- | --- |
|  | 2 | **Racking QC** |  | 2023-02-14 | 2023-05-16 |  |  |  |  |  |  |  |  |  |  |  |
| A18850 |  | Phase 1 Racking QC | 30d | 2023-02-14 A | 2023-05-16 A | P1.RA.1240 FF+5d, P1.RA.1000 | 100% |  | 2023-02-21 | 2023-04-03 |  |  |  |  |  |  |
|  | WBS30 | **Module Install** |  | 2023-03-10 | 2023-07-14 |  |  |  |  |  |  |  |  |  |  |  |
| P1.MO.1000 |  | Mods PB23 | 2d | 2023-03-10 A | 2023-04-10 A | PRO.1100 SS+10d, P1.RA.1000 | 100% |  | 2023-03-10 | 2023-03-13 |  |  |  | N | 72 | CONS - MODS |
| P1.MO.1010 |  | Mods PB22 | 1.5d | 2023-04-11 A | 2023-04-25 A | P1.MO.1000, P1.RA.1010 | 100% |  | 2023-04-11 | 2023-04-12 |  |  |  | N | 290 | CONS - MODS |
| P1.MO.1020 |  | Mods PB21 | 1.5d | 2023-04-13 A | 2023-04-26 A | P1.MO.1010 SS+1d, P1.RA.1020 | 100% |  | 2023-04-13 | 2023-04-14 |  |  |  | N | 291 | CONS - MODS |
| P1.MO.1040 |  | Mods PB20 | 1.5d | 2023-04-17 A | 2023-04-27 A | P1.RA.1040, P1.MO.1020 SS+2d | 100% |  | 2023-04-17 | 2023-04-18 |  |  |  | N | 293 | CONS - MODS |
| P1.MO.1050 |  | Mods PB19 | 1.5d | 2023-04-19 A | 2023-04-28 A | P1.RA.1050, P1.MO.1040 SS+1d | 100% |  | 2023-04-19 | 2023-04-20 |  |  |  | N | 294 | CONS - MODS |
| P1.MO.1070 |  | Mods PB13 | 1.5d | 2023-04-20 A | 2023-05-02 A | P1.RA.1070 | 100% |  | 2023-04-24 | 2023-04-25 |  |  |  | N | 296 | CONS - MODS |
| P1.MO.1030 |  | Mods PB11 | 1d | 2023-05-01 A | 2023-07-14 | P1.RA.1030 FF, P1.MO.1050 |  | 5d | 2023-05-01 | 2023-05-01 | 33d | 0d | 2023-07-14 | N | 292 | CONS - MODS |
| P1.MO.1060 |  | Mods PB12 | 1d | 2023-05-02 A | 2023-05-09 A | P1.RA.1060, P1.MO.1030 SS+1d, P1.MO.1070 | 100% |  | 2023-05-02 | 2023-05-02 |  |  |  | N | 295 | CONS - MODS |
| P1.MO.1100 |  | Mods PB25 | 1d | 2023-05-05 A | 2023-05-05 A | P1.RA.1100 | 100% |  |  |  |  |  |  | N | 299 | CONS - MODS |
| P1.MO.1110 |  | Mods PB24 | 1d | 2023-05-08 A | 2023-05-08 A | P1.MO.1100, P1.RA.1110 | 100% |  |  |  |  |  |  | N | 300 | CONS - MODS |
| P1.MO.1120 |  | Mods PB18 | 1d | 2023-05-09 A | 2023-05-16 A | P1.RA.1120, P1.MO.1110 | 100% |  | 2023-05-09 | 2023-05-09 |  |  |  | N | 301 | CONS - MODS |
| P1.MO.1080 |  | Mods PB14 | 1d | 2023-05-16 A | 2023-05-16 A | P1.RA.1080, P1.MO.1030 SS, P1.MO.1060 | 100% |  |  |  |  |  |  | N | 297 | CONS - MODS |
| P1.MO.1090 |  | Mods PB15 | 1d | 2023-05-17 A | 2023-05-17 A | P1.MO.1080, P1.RA.1090 | 100% |  |  |  |  |  |  | N | 298 | CONS - MODS |
| P1.MO.1130 |  | Mods PB17 | 1d | 2023-05-18 A | 2023-05-18 A | P1.RA.1130, P1.MO.1120, P1.MO.1090 | 100% |  |  |  |  |  |  | N | 302 | CONS - MODS |
| P1.MO.1190 |  | Mods PB06 | 1d | 2023-05-19 A | 2023-07-14 | P1.RA.1190 FF |  | 5d | 2023-05-19 | 2023-05-19 | 28d | 0d | 2023-07-14 | N | 308 | CONS - MODS |
| P1.MO.1200 |  | Mods PB05 | 2d | 2023-05-22 A | 2023-06-13 A | P1.RA.1200 | 100% |  | 2023-05-22 | 2023-05-23 |  |  |  | N | 309 | CONS - MODS |
| P1.MO.1210 |  | Mods PB04 | 3d | 2023-05-23 A | 2023-06-13 A | P1.MO.1200 SS+1d, P1.RA.1210 | 100% |  | 2023-05-23 | 2023-05-25 |  |  |  | N | 310 | CONS - MODS |
| P1.MO.1220 |  | Mods PB03 | 3d | 2023-05-24 A | 2023-06-13 A | P1.RA.1220, P1.MO.1210 SS+1d | 100% |  | 2023-05-24 | 2023-05-30 |  |  |  | N | 311 | CONS - MODS |
| P1.MO.1230 |  | Mods PB02 | 2d | 2023-06-12 A | 2023-06-13 A | P1.MO.1220 SS+4d, P1.RA.1230 | 100% |  |  |  |  |  |  | N | 312 | CONS - MODS |
| P1.MO.1240 |  | Mods PB01 | 2d | 2023-06-12 A | 2023-06-13 A | P1.MO.1230 SS, P1.RA.1240 | 100% |  |  |  |  |  |  | N | 205 | CONS - MODS |
| P1.MO.1140 |  | Mods PB16 | 2d | 2023-06-13 A | 2023-06-14 A | P1.RA.1140, P1.MO.1240 SS+1d | 100% |  |  |  |  |  |  | N | 303 | CONS - MODS |
| P1.MO.1150 |  | Mods PB10 | 2d | 2023-06-14 A | 2023-06-15 A | P1.MO.1140 SS+1d, P1.RA.1150 | 100% |  |  |  |  |  |  | N | 304 | CONS - MODS |
| P1.MO.1160 |  | Mods PB09 | 2d | 2023-06-14 A | 2023-06-15 A | P1.RA.1160, P1.MO.1150 SS | 100% |  |  |  |  |  |  | N | 305 | CONS - MODS |
| P1.MO.1170 |  | Mods PB08 | 2d | 2023-06-15 A | 2023-06-21 A | P1.RA.1170, P1.MO.1160 SS+1d | 100% |  | 2023-06-15 | 2023-06-20 |  |  |  | N | 306 | CONS - MODS |
| P1.MO.1180 |  | Mods PB07 | 3d | 2023-06-20 A | 2023-06-22 A | P1.MO.1170 SS+1d, P1.RA.1180, A18850 | 100% |  |  |  |  |  |  | N | 307 | CONS - MODS |

| ID | WBS | Activity | Duration | Start | Finish | Predecessors | Complete | Remaining | Planned start | Planned finish | Total float | Free float | Constraint | Expected finish | Requested Expected Finish Approved | MSP Activity ID | Department |
| --- | --- | --- | --- | --- | --- | --- | --- | --- | --- | --- | --- | --- | --- | --- | --- | --- | --- |
|  | WBS5 | **Phase 1 Electrical** |  | 2022-11-07 | 2023-08-04 |  |  |  |  |  |  |  |  |  |  |  |  |
|  | WBS1 | **Equipment Pad** |  | 2022-11-28 | 2023-07-19 |  |  |  |  |  |  |  |  |  |  |  |  |
| P1.SP.1180 |  | Skid Pile Install Phase 1 | 9d | 2022-11-28 A | 2023-02-22 A | PRO.1640 SS+5d | 100% |  | 2022-11-28 | 2022-12-08 |  |  |  |  | N | 320 | CONS - PV_ELEC |
| P1.SF.1180 |  | Skid Foundations Phase 1 | 16d | 2022-11-29 A | 2023-04-07 A | P1.SP.1180 FF+5d | 100% |  | 2022-11-29 | 2022-12-20 |  |  |  |  | N | 319 | CONS - PV_ELEC |
| P1.IT.1180 |  | Inverters Term Phase 1 | 12d | 2023-06-15 A | 2023-07-19 | P1.SK.1000, P1.FP.1180 SS, P1.FP.1180 FF, P1.SK.1240 FF+1.5d, P1.FT.1180 FF | 67% | 4d | 2023-06-26 | 2023-07-13 | 24d | 0d |  | 2023-07-13 | N | 315 | CONS - PV_ELEC |
|  | WBS1177 | **Skid Pile Install** |  |  |  |  |  |  |  |  |  |  |  |  |  |  |  |
|  | WBS10 | **Skid Foundations Roughed In** |  |  |  |  |  |  |  |  |  |  |  |  |  |  |  |
|  | WBS20 | **Skid Set (INV/XFMR/SCADA)** |  | 2023-03-20 | 2023-07-17 |  |  |  |  |  |  |  |  |  |  |  |  |
| P1.SK.1000 |  | Skid Install PB23 | 0.2d | 2023-03-20 A | 2023-03-20 A | PRO.1130 SS, P1.SF.1180 | 100% |  |  |  |  |  |  |  | N | 318 | CONS - PV_ELEC |
| P1.SK.1010 |  | Skid Install PB22 | 0.2d | 2023-03-20 A | 2023-03-20 A | P1.SK.1000 | 100% |  |  |  |  |  |  |  | N | 324 | CONS - PV_ELEC |
| P1.SK.1020 |  | Skid Install PB21 | 0.2d | 2023-03-20 A | 2023-03-20 A | P1.SK.1010 | 100% |  |  |  |  |  |  |  | N | 325 | CONS - PV_ELEC |
| P1.SK.1030 |  | Skid Install PB20 | 0d | 2023-03-20 A | 2023-03-20 A | P1.SK.1020 | 100% |  |  |  |  |  |  |  | N | 326 | CONS - PV_ELEC |
| P1.SK.1040 |  | Skid Install PB19 | 0.2d | 2023-03-20 A | 2023-03-20 A | P1.SK.1030 | 100% |  |  |  |  |  |  |  | N | 327 | CONS - PV_ELEC |
| P1.SK.1050 |  | Skid Install PB12 | 0.2d | 2023-03-21 A | 2023-03-21 A | P1.SK.1040 | 100% |  |  |  |  |  |  |  | N | 328 | CONS - PV_ELEC |
| P1.SK.1060 |  | Skid Install PB13 | 0.2d | 2023-03-21 A | 2023-03-21 A | P1.SK.1050 | 100% |  |  |  |  |  |  |  | N | 329 | CONS - PV_ELEC |
| P1.SK.1070 |  | Skid Install PB14 | 0.2d | 2023-03-21 A | 2023-03-21 A | P1.SK.1060 | 100% |  |  |  |  |  |  |  | N | 330 | CONS - PV_ELEC |
| P1.SK.1080 |  | Skid Install PB15 | 0.2d | 2023-03-21 A | 2023-03-21 A | P1.SK.1070 | 100% |  |  |  |  |  |  |  | N | 331 | CONS - PV_ELEC |
| P1.SK.1090 |  | Skid Install PB25 | 0.2d | 2023-03-21 A | 2023-03-21 A | P1.SK.1080 | 100% |  |  |  |  |  |  |  | N | 332 | CONS - PV_ELEC |
| P1.SK.1100 |  | Skid Install PB24 | 0.2d | 2023-03-22 A | 2023-03-22 A | P1.SK.1090 | 100% |  |  |  |  |  |  |  | N | 333 | CONS - PV_ELEC |
| P1.SK.1110 |  | Skid Install PB18 | 0.2d | 2023-03-22 A | 2023-03-22 A | P1.SK.1100 | 100% |  |  |  |  |  |  |  | N | 334 | CONS - PV_ELEC |
| P1.SK.1120 |  | Skid Install PB17 | 0.2d | 2023-03-22 A | 2023-03-22 A | P1.SK.1110 | 100% |  |  |  |  |  |  |  | N | 335 | CONS - PV_ELEC |
| P1.SK.1130 |  | Skid Install PB16 | 0.2d | 2023-03-22 A | 2023-03-22 A | P1.SK.1120 | 100% |  |  |  |  |  |  |  | N | 336 | CONS - PV_ELEC |
| P1.SK.1140 |  | Skid Install PB10 | 0.2d | 2023-03-22 A | 2023-03-22 A | P1.SK.1130 | 100% |  |  |  |  |  |  |  | N | 337 | CONS - PV_ELEC |
| P1.SK.1150 |  | Skid Install PB09 | 0.2d | 2023-03-23 A | 2023-03-23 A | P1.SK.1140 FS+1d | 100% |  | 2023-03-24 | 2023-03-24 |  |  |  |  | N | 338 | CONS - PV_ELEC |
| P1.SK.1160 |  | Skid Install PB08 | 0.2d | 2023-03-23 A | 2023-03-23 A | P1.SK.1150 | 100% |  | 2023-03-24 | 2023-03-24 |  |  |  |  | N | 339 | CONS - PV_ELEC |
| P1.SK.1170 |  | Skid Install PB07 | 0.2d | 2023-03-23 A | 2023-03-23 A | P1.SK.1160 | 100% |  | 2023-03-24 | 2023-03-24 |  |  |  |  | N | 340 | CONS - PV_ELEC |
| P1.SK.1180 |  | Skid Install PB06 | 0.2d | 2023-03-23 A | 2023-03-23 A | P1.SK.1170 | 100% |  | 2023-03-24 | 2023-03-24 |  |  |  |  | N | 341 | CONS - PV_ELEC |
| P1.SK.1190 |  | Skid Install PB05 | 0.2d | 2023-03-23 A | 2023-03-23 A | P1.SK.1180 | 100% |  | 2023-03-24 | 2023-03-24 |  |  |  |  | N | 342 | CONS - PV_ELEC |
| P1.SK.1200 |  | Skid Install PB04 | 0.2d | 2023-03-24 A | 2023-03-24 A | P1.SK.1190 | 100% |  | 2023-03-27 | 2023-03-27 |  |  |  |  | N | 343 | CONS - PV_ELEC |
| P1.SK.1210 |  | Skid Install PB03 | 0.2d | 2023-03-24 A | 2023-03-24 A | P1.SK.1200 | 100% |  | 2023-03-27 | 2023-03-27 |  |  |  |  | N | 344 | CONS - PV_ELEC |
| P1.SK.1220 |  | Skid Install PB02 | 0.2d | 2023-03-24 A | 2023-03-24 A | P1.SK.1210 | 100% |  | 2023-03-27 | 2023-03-27 |  |  |  |  | N | 345 | CONS - PV_ELEC |
| P1.SK.1230 |  | Skid Install PB01 | 0.2d | 2023-03-24 A | 2023-03-24 A | P1.SK.1220 | 100% |  | 2023-03-30 | 2023-03-30 |  |  |  |  | N | 346 | CONS - PV_ELEC |
| P1.SK.1240 |  | Skid Install PB11 | 1d | 2023-07-17 | 2023-07-17 | P1.SK.1230 |  |  |  |  | 24.5d | 0d | finish on or after 2023-07-17 |  | N | 317 | CONS - PV_ELEC |

| ID | WBS | Activity | Duration | Start | Finish | Predecessors | Complete | Remaining | Planned start | Planned finish | Total float | Free float | Expected finish | Requested Expected Finish Approved | MSP Activity ID | Department |
| --- | --- | --- | --- | --- | --- | --- | --- | --- | --- | --- | --- | --- | --- | --- | --- | --- |
|  | WBS30 | **Set Central Inverters** |  |  |  |  |  |  |  |  |  |  |  |  |  |  |
|  | WBS40 | **Set MV Transformers** |  |  |  |  |  |  |  |  |  |  |  |  |  |  |
|  | WBS50 | **Inverter's DC Terminated** |  |  |  |  |  |  |  |  |  |  |  |  |  |  |
|  | WBS60 | **Transformer's DC Terminated** |  |  |  |  |  |  |  |  |  |  |  |  |  |  |
|  | WBS2 | **DC Wiring** |  | 2023-03-13 | 2023-08-04 |  |  |  |  |  |  |  |  |  |  |  |
| P1.CAB.1000 |  | CAB Installation Phase 1 | 32d | 2023-03-13 A | 2023-06-02 A | PRO.1760 SS, P1.RA.1000, P1.RA.1240 FF+5d | 100% |  | 2023-03-20 | 2023-05-02 |  |  |  | N | 353 | CONS - PV_ELEC |
| P1.CO.1180 |  | DC Feeder UG Phase 1 | 32d | 2023-04-24 A | 2023-07-13 |  | 88% | 4d | 2023-04-24 | 2023-06-08 | 11d | 0d | 2023-07-13 | N | 354 | CONS - PV_ELEC |
| P1.DM.1180 |  | DC Disco Mount Phase 1 | 22d | 2023-04-24 A | 2023-07-11 | P1.RF.1000, P1.RF.1170 FF+5d, PRO.1250 SS+5d, P1.RF.1240 FF+5d | 91% | 2d | 2023-04-24 | 2023-05-23 | 22d | 0d | 2023-07-11 | N | 355 | CONS - PV_ELEC |
| P1.DT.1180 |  | DC Disco Term Phase 1 | 35d | 2023-05-08 A | 2023-07-19 | P1.DM.1180 FF+3d, P1.DM.1180 SS+3d, P1.FP.1180 FF, P1.CX.1010 FF | 77% | 8d | 2023-05-08 | 2023-06-29 | 23d | 0d | 2023-07-19 | N | 356 | CONS - PV_ELEC |
| P1.FP.1180 |  | Feeders Pull Phase 1 | 35d | 2023-05-08 A | 2023-07-13 | PRO.1730 SS+4d, P1.CO.1180 FF, P1.CO.1180 SS+8d, P1.CAB.1000 SS+5d | 89% | 4d | 2023-05-08 | 2023-06-29 | 17d | 0d | 2023-07-13 | N | 316 | CONS - PV_ELEC |
| P1.FT.1180 |  | Feeders Term Phase 1 | 2d | 2023-05-08 A | 2023-07-19 | P1.FP.1180 FF, P1.FP.1180 SS |  | 8d | 2023-07-12 | 2023-07-13 | 21d | 0d | 2023-07-19 | N | 25 | CONS - PV_ELEC |
| P1.BLA.1180 |  | BLA Phase 1 | 15d | 2023-05-15 A | 2023-06-02 A | P1.CAB.1000 SS+10d, P1.CAB.1000 FF, PRO.1190 SS+5d | 100% |  | 2023-05-15 | 2023-06-06 |  |  |  | N | 352 | CONS - PV_ELEC |
| P1.SW.1180 |  | String Wire Phase 1 | 25d | 2023-05-15 A | 2023-07-10 | PRO.1730 SS+4d, P1.MO.1000 SS, P1.MO.1180 FF+1d, P1.MO.1200 FF+1d, P1.MO.1210 FF+1d, P1.MO.1220 FF+1d, P1.MO.1230 FF+1d, P1.MO.1240 FF+1d, P1.MO.1140 FF+1d, P1.MO.1150 FF+1d, P1.MO.1160 FF+1d, P1.MO.1170 FF+1d | 100% | 0d | 2023-05-15 | 2023-06-22 | 23d | 0d | 2023-07-07 | N | 360 | CONS - PV_ELEC |
| P1.MT.1000 |  | Mod Term Phase 1 | 18d | 2023-06-15 A | 2023-08-04 | P1.CX.1020 SS, P1.CX.1020 FF, P1.MO.1190 FF, P1.MO.1130 FF, P1.DT.1180 FF, P1.DT.1180 SS | 44% | 10d | 2023-06-26 | 2023-07-21 | 13d | 0d |  | N | 28 | CONS - PV_ELEC |
| P1.WM.1000 |  | Wire Management Phase 1 | 20d | 2023-06-15 A | 2023-08-04 | P1.MT.1000 FF | 50% | 10d | 2023-06-26 | 2023-07-25 | 22d | 1d |  | N | 26 | CONS - PV_ELEC |
|  | WBS10 | **UG Conduit** |  |  |  |  |  |  |  |  |  |  |  |  |  |  |
|  | WBS20 | **DC Feeders Pulled** |  |  |  |  |  |  |  |  |  |  |  |  |  |  |
|  | WBS30 | **DC Feeders Terminated** |  |  |  |  |  |  |  |  |  |  |  |  |  |  |
|  | WBS40 | **String Wire Installed** |  |  |  |  |  |  |  |  |  |  |  |  |  |  |
|  | WBS50 | **DC Disconnect Boxes Mounted** |  |  |  |  |  |  |  |  |  |  |  |  |  |  |
|  | WBS80 | **SCADA/Monitoring Terminated** |  |  |  |  |  |  |  |  |  |  |  |  |  |  |
|  | WBS55 | **CAB Hangers Installed** |  |  |  |  |  |  |  |  |  |  |  |  |  |  |
|  | WBS60 | **DC BLA Installed** |  |  |  |  |  |  |  |  |  |  |  |  |  |  |
|  | WBS70 | **DC Disconnect Boxes Terminated** |  |  |  |  |  |  |  |  |  |  |  |  |  |  |
|  | WBS92 | **Module Terminations** |  |  |  |  |  |  |  |  |  |  |  |  |  |  |
|  | WBS93 | **Wire Management** |  |  |  |  |  |  |  |  |  |  |  |  |  |  |
|  | WBS6 | **MV/ISP to Power Blocks** |  | 2022-11-07 | 2023-07-21 |  |  |  |  |  |  |  |  |  |  |  |
| P1.MV.1000 |  | MV/ISP to PB Phase 1 | 30d | 2022-11-07 A | 2023-01-13 A | PRO.1700 SF+5d | 100% |  | 2022-11-07 | 2022-12-21 |  |  |  | N | 208 | CONS - PV_ELEC |
| P1.MV.1010 |  | MV/ISP Terminations Phase 1 | 20d | 2023-05-08 A | 2023-07-17 | P1.MV.1000, P1.SK.1000, P1.SK.1240 FF | 90% | 2d | 2023-05-08 | 2023-06-06 | 30d | 0d |  | N | 373 | CONS - PV_ELEC |
| P1.MV.1020 |  | MV VLF Testing Phase 1 | 4d | 2023-07-18 | 2023-07-21 | P1.MV.1010 FF+4d |  |  |  |  | 70d | 11d |  | N | 374 | CONS - PV_ELEC |

| ID | WBS | Activity | Type | Duration | Start | Finish | Predecessors | Complete | Remaining | Planned start | Planned finish | Total float | Free float | Expected finish | Requested Expected Finish Approved | MSP Activity ID | Department | Executive Level Reporting |
| --- | --- | --- | --- | --- | --- | --- | --- | --- | --- | --- | --- | --- | --- | --- | --- | --- | --- | --- |
|  | WBS100 | **Phase 1 Commissioning** |  |  | 2023-04-17 | 2023-10-25 |  |  |  |  |  |  |  |  |  |  |  |  |
|  | WBS1 | **Cable Insulation Resistant Test (IRT)** |  |  | 2023-05-16 | 2023-07-14 |  |  |  |  |  |  |  |  |  |  |  |  |
| P1.CX.1010 |  | BLA Cable Insulation Resistant Test (IRT) |  | 15d | 2023-05-16 A | 2023-07-14 | P1.BLA.1180 FF, P1.BLA.1180 SS | 67% | 5d | 2023-05-22 | 2023-06-13 | 26d | 0d | 2023-07-14 | N | 357 | QA |  |
| P1.CX.1020 |  | String Cable Insulation Resistant Test (IRT) |  | 25d | 2023-05-16 A | 2023-07-14 | P1.SW.1180 FF, P1.SW.1180 SS | 80% | 5d | 2023-05-22 | 2023-06-29 | 23d | 0d | 2023-07-14 | N | 377 | QA |  |
|  | WBS2 | **Open Circuit Voltage Testing Data (VOC)** |  |  | 2023-07-24 | 2023-08-07 |  |  |  |  |  |  |  |  |  |  |  |  |
| P1.CX.1030 |  | VOC Testing |  | 10d | 2023-07-24 | 2023-08-04 | P1.MT.1000 FF |  |  |  |  | 59d | 0d |  |  |  |  |  |
| A18920 |  | VOC Trouble Shooting |  | 5d | 2023-08-01 | 2023-08-07 | P1.CX.1030 FF+1d, P1.CX.1030 SS |  |  |  |  | 59d | 0d |  |  |  |  |  |
|  | WBS4 | **Tracker Commissioning** |  |  | 2023-09-28 | 2023-10-18 |  |  |  |  |  |  |  |  |  |  |  |  |
| P1.CX.1080 |  | Tracker Hot Commissioning |  | 15d | 2023-09-28 | 2023-10-18 | P1.CX.1120 |  |  |  |  | 34d | 0d |  | N | 381 | QA |  |
|  | WBS3 | **Inverter DC Commissioning** |  |  | 2023-04-17 | 2023-10-18 |  |  |  |  |  |  |  |  |  |  |  |  |
| P1.CX.1050 |  | Inverter Cold Commissioning |  | 25d | 2023-04-17 A | 2023-07-18 | P1.SK.1240 FF+1d, P1.SK.1230 | 88% | 3d | 2023-04-25 | 2023-05-31 | 73d | 0d |  | N | 29 | QA |  |
| P1.CX.1060 |  | Inverter Hot Commissioning |  | 15d | 2023-09-28 | 2023-10-18 | P1.CX.1120, P1.CX.1110 |  |  |  |  | 34d | 0d |  | N | 384 | QA |  |
|  | WBS6 | **Commissioning Milestones** |  |  | 2023-06-23 | 2023-10-25 |  |  |  |  |  |  |  |  |  |  |  |  |
| P1.CX.1090 |  | ISU Transformer Testing (NETA) Field Test |  | 13d | 2023-06-23 A | 2023-07-21 | P1.SK.1240 FF+1d | 23% | 10d | 2023-06-28 | 2023-07-18 | 55d | 0d | 2023-07-21 | N | 23 | QA |  |
| P1.CX.1110 |  | Permission to Energize |  | 5d | 2023-08-08 | 2023-08-15 | PM1060, P1.CX.1090 |  |  |  |  | 59d | 25d |  | N | 385 | QA |  |
| P1.CX.1120 |  | AC Backfeed Testing and Commissioning |  | 5d | 2023-09-21 | 2023-09-27 | P1.CX.1110, SUB1320 |  |  |  |  | 34d | 0d |  | N | 382 | QA |  |
| P1.CX.1130 |  | Monitoring/SCADA Array Commissioning |  | 10d | 2023-10-02 | 2023-10-13 | P1.CX.1120 FS+2d |  |  |  |  | 37d | 3d |  | N | 388 | QA |  |
| P1.CX.1140 |  | Utility Testing |  | 5d | 2023-10-19 | 2023-10-25 | P1.CX.1110, P1.CX.1060, P1.CX.1120, P1.CX.1080, P1.CX.1130 |  |  |  |  | 34d | 0d |  | N | 389 | QA |  |
| P1.CX.1150 |  | Placed In Service Phase 1 | milestone | 0d | 2023-10-25 | 2023-10-25 | P1.CX.1140 FF |  |  |  |  | 34d | 0d |  | N | 58 | QA |  |
|  | WBS268 | **Phase 2** |  |  | 2022-11-07 | 2023-10-20 |  |  |  |  |  |  |  |  |  |  |  |  |
|  | WBS2 | **Phase 2 Civil** |  |  | 2022-11-07 | 2023-02-14 |  |  |  |  |  |  |  |  |  |  |  |  |
| P2.CIV.1050 |  | Road Install |  | 19.5d | 2022-11-07 A | 2023-01-17 A | P2.CIV.1060 SS | 100% |  | 2022-11-22 | 2022-12-21 |  |  |  | N | 393 | CONS - Civil |  |
| P2.CIV.1060 |  | Site Grade, Cut & Fill, Seed & Straw |  | 40d | 2022-11-07 A | 2023-01-17 A | P2.CIV.1010 SS | 100% |  | 2022-11-07 | 2023-01-13 |  |  |  | N | 392 | CONS - Civil | Level 1 |
| P2.CIV.1010 |  | Clearing & Grubbing |  | 24.5d | 2022-11-14 A | 2022-12-20 A | P1.CIV.1020 | 100% |  |  |  |  |  |  | N | 401 | CONS - Civil |  |
| P2.CIV.1030 |  | SWPP - Site Stormwater - Install measures |  | 24.5d | 2022-11-14 A | 2023-02-14 A | P2.CIV.1010 SS | 100% |  | 2022-11-14 | 2022-12-20 |  |  |  | N | 402 | CONS - Civil |  |

| ID | WBS | Activity | Duration | Start | Finish | Predecessors | Complete | Planned start | Planned finish | Requested Expected Finish Approved | MSP Activity ID | Department |
| --- | --- | --- | --- | --- | --- | --- | --- | --- | --- | --- | --- | --- |
|  | WBS4 | **Phase 2 Mechanical** |  | 2023-02-07 | 2023-08-03 |  |  |  |  |  |  |  |
|  | WBS101 | **Pre-Drill** |  | 2023-02-07 | 2023-03-31 |  |  |  |  |  |  |  |
| P2.PD.1000 |  | Pre-Drill PB35 | 1d | 2023-02-07 A | 2023-02-07 A | P1.PD.1240 | 100% |  |  | N | 397 | CONS - PILES |
| P2.PD.1010 |  | Pre-Drill PB36 | 1d | 2023-02-08 A | 2023-02-08 A | P2.PD.1000 SS+1d | 100% |  |  | N | 406 | CONS - PILES |
| P2.PD.1020 |  | Pre-Drill PB34 | 1d | 2023-02-09 A | 2023-02-09 A | P2.PD.1010 SS+1d | 100% |  |  | N | 407 | CONS - PILES |
| P2.PD.1030 |  | Pre-Drill PB32 | 1d | 2023-02-10 A | 2023-02-10 A | P2.PD.1020 SS+1d | 100% |  |  | N | 408 | CONS - PILES |
| P2.PD.1040 |  | Pre-Drill PB33 | 1d | 2023-02-13 A | 2023-02-13 A | P2.PD.1030 SS+1d | 100% |  |  | N | 409 | CONS - PILES |
| P2.PD.1050 |  | Pre-Drill PB30 | 1d | 2023-02-13 A | 2023-02-13 A | P2.PD.1040 SS+1d | 100% | 2023-02-13 | 2023-02-14 | N | 410 | CONS - PILES |
| P2.PD.1060 |  | Pre-Drill PB31 | 1d | 2023-02-14 A | 2023-02-14 A | P2.PD.1050 SS+1d | 100% |  |  | N | 411 | CONS - PILES |
| P2.PD.1070 |  | Pre-Drill PB28 | 1d | 2023-02-15 A | 2023-02-15 A | P2.PD.1060 SS+1d | 100% |  |  | N | 412 | CONS - PILES |
| P2.PD.1080 |  | Pre-Drill PB29 | 1d | 2023-02-16 A | 2023-02-16 A | P2.PD.1070 SS+1d | 100% |  |  | N | 413 | CONS - PILES |
| P2.PD.1090 |  | Pre-Drill PB27 | 1d | 2023-02-17 A | 2023-02-17 A | P2.PD.1080 SS+1d | 100% |  |  | N | 414 | CONS - PILES |
| P2.PD.1100 |  | Pre-Drill PB26 | 1d | 2023-02-21 A | 2023-02-21 A | P2.PD.1090 SS+1d | 100% |  |  | N | 415 | CONS - PILES |
| P2.PD.1110 |  | Pre-Drill PB37 | 1d | 2023-02-22 A | 2023-02-22 A | P2.PD.1100 SS+1d | 100% |  |  | N | 416 | CONS - PILES |
| P2.PD.1120 |  | Pre-Drill PB38 | 1d | 2023-02-23 A | 2023-02-23 A | P2.PD.1110 SS+1d | 100% |  |  | N | 417 | CONS - PILES |
| P2.PD.1130 |  | Pre-Drill PB39 | 1d | 2023-02-24 A | 2023-03-13 A | P2.PD.1120 SS+1d | 100% | 2023-02-24 | 2023-02-24 | N | 418 | CONS - PILES |
| P2.PD.1140 |  | Pre-Drill PB40 | 1d | 2023-02-27 A | 2023-03-14 A | P2.PD.1130 SS+1d | 100% | 2023-02-27 | 2023-02-27 | N | 419 | CONS - PILES |
| P2.PD.1150 |  | Pre-Drill PB44 | 1d | 2023-02-28 A | 2023-03-15 A | P2.PD.1140 SS+1d | 100% | 2023-02-28 | 2023-02-28 | N | 420 | CONS - PILES |
| P2.PD.1160 |  | Pre-Drill PB45 | 1d | 2023-03-01 A | 2023-03-16 A | P2.PD.1150 SS+1d | 100% | 2023-03-01 | 2023-03-01 | N | 421 | CONS - PILES |
| P2.PD.1170 |  | Pre-Drill PB41 | 1d | 2023-03-02 A | 2023-03-17 A | P2.PD.1160 SS+1d | 100% | 2023-03-02 | 2023-03-02 | N | 422 | CONS - PILES |
| P2.PD.1180 |  | Pre-Drill PB42 | 1d | 2023-03-03 A | 2023-03-30 A | P2.PD.1170 SS+1d | 100% | 2023-03-03 | 2023-03-03 | N | 423 | CONS - PILES |
| P2.PD.1190 |  | Pre-Drill PB43 | 1d | 2023-03-06 A | 2023-03-31 A | P2.PD.1180 SS+1d | 100% | 2023-03-06 | 2023-03-06 | N | 424 | CONS - PILES |
|  | WBS10 | **Racking Foundation** |  | 2023-02-16 | 2023-04-28 |  |  |  |  |  |  |  |
|  | 1 | **Racking Foundation Install** |  | 2023-02-16 | 2023-04-26 |  |  |  |  |  |  |  |
| P2.RF.1010 |  | Piles PB36 | 2d | 2023-02-16 A | 2023-02-27 A | P2.PD.1010, P2.CIV.1060 | 100% | 2023-02-27 | 2023-02-28 | N | 427 | CONS - PILES |
| P2.RF.1000 |  | Piles PB35 | 2d | 2023-02-17 A | 2023-02-23 A | PRO.1640 SS+8d, P2.PD.1000, P2.RF.1010 SS | 100% | 2023-02-24 | 2023-02-27 | N | 426 | CONS - PILES |
| P2.RF.1020 |  | Piles PB34 | 2d | 2023-02-21 A | 2023-02-25 A | P2.PD.1020, P2.RF.1000 SS+1d | 100% | 2023-02-28 | 2023-03-01 | N | 428 | CONS - PILES |
| P2.RF.1030 |  | Piles PB32 | 2d | 2023-02-23 A | 2023-03-06 A | P2.RF.1020, P2.PD.1030 | 100% | 2023-03-01 | 2023-03-02 | N | 429 | CONS - PILES |
| P2.RF.1040 |  | Piles PB33 | 2d | 2023-02-27 A | 2023-02-28 A | P2.RF.1030 SS+1d, P2.PD.1040 | 100% |  |  | N | 430 | CONS - PILES |
| P2.RF.1050 |  | Piles PB30 | 2d | 2023-03-01 A | 2023-03-02 A | P2.RF.1040, P2.PD.1050 | 100% |  |  | N | 431 | CONS - PILES |
| P2.RF.1060 |  | Piles PB31 | 2d | 2023-03-02 A | 2023-03-03 A | P2.RF.1050 SS+1d, P2.PD.1060 | 100% |  |  | N | 432 | CONS - PILES |
| P2.RF.1070 |  | Piles PB28 | 2d | 2023-03-03 A | 2023-03-07 A | P2.RF.1060 SS+1d, P2.PD.1070 | 100% | 2023-03-03 | 2023-03-06 | N | 433 | CONS - PILES |
| P2.RF.1080 |  | Piles PB29 | 2d | 2023-03-06 A | 2023-03-07 A | P2.RF.1070 SS+1d, P2.PD.1080 | 100% |  |  | N | 434 | CONS - PILES |
| P2.RF.1090 |  | Piles PB27 | 2d | 2023-03-07 A | 2023-03-08 A | P2.RF.1080 SS+1d, P2.PD.1090 | 100% |  |  | N | 435 | CONS - PILES |
| P2.RF.1100 |  | Piles PB26 | 2d | 2023-03-08 A | 2023-03-09 A | P2.RF.1090 SS+1d, P2.PD.1100 | 100% |  |  | N | 436 | CONS - PILES |
| P2.RF.1110 |  | Piles PB37 | 2d | 2023-03-09 A | 2023-03-10 A | P2.RF.1100 SS+1d, P2.PD.1110 | 100% |  |  | N | 437 | CONS - PILES |
| P2.RF.1120 |  | Piles PB38 | 2d | 2023-03-10 A | 2023-03-14 A | P2.RF.1110 SS+1d, P2.PD.1120 | 100% | 2023-03-10 | 2023-03-13 | N | 438 | CONS - PILES |
| P2.RF.1130 |  | Piles PB39 | 2d | 2023-03-13 A | 2023-03-16 A | P2.RF.1120 SS+1d, P2.PD.1130 | 100% | 2023-03-20 | 2023-03-21 | N | 439 | CONS - PILES |
| P2.RF.1140 |  | Piles PB40 | 2d | 2023-03-14 A | 2023-03-17 A | P2.RF.1130 SS+1d, P2.PD.1140 | 100% | 2023-03-21 | 2023-03-22 | N | 440 | CONS - PILES |
| P2.RF.1150 |  | Piles PB44 | 3d | 2023-03-20 A | 2023-03-22 A | P2.RF.1140 SS+1d, P2.PD.1150 | 100% | 2023-04-03 | 2023-04-05 | N | 441 | CONS - PILES |
| P2.RF.1160 |  | Piles PB45 | 3d | 2023-03-23 A | 2023-03-27 A | P2.RF.1150 SS+2d, P2.PD.1160 | 100% | 2023-04-05 | 2023-04-07 | N | 442 | CONS - PILES |
| P2.RF.1170 |  | Piles PB41 | 3d | 2023-03-30 A | 2023-04-10 A | P2.RF.1160 SS+1d, P2.PD.1170 | 100% | 2023-04-06 | 2023-04-10 | N | 443 | CONS - PILES |
| P2.RF.1180 |  | Piles PB42 | 2d | 2023-04-03 A | 2023-04-24 A | P2.RF.1170 SS+1d, P2.PD.1180 | 100% | 2023-04-07 | 2023-04-10 | N | 444 | CONS - PILES |
| P2.RF.1190 |  | Piles PB43 | 2d | 2023-04-05 A | 2023-04-26 A | P2.RF.1180 SS+1d, P2.PD.1190 | 100% | 2023-04-10 | 2023-04-11 | N | 445 | CONS - PILES |

| ID | WBS | Activity | Duration | Start | Finish | Predecessors | Complete | Planned start | Planned finish | Requested Expected Finish Approved | MSP Activity ID | Department |
| --- | --- | --- | --- | --- | --- | --- | --- | --- | --- | --- | --- | --- |
|  | 2 | **Racking Foundation QC** |  | 2023-04-12 | 2023-04-28 |  |  |  |  |  |  |  |
| A18860 |  | Phase 2 Pile QC | 14d | 2023-04-12 A | 2023-04-28 A | P2.RF.1000 SS, P2.RF.1190 FF+2d | 100% | 2023-04-19 | 2023-05-08 |  |  |  |
|  | WBS20 | **Racking** |  | 2023-04-21 | 2023-06-12 |  |  |  |  |  |  |  |
|  | 1 | **Racking Install** |  | 2023-04-21 | 2023-05-19 |  |  |  |  |  |  |  |
| P2.RA.1000 |  | Racking PB35 | 2d | 2023-04-21 A | 2023-04-27 A | P2.RF.1000 FS+10d, PRO.1670 SS+30d, P1.RA.1240 SS+1d, A18860 SS+5d | 100% | 2023-04-26 | 2023-04-27 | N | 447 | CONS - RACK |
| P2.RA.1010 |  | Racking PB36 | 2d | 2023-04-21 A | 2023-04-28 A | P2.RF.1010, P2.RA.1000 SS | 100% | 2023-04-27 | 2023-04-28 | N | 448 | CONS - RACK |
| P2.RA.1020 |  | Racking PB34 | 2d | 2023-04-26 A | 2023-05-01 A | P2.RA.1010 SS+3d, P2.RF.1020 | 100% | 2023-04-26 | 2023-04-28 | N | 449 | CONS - RACK |
| P2.RA.1030 |  | Racking PB32 | 2d | 2023-04-27 A | 2023-05-01 A | P2.RA.1020 SS+1d, P2.RF.1030 | 100% |  |  | N | 450 | CONS - RACK |
| P2.RA.1040 |  | Racking PB33 | 2d | 2023-04-28 A | 2023-05-02 A | P2.RF.1040, P2.RA.1030 SS+1d | 100% |  |  | N | 451 | CONS - RACK |
| P2.RA.1050 |  | Racking PB30 | 2d | 2023-05-01 A | 2023-05-03 A | P2.RF.1050, P2.RA.1040 SS+1d | 100% |  |  | N | 452 | CONS - RACK |
| P2.RA.1060 |  | Racking PB31 | 2d | 2023-05-02 A | 2023-05-04 A | P2.RF.1060, P2.RA.1050 SS+1d | 100% |  |  | N | 453 | CONS - RACK |
| P2.RA.1070 |  | Racking PB28 | 2d | 2023-05-03 A | 2023-05-05 A | P2.RF.1070, P2.RA.1060 SS+1d | 100% |  |  | N | 454 | CONS - RACK |
| P2.RA.1080 |  | Racking PB29 | 2d | 2023-05-04 A | 2023-05-08 A | P2.RF.1080, P2.RA.1070 SS+1d | 100% |  |  | N | 455 | CONS - RACK |
| P2.RA.1090 |  | Racking PB27 | 2d | 2023-05-05 A | 2023-05-09 A | P2.RF.1090, P2.RA.1080 SS+1d | 100% |  |  | N | 456 | CONS - RACK |
| P2.RA.1100 |  | Racking PB26 | 2d | 2023-05-08 A | 2023-05-10 A | P2.RF.1100, P2.RA.1090 SS+1d | 100% |  |  | N | 457 | CONS - RACK |
| P2.RA.1110 |  | Racking PB37 | 2d | 2023-05-08 A | 2023-05-10 A | P2.RF.1110, P2.RA.1100 SS | 100% |  |  | N | 458 | CONS - RACK |
| P2.RA.1120 |  | Racking PB38 | 2d | 2023-05-09 A | 2023-05-11 A | P2.RA.1110 SS+1d, P2.RF.1120 | 100% |  |  | N | 459 | CONS - RACK |
| P2.RA.1130 |  | Racking PB39 | 2d | 2023-05-09 A | 2023-05-19 A | P2.RF.1130, P2.RA.1120 SS | 100% | 2023-05-09 | 2023-05-11 | N | 460 | CONS - RACK |
| P2.RA.1140 |  | Racking PB40 | 2d | 2023-05-10 A | 2023-05-19 A | P2.RF.1140, P2.RA.1130 SS+1d | 100% | 2023-05-10 | 2023-05-12 | N | 461 | CONS - RACK |
| P2.RA.1150 |  | Racking PB44 | 2d | 2023-05-16 A | 2023-05-18 A | P2.RA.1140 SS+3d, P2.RF.1150 | 100% |  |  | N | 462 | CONS - RACK |
| P2.RA.1160 |  | Racking PB45 | 2d | 2023-05-17 A | 2023-05-19 A | P2.RA.1150 SS+1d, P2.RF.1160 | 100% |  |  | N | 463 | CONS - RACK |
| P2.RA.1170 |  | Racking PB41 | 2d | 2023-05-17 A | 2023-05-19 A | P2.RA.1160 SS, P2.RF.1170 | 100% |  |  | N | 464 | CONS - RACK |
| P2.RA.1180 |  | Racking PB42 | 2d | 2023-05-18 A | 2023-05-19 A | P2.RA.1170 SS+1d, P2.RF.1180 | 100% | 2023-05-18 | 2023-05-22 | N | 465 | CONS - RACK |
| P2.RA.1190 |  | Racking PB43 | 2d | 2023-05-18 A | 2023-05-19 A | P2.RA.1180 SS, P2.RF.1190, A18860 FF | 100% | 2023-05-18 | 2023-05-22 | N | 466 | CONS - RACK |

| ID | WBS | Activity | Type | Duration | Start | Finish | Predecessors | Complete | Remaining | Planned start | Planned finish | Total float | Free float | Expected finish | Calendar | Requested Expected Finish Approved | MSP Activity ID | Department |
| --- | --- | --- | --- | --- | --- | --- | --- | --- | --- | --- | --- | --- | --- | --- | --- | --- | --- | --- |
|  | 2 | **Racking QC** |  |  | 2023-05-05 | 2023-06-12 |  |  |  |  |  |  |  |  |  |  |  |  |
| A18870 |  | Phase 2 Racking QC |  | 12d | 2023-05-05 A | 2023-06-12 A | P2.RA.1000 SS+5d, P2.RA.1190 FF+5d | 100% |  | 2023-05-05 | 2023-05-23 |  |  |  |  |  |  |  |
|  | WBS30 | **Module Install** |  |  | 2023-06-23 | 2023-08-03 |  |  |  |  |  |  |  |  |  |  |  |  |
| A100 |  | Summary | WBS summary | 29d | 2023-06-23 A | 2023-08-03 |  | 34% | 19d | 2023-06-26 | 2023-08-03 | 33d | 343d |  | Foggia_5x8 No Holidays |  |  |  |
| P2.MO.1100 |  | Mods PB26 |  | 1d | 2023-06-23 A | 2023-06-26 A | P2.RA.1100, P1.MO.1180 | 100% |  | 2023-06-26 | 2023-06-26 |  |  |  |  | N | 478 | CONS - MODS |
| P2.MO.1090 |  | Mods PB27 |  | 1.5d | 2023-06-26 A | 2023-06-27 A | P2.RA.1090, P2.MO.1100 | 100% |  |  |  |  |  |  |  | N | 477 | CONS - MODS |
| P2.MO.1080 |  | Mods PB29 |  | 1.5d | 2023-06-28 A | 2023-06-29 A | P2.RA.1080, P2.MO.1090 | 100% |  |  |  |  |  |  |  | N | 476 | CONS - MODS |
| P2.MO.1070 |  | Mods PB28 |  | 1.5d | 2023-06-29 A | 2023-06-30 A | P2.RA.1070, P2.MO.1080 | 100% |  |  |  |  |  |  |  | N | 475 | CONS - MODS |
| P2.MO.1050 |  | Mods PB30 |  | 1.5d | 2023-07-05 A | 2023-07-10 | P2.RA.1050, P2.MO.1070 | 67% | 0.5d | 2023-07-05 | 2023-07-06 | 20.5d | 0d | 2023-07-10 |  | N | 473 | CONS - MODS |
| P2.MO.1000 |  | Mods PB35 |  | 1.5d | 2023-07-10 | 2023-07-11 | P2.RA.1000, PRO.1100 SS+25d, A18870 SS+5d, P2.MO.1050 |  |  |  |  | 20.5d | 0d |  |  | N | 468 | CONS - MODS |
| P2.MO.1060 |  | Mods PB31 |  | 1.5d | 2023-07-12 | 2023-07-13 | P2.RA.1060, P2.MO.1000 |  |  |  |  | 20.5d | 0d |  |  | N | 474 | CONS - MODS |
| P2.MO.1010 |  | Mods PB36 |  | 1.5d | 2023-07-13 | 2023-07-14 | P2.RA.1010, P2.MO.1060 |  |  |  |  | 20.5d | 0d |  |  | N | 469 | CONS - MODS |
| P2.MO.1020 |  | Mods PB34 |  | 1.5d | 2023-07-17 | 2023-07-18 | P2.MO.1010, P2.RA.1020 |  |  |  |  | 20.5d | 0d |  |  | N | 470 | CONS - MODS |
| P2.MO.1030 |  | Mods PB32 |  | 1.5d | 2023-07-18 | 2023-07-19 | P2.RA.1030, P2.MO.1020 |  |  |  |  | 20.5d | 0d |  |  | N | 471 | CONS - MODS |
| P2.MO.1040 |  | Mods PB33 |  | 1.5d | 2023-07-20 | 2023-07-21 | P2.RA.1040, P2.MO.1030 |  |  |  |  | 20.5d | 0d |  |  | N | 472 | CONS - MODS |
| P2.MO.1110 |  | Mods PB37 |  | 1.5d | 2023-07-21 | 2023-07-24 | P2.MO.1100, P2.RA.1110, P2.MO.1040 |  |  |  |  | 20.5d | 0d |  |  | N | 479 | CONS - MODS |
| P2.MO.1120 |  | Mods PB38 |  | 1d | 2023-07-25 | 2023-07-25 | P2.RA.1120, P2.MO.1110 |  |  |  |  | 20.5d | 0d |  |  | N | 480 | CONS - MODS |
| P2.MO.1130 |  | Mods PB39 |  | 1d | 2023-07-26 | 2023-07-26 | P2.MO.1120, P2.RA.1130 |  |  |  |  | 20.5d | 0d |  |  | N | 481 | CONS - MODS |
| P2.MO.1140 |  | Mods PB40 |  | 1d | 2023-07-27 | 2023-07-27 | P2.MO.1130, P2.RA.1140 |  |  |  |  | 20.5d | 0d |  |  | N | 482 | CONS - MODS |
| P2.MO.1150 |  | Mods PB44 |  | 1d | 2023-07-28 | 2023-07-28 | P2.MO.1140, P2.RA.1150 |  |  |  |  | 31d | 0d |  |  | N | 483 | CONS - MODS |
| P2.MO.1160 |  | Mods PB45 |  | 1d | 2023-07-31 | 2023-07-31 | P2.MO.1150, P2.RA.1160 |  |  |  |  | 31d | 0d |  |  | N | 484 | CONS - MODS |
| P2.MO.1170 |  | Mods PB41 |  | 1d | 2023-08-01 | 2023-08-01 | P2.MO.1160, P2.RA.1170 |  |  |  |  | 31d | 0d |  |  | N | 485 | CONS - MODS |
| P2.MO.1180 |  | Mods PB42 |  | 1d | 2023-08-02 | 2023-08-02 | P2.MO.1170, P2.RA.1180 |  |  |  |  | 31d | 0d |  |  | N | 486 | CONS - MODS |
| P2.MO.1190 |  | Mods PB43 |  | 1d | 2023-08-03 | 2023-08-03 | P2.MO.1180, P2.RA.1190, A18870 FF |  |  |  |  | 31d | 0d |  |  | N | 395 | CONS - MODS |

| ID | WBS | Activity | Duration | Start | Finish | Predecessors | Complete | Planned start | Planned finish | Total float | Free float | Constraint | Requested Expected Finish Approved | MSP Activity ID | Department |
| --- | --- | --- | --- | --- | --- | --- | --- | --- | --- | --- | --- | --- | --- | --- | --- |
|  | WBS5 | **Phase 2 Electrical** |  | 2023-01-09 | 2023-09-13 |  |  |  |  |  |  |  |  |  |  |
|  | WBS1 | **Equipment Pad** |  | 2023-01-09 | 2023-09-01 |  |  |  |  |  |  |  |  |  |  |
| P2.SP.1000 |  | Skid Pile Install Phase 2 | 12d | 2023-01-09 A | 2023-02-27 A |  | 100% | 2023-01-17 | 2023-02-01 |  |  |  | N | 396 | CONS - PV_ELEC |
| P2.SF.1000 |  | Skid Foundations Phase 2 | 15d | 2023-02-13 A | 2023-03-02 A | P2.SP.1000 SS+1d, P2.SP.1000 FF+7d | 100% | 2023-02-13 | 2023-03-06 |  |  |  | N | 489 | CONS - PV_ELEC |
| P2.IT.1000 |  | Inverters Term Phase 2 | 20d | 2023-08-04 | 2023-09-01 | P2.SK.1000 FS+1d, P2.FP.1000 FF+2d, P2.FP.1000 SS+2d, P2.SK.1190 FF+1d, P1.IT.1180, P2.SK.1020 FF+3d |  |  |  | 13d | 2d |  | N | 490 | CONS - PV_ELEC |
|  | WBS1177 | **Skid Pile Install** |  |  |  |  |  |  |  |  |  |  |  |  |  |
|  | WBS10 | **Skid Foundations Roughed In** |  |  |  |  |  |  |  |  |  |  |  |  |  |
|  | WBS20 | **Skid Set (INV/XFMR/SCADA)** |  | 2023-03-27 | 2023-07-18 |  |  |  |  |  |  |  |  |  |  |
| P2.SK.1000 |  | Skid Install PB35 | 0.2d | 2023-03-27 A | 2023-03-27 A | P2.SF.1000, P1.SK.1230 | 100% | 2023-03-30 | 2023-03-30 |  |  |  | N | 493 | CONS - PV_ELEC |
| P2.SK.1010 |  | Skid Install PB36 | 0.2d | 2023-03-27 A | 2023-03-27 A | P2.SK.1000 | 100% | 2023-03-30 | 2023-03-30 |  |  |  | N | 497 | CONS - PV_ELEC |
| P2.SK.1030 |  | Skid Install PB32 | 0.2d | 2023-03-27 A | 2023-03-27 A |  | 100% | 2023-03-30 | 2023-03-30 |  |  |  | N | 499 | CONS - PV_ELEC |
| P2.SK.1040 |  | Skid Install PB33 | 0.2d | 2023-03-27 A | 2023-03-27 A | P2.SK.1030 | 100% | 2023-03-31 | 2023-03-31 |  |  |  | N | 500 | CONS - PV_ELEC |
| P2.SK.1050 |  | Skid Install PB30 | 0.2d | 2023-03-28 A | 2023-03-28 A | P2.SK.1040 | 100% | 2023-03-31 | 2023-03-31 |  |  |  | N | 501 | CONS - PV_ELEC |
| P2.SK.1060 |  | Skid Install PB31 | 0.2d | 2023-03-28 A | 2023-03-28 A | P2.SK.1050 | 100% | 2023-03-31 | 2023-03-31 |  |  |  | N | 502 | CONS - PV_ELEC |
| P2.SK.1070 |  | Skid Install PB28 | 0.2d | 2023-03-28 A | 2023-03-28 A | P2.SK.1060 | 100% | 2023-03-31 | 2023-03-31 |  |  |  | N | 503 | CONS - PV_ELEC |
| P2.SK.1080 |  | Skid Install PB29 | 0.2d | 2023-03-28 A | 2023-03-28 A | P2.SK.1070 | 100% | 2023-03-31 | 2023-03-31 |  |  |  | N | 504 | CONS - PV_ELEC |
| P2.SK.1090 |  | Skid Install PB27 | 0.2d | 2023-03-28 A | 2023-03-28 A | P2.SK.1080 | 100% | 2023-04-03 | 2023-04-03 |  |  |  | N | 505 | CONS - PV_ELEC |
| P2.SK.1100 |  | Skid Install PB26 | 0.2d | 2023-03-29 A | 2023-03-29 A | P2.SK.1090 | 100% | 2023-04-03 | 2023-04-03 |  |  |  | N | 506 | CONS - PV_ELEC |
| P2.SK.1110 |  | Skid Install PB37 | 0.2d | 2023-03-29 A | 2023-03-29 A | P2.SK.1100 | 100% | 2023-04-03 | 2023-04-03 |  |  |  | N | 507 | CONS - PV_ELEC |
| P2.SK.1120 |  | Skid Install PB38 | 0.2d | 2023-03-29 A | 2023-03-29 A | P2.SK.1110 | 100% | 2023-04-03 | 2023-04-03 |  |  |  | N | 508 | CONS - PV_ELEC |
| P2.SK.1130 |  | Skid Install PB39 | 0.2d | 2023-03-29 A | 2023-03-29 A | P2.SK.1120 | 100% | 2023-04-03 | 2023-04-03 |  |  |  | N | 509 | CONS - PV_ELEC |
| P2.SK.1140 |  | Skid Install PB40 | 0.2d | 2023-03-29 A | 2023-03-29 A | P2.SK.1130 | 100% | 2023-04-04 | 2023-04-04 |  |  |  | N | 510 | CONS - PV_ELEC |
| P2.SK.1150 |  | Skid Install PB44 | 0.2d | 2023-03-30 A | 2023-03-30 A | P2.SK.1140 | 100% | 2023-04-04 | 2023-04-04 |  |  |  | N | 511 | CONS - PV_ELEC |
| P2.SK.1160 |  | Skid Install PB45 | 0.2d | 2023-03-30 A | 2023-03-30 A | P2.SK.1150 | 100% | 2023-04-04 | 2023-04-04 |  |  |  | N | 512 | CONS - PV_ELEC |
| P2.SK.1170 |  | Skid Install PB41 | 0.2d | 2023-03-30 A | 2023-03-30 A | P2.SK.1160 | 100% | 2023-04-04 | 2023-04-04 |  |  |  | N | 513 | CONS - PV_ELEC |
| P2.SK.1180 |  | Skid Install PB42 | 0.2d | 2023-03-30 A | 2023-03-30 A | P2.SK.1170 | 100% | 2023-04-04 | 2023-04-04 |  |  |  | N | 514 | CONS - PV_ELEC |
| P2.SK.1190 |  | Skid Install PB43 | 0.2d | 2023-03-30 A | 2023-03-30 A | P2.SK.1180 | 100% | 2023-04-05 | 2023-04-05 |  |  |  | N | 492 | CONS - PV_ELEC |
| P2.SK.1020 |  | Skid Install PB34 | 1d | 2023-07-17 | 2023-07-18 | P2.SK.1010 |  |  |  | 42.6d | 29.6d | start on or after 2023-07-17 | N | 498 | CONS - PV_ELEC |

| ID | WBS | Activity | Duration | Start | Finish | Predecessors | Complete | Planned start | Planned finish | Total float | Free float | Requested Expected Finish Approved | MSP Activity ID | Department |
| --- | --- | --- | --- | --- | --- | --- | --- | --- | --- | --- | --- | --- | --- | --- |
|  | WBS30 | **Set Central Inverters** |  |  |  |  |  |  |  |  |  |  |  |  |
|  | WBS40 | **Set MV Transformers** |  |  |  |  |  |  |  |  |  |  |  |  |
|  | WBS50 | **Inverter's DC Terminated** |  |  |  |  |  |  |  |  |  |  |  |  |
|  | WBS60 | **Transformer's DC Terminated** |  |  |  |  |  |  |  |  |  |  |  |  |
|  | WBS2 | **DC Wiring** |  | 2023-07-10 | 2023-09-13 |  |  |  |  |  |  |  |  |  |
| P2.CAB.1000 |  | CAB Installation Phase 2 | 24d | 2023-07-10 | 2023-08-10 | PRO.1760 SS+5d, P1.CAB.1000, P2.RA.1000, P2.RA.1190 FF+5d, P2.MO.1090 FS+5d |  |  |  | 0d |  | N | 523 | CONS - PV_ELEC |
| P2.DM.1000 |  | DC Disco Mount Phase 2 | 26d | 2023-07-12 | 2023-08-17 | PRO.1250 SS+5d, P2.RF.1190 FF+5d, P2.RF.1000, P1.DM.1180 |  |  |  | 22d | 0d | N | 525 | CONS - PV_ELEC |
| P2.CO.1000 |  | DC Feeder UG Phase 2 | 26d | 2023-07-14 | 2023-08-21 | PRO.1730 SS+4d, P1.CO.1180 |  |  |  | 11d | 0d | N | 524 | CONS - PV_ELEC |
| P2.FP.1000 |  | Feeders Pull Phase 2 | 28d | 2023-07-21 | 2023-08-30 | PRO.1730 SS+4d, P2.CO.1000 SS+5d, P1.FP.1180, P2.CO.1000 FF+5d |  |  |  | 12d | 0d | N | 491 | CONS - PV_ELEC |
| P2.BLA.1000 |  | BLA Phase 2 | 15d | 2023-07-25 | 2023-08-15 | P2.CAB.1000 SS+2d, PRO.1190 SS+10d, P2.CAB.1000 FF+2d, P1.BLA.1180 |  |  |  | 16d | 0d | N | 522 | CONS - PV_ELEC |
| P2.FT.1000 |  | Feeders Term Phase 2 | 28d | 2023-07-25 | 2023-09-01 | P1.FT.1180, P2.FP.1000 SS+2d, P2.FP.1000 FF+2d |  |  |  | 18d | 0d | N | 35 | CONS - PV_ELEC |
| P2.DT.1000 |  | DC Disco Term Phase 2 | 28d | 2023-07-26 | 2023-09-05 | P2.DM.1000 SS+3d, P2.FP.1000 FF+2d, P2.DM.1000 FF+3d, P2.FP.1000 SS+2d, P2.CX.1010 FF, P2.CX.1010 SS |  |  |  | 16d | 3d | N | 526 | CONS - PV_ELEC |
| P2.SW.1000 |  | String Wire Phase 2 | 20d | 2023-07-28 | 2023-08-25 | P2.MO.1000, PRO.1730 SS+4d, P2.MO.1190 FF+3d, P1.SW.1180, P2.FP.1000 SS+5d |  |  |  | 19d | 0d | N | 521 | CONS - PV_ELEC |
| P2.MT.1000 |  | Mod Term Phase 2 | 24d | 2023-08-07 | 2023-09-11 | P2.MO.1000, P2.MO.1190 FF+2d, P1.MT.1000, P2.SW.1000 SS, P2.CX.1020 SS, P2.CX.1020 FF |  |  |  | 13d | 0d | N | 31 | CONS - PV_ELEC |
| P2.WM.1000 |  | Wire Management Phase 2 | 20d | 2023-08-16 | 2023-09-13 | P2.MT.1000 FF+2d, P2.DT.1000 FF+2d, P1.WM.1000, P2.IT.1000 FF+2d |  |  |  | 16d | 0d | N | 34 | CONS - PV_ELEC |
|  | WBS10 | **UG Conduit** |  |  |  |  |  |  |  |  |  |  |  |  |
|  | WBS20 | **DC Feeders Pulled** |  |  |  |  |  |  |  |  |  |  |  |  |
|  | WBS30 | **DC Feeders Terminated** |  |  |  |  |  |  |  |  |  |  |  |  |
|  | WBS40 | **String Wire Installed** |  |  |  |  |  |  |  |  |  |  |  |  |
|  | WBS50 | **DC Disconnect Boxes Mounted** |  |  |  |  |  |  |  |  |  |  |  |  |
|  | WBS80 | **SCADA/Monitoring Terminated** |  |  |  |  |  |  |  |  |  |  |  |  |
|  | WBS55 | **CAB Hangers Installed** |  |  |  |  |  |  |  |  |  |  |  |  |
|  | WBS60 | **DC BLA Installed** |  |  |  |  |  |  |  |  |  |  |  |  |
|  | WBS70 | **DC Disconnect Boxes Terminated** |  |  |  |  |  |  |  |  |  |  |  |  |
|  | WBS92 | **Module Terminations** |  |  |  |  |  |  |  |  |  |  |  |  |
|  | WBS93 | **Wire Management** |  |  |  |  |  |  |  |  |  |  |  |  |
|  | WBS6 | **MV/ISP to Power Blocks** |  | 2023-01-09 | 2023-08-29 |  |  |  |  |  |  |  |  |  |
| P2.MV.1000 |  | MV/ISP to PB Phase 2 | 1d | 2023-01-09 A | 2023-02-28 A | PRO.1700 SF+5d | 100% | 2023-02-08 | 2023-02-08 |  |  | N | 540 | CONS - PV_ELEC |
| P2.MV.1010 |  | MV/ISP Terminations Phase 2 | 20d | 2023-07-18 | 2023-08-15 | P2.MV.1000, P1.MV.1010, P1.SK.1000, P1.SK.1240 FF |  |  |  | 30d | 0d | N | 541 | CONS - PV_ELEC |
| P2.MV.1020 |  | MV/ISP Testing Phase 2 | 10d | 2023-08-16 | 2023-08-29 | P2.MV.1010 |  |  |  | 46d | 10d | N | 542 | CONS - PV_ELEC |

| ID | WBS | Activity | Type | Duration | Start | Finish | Predecessors | Complete | Remaining | Planned start | Planned finish | Total float | Free float | Calendar | Requested Expected Finish Approved | MSP Activity ID | Department | Executive Level Reporting |
| --- | --- | --- | --- | --- | --- | --- | --- | --- | --- | --- | --- | --- | --- | --- | --- | --- | --- | --- |
|  | WBS100 | **Phase 2 Commissioning** |  |  | 2023-05-05 | 2023-10-20 |  |  |  |  |  |  |  |  |  |  |  |  |
|  | WBS1 | **Cable Insulation Resistant Test (IRT)** |  |  | 2023-07-26 | 2023-08-25 |  |  |  |  |  |  |  |  |  |  |  |  |
| P2.CX.1010 |  | BLA Cable Insulation Resistant Test (IRT) |  | 15d | 2023-07-26 | 2023-08-16 | P2.BLA.1000 FF+1d, P2.BLA.1000 SS+1d |  |  |  |  | 16d | 0d |  | N | 527 | QA |  |
| P2.CX.1020 |  | String Cable Insulation Resistant Test (IRT) |  | 20d | 2023-07-28 | 2023-08-25 | P2.SW.1000 SS, P2.SW.1000 FF |  |  |  |  | 19d | 0d |  | N | 545 | QA |  |
|  | WBS2 | **Open Circuit Voltage Testing Data (VOC)** |  |  | 2023-08-01 | 2023-09-01 |  |  |  |  |  |  |  |  |  |  |  |  |
| P2.CX.1040 |  | String Level VOC |  | 20d | 2023-08-01 | 2023-08-29 | P2.CX.1020 FF+2d, P2.CX.1020 SS+2d |  |  |  |  | 46d | 10d |  | N | 548 | QA |  |
| P2.CX.1030 |  | Feeder Level VOC |  | 20d | 2023-08-04 | 2023-09-01 | P2.FT.1000 SS, P2.FT.1000 FF |  |  |  |  | 43d | 7d |  | N | 547 | QA |  |
|  | WBS4 | **Tracker Commissioning** |  |  | 2023-08-04 | 2023-10-13 |  |  |  |  |  |  |  |  |  |  |  |  |
| P2.CX.1050 |  | Tracker Cold Commissioning |  | 20d | 2023-08-04 | 2023-09-01 | P2.MO.1190 |  |  |  |  | 43d | 7d |  | N | 36 | QA |  |
| P2.CX.1060 |  | Tracker Hot Commissioning |  | 12d | 2023-09-28 | 2023-10-13 | P2.CX.1050, P2.CX.1120 |  |  |  |  | 36d | 0d |  | N | 550 | QA |  |
|  | WBS3 | **Inverter DC Commissioning** |  |  | 2023-05-05 | 2023-10-13 |  |  |  |  |  |  |  |  |  |  |  |  |
| P2.CX.1070 |  | Inverter Cold Commissioning |  | 10d | 2023-05-05 A | 2023-07-19 | P2.SK.1000, P2.SK.1190 FF+1d, P1.CX.1050 | 90% | 1d | 2023-05-05 | 2023-05-18 | 74d | 0d |  | N | 33 | QA |  |
| P2.CX.1080 |  | Inverter Hot Commissioning |  | 12d | 2023-09-28 | 2023-10-13 | P2.CX.1120, P2.CX.1110 |  |  |  |  | 37d | 0d |  | N | 553 | QA |  |
|  | WBS6 | **Commissioning Milestones** |  |  | 2023-07-24 | 2023-10-20 |  |  |  |  |  |  |  |  |  |  |  |  |
| P2.CX.1090 |  | ISU Transformer Testing (NETA) Field Test |  | 10d | 2023-07-24 | 2023-08-04 | P2.SK.1190, P1.CX.1090 |  |  |  |  | 55d | 0d |  | N | 32 | QA |  |
| P2.CX.1110 |  | Permission to Energize |  | 5d | 2023-09-14 | 2023-09-20 | PM1070 |  |  |  |  | 36d | 0d |  | N | 554 | QA |  |
| P2.CX.1120 |  | Utility In Service/ Energize / Limited Back-Feed Array |  | 5d | 2023-09-21 | 2023-09-27 | P2.CX.1110, SUB1320 |  |  |  |  | 36d | 0d |  | N | 551 | QA |  |
| P2.CX.1130 |  | Monitoring/SCADA Array Commissioning |  | 10d | 2023-10-02 | 2023-10-13 | P2.CX.1120 FS+2d |  |  |  |  | 37d | 0d |  | N | 557 | QA |  |
| P2.CX.1140 |  | Utility Testing |  | 5d | 2023-10-16 | 2023-10-20 | P2.CX.1080, P2.CX.1110, P2.CX.1120, P2.CX.1060, P2.CX.1060 FF, P2.CX.1130 |  |  |  |  | 37d | 0d |  | N | 558 | QA |  |
| P2.CX.1150 |  | Placed In Service Phase 2 | milestone | 0d | 2023-10-20 | 2023-10-20 | P2.CX.1140 FF |  |  |  |  | 37d | 0d |  | N | 56 | QA |  |
|  | WBS269 | **Phase 3** |  |  | 2023-01-09 | 2024-01-29 |  |  |  |  |  |  |  |  |  |  |  |  |
|  | WBS2 | **Phase 3 PV Civil** |  |  | 2023-01-09 | 2023-03-31 |  |  |  |  |  |  |  |  |  |  |  |  |
| P3.CIV.1010 |  | Clearing & Grubbing |  | 48d | 2023-01-09 A | 2023-03-03 A | A18690 FF, P2.CIV.1010 | 100% |  | 2022-12-21 | 2023-02-21 |  |  | Foggia_6x8 w/ Holidays | N | 562 | CONS - Civil |  |
| P3.CIV.1030 |  | SWPP - Site Stormwater - Install measures |  | 36d | 2023-01-12 A | 2023-03-17 A | A18690 FF, P3.CIV.1010 SS, P3.CIV.1010 FF | 100% |  | 2023-01-24 | 2023-03-07 |  |  | Foggia_6x8 w/ Holidays | N | 571 | CONS - Civil |  |
| P3.CIV.1050 |  | Road Install |  | 33.5d | 2023-01-12 A | 2023-02-17 A | A18690 FF, P2.CIV.1050 | 100% |  | 2022-12-22 | 2023-02-04 |  |  | Foggia_6x8 w/ Holidays | N | 572 | CONS - Civil |  |
| P3.CIV.1060 |  | Site Grade, Cut & Fill, Seed & Straw |  | 52.5d | 2023-01-17 A | 2023-03-31 A | A18690 FF, P3.CIV.1030 SS, P3.CIV.1030 FF+5d | 100% |  | 2023-01-17 | 2023-03-20 |  |  | Foggia_6x8 w/ Holidays | N | 561 | CONS - Civil | Level 1 |

| ID | WBS | Activity | Duration | Start | Finish | Predecessors | Complete | Planned start | Planned finish | Requested Expected Finish Approved | MSP Activity ID | Department |
| --- | --- | --- | --- | --- | --- | --- | --- | --- | --- | --- | --- | --- |
|  | WBS4 | **Phase 3 Mechanical** |  | 2023-03-13 | 2023-09-05 |  |  |  |  |  |  |  |
|  | WBS101 | **Pre-Drill** |  | 2023-03-13 | 2023-04-28 |  |  |  |  |  |  |  |
| P3.PD.1000 |  | Pre-Drill PB63 | 0.5d | 2023-03-13 A | 2023-03-13 A |  | 100% | 2023-03-07 | 2023-03-07 | N | 565 | CONS - PILES |
| P3.PD.1010 |  | Pre-Drill PB64 | 0.5d | 2023-03-13 A | 2023-03-13 A | P3.PD.1000 | 100% | 2023-03-07 | 2023-03-07 | N | 576 | CONS - PILES |
| P3.PD.1020 |  | Pre-Drill PB65 | 1d | 2023-03-14 A | 2023-03-14 A | P3.PD.1010 | 100% | 2023-03-20 | 2023-03-21 | N | 577 | CONS - PILES |
| P3.PD.1030 |  | Pre-Drill PB66 | 0.5d | 2023-03-15 A | 2023-03-15 A | P3.PD.1020 | 100% | 2023-03-21 | 2023-03-21 | N | 578 | CONS - PILES |
| P3.PD.1040 |  | Pre-Drill PB67 | 0.5d | 2023-03-15 A | 2023-03-15 A | P3.PD.1030 | 100% | 2023-03-22 | 2023-03-22 | N | 579 | CONS - PILES |
| P3.PD.1050 |  | Pre-Drill PB68 | 0.5d | 2023-03-16 A | 2023-03-16 A | P3.PD.1040 | 100% | 2023-03-22 | 2023-03-22 | N | 580 | CONS - PILES |
| P3.PD.1060 |  | Pre-Drill PB69 | 0.5d | 2023-03-16 A | 2023-03-17 A | P3.PD.1050 | 100% | 2023-03-23 | 2023-03-23 | N | 581 | CONS - PILES |
| P3.PD.1070 |  | Pre-Drill PB70 | 0.5d | 2023-03-20 A | 2023-03-20 A | P3.PD.1060 | 100% |  |  | N | 582 | CONS - PILES |
| P3.PD.1080 |  | Pre-Drill PB71 | 0.5d | 2023-03-20 A | 2023-03-20 A | P3.PD.1070 | 100% |  |  | N | 583 | CONS - PILES |
| P3.PD.1090 |  | Pre-Drill PB72 | 0.5d | 2023-03-21 A | 2023-03-21 A | P3.PD.1080 | 100% |  |  | N | 584 | CONS - PILES |
| P3.PD.1100 |  | Pre-Drill PB56 | 0.5d | 2023-03-21 A | 2023-03-21 A | P3.PD.1090 | 100% |  |  | N | 585 | CONS - PILES |
| P3.PD.1110 |  | Pre-Drill PB57 | 1d | 2023-03-22 A | 2023-03-22 A | P3.PD.1100 | 100% |  |  | N | 586 | CONS - PILES |
| P3.PD.1120 |  | Pre-Drill PB58 | 1d | 2023-03-23 A | 2023-03-23 A | P3.PD.1110 | 100% |  |  | N | 587 | CONS - PILES |
| P3.PD.1130 |  | Pre-Drill PB54 | 1d | 2023-03-24 A | 2023-03-24 A | P3.PD.1120 | 100% |  |  | N | 588 | CONS - PILES |
| P3.PD.1140 |  | Pre-Drill PB53 | 1d | 2023-03-27 A | 2023-03-27 A | P3.PD.1130 | 100% |  |  | N | 589 | CONS - PILES |
| P3.PD.1150 |  | Pre-Drill PB52 | 1d | 2023-03-28 A | 2023-03-28 A | P3.PD.1140 | 100% |  |  | N | 590 | CONS - PILES |
| P3.PD.1160 |  | Pre-Drill PB51 | 1d | 2023-03-29 A | 2023-03-29 A | P3.PD.1150 | 100% |  |  | N | 591 | CONS - PILES |
| P3.PD.1170 |  | Pre-Drill PB59 | 1d | 2023-03-30 A | 2023-04-10 A | P3.PD.1160 | 100% | 2023-03-30 | 2023-03-30 | N | 592 | CONS - PILES |
| P3.PD.1180 |  | Pre-Drill PB60 | 1d | 2023-03-31 A | 2023-04-26 A | P3.PD.1170 SS | 100% | 2023-03-31 | 2023-03-31 | N | 593 | CONS - PILES |
| P3.PD.1190 |  | Pre-Drill PB61 | 0.5d | 2023-04-03 A | 2023-04-27 A | P3.PD.1180 SS+1d | 100% | 2023-04-03 | 2023-04-03 | N | 594 |  |
| P3.PD.1200 |  | Pre-Drill PB62 | 0.5d | 2023-04-03 A | 2023-04-12 A | P3.PD.1190 SS | 100% | 2023-04-03 | 2023-04-03 | N | 595 | CONS - PILES |
| P3.PD.1210 |  | Pre-Drill PB55 | 1d | 2023-04-04 A | 2023-04-28 A | P3.PD.1200 SS | 100% | 2023-04-04 | 2023-04-04 | N | 596 | CONS - PILES |
| P3.PD.1220 |  | Pre-Drill PB50 | 1d | 2023-04-11 A | 2023-04-12 A | P3.PD.1210 SS | 100% | 2023-04-11 | 2023-04-11 | N | 597 | CONS - PILES |
| P3.PD.1230 |  | Pre-Drill PB49 | 1d | 2023-04-12 A | 2023-04-13 A | P3.PD.1220 | 100% | 2023-04-12 | 2023-04-12 | N | 598 | CONS - PILES |
| P3.PD.1240 |  | Pre-Drill PB48 | 1d | 2023-04-13 A | 2023-04-14 A | P3.PD.1230 | 100% | 2023-04-13 | 2023-04-13 | N | 599 | CONS - PILES |
| P3.PD.1250 |  | Pre-Drill PB47 | 1d | 2023-04-14 A | 2023-04-18 A | P3.PD.1240 | 100% | 2023-04-14 | 2023-04-14 | N | 600 | CONS - PILES |
| P3.PD.1260 |  | Pre-Drill PB46 | 1d | 2023-04-17 A | 2023-04-19 A | P3.PD.1250 | 100% | 2023-04-17 | 2023-04-17 | N | 601 |  |

| ID | WBS | Activity | Duration | Start | Finish | Predecessors | Complete | Planned start | Planned finish | Requested Expected Finish Approved | MSP Activity ID | Department |
| --- | --- | --- | --- | --- | --- | --- | --- | --- | --- | --- | --- | --- |
|  | WBS10 | **Racking Foundation** |  | 2023-04-19 | 2023-06-06 |  |  |  |  |  |  |  |
|  | 1 | **Racking Foundation Install** |  | 2023-04-19 | 2023-05-19 |  |  |  |  |  |  |  |
| P3.RF.1200 |  | Piles PB62 | 2d | 2023-04-19 A | 2023-04-27 A | P3.PD.1200 SS+2d | 100% | 2023-04-24 | 2023-04-25 | N | 623 | CONS - PILES |
| P3.RF.1190 |  | Piles PB61 | 2d | 2023-04-20 A | 2023-04-28 A | P3.PD.1190 SS+2d, P3.RF.1200 SS+1d | 100% | 2023-04-25 | 2023-04-26 | N | 622 |  |
| P3.RF.1180 |  | Piles PB60 | 3d | 2023-04-24 A | 2023-04-26 A | P3.PD.1180 FF | 100% |  |  | N | 621 | CONS - PILES |
| P3.RF.1000 |  | Piles PB63 | 2d | 2023-04-25 A | 2023-04-26 A | PRO.1640 SS+8d, P3.PD.1000, P3.CIV.1050, P3.CIV.1060 | 100% |  |  | N | 603 | CONS - PILES |
| P3.RF.1010 |  | Piles PB64 | 2d | 2023-04-26 A | 2023-04-27 A | P3.PD.1010 | 100% |  |  | N | 604 | CONS - PILES |
| P3.RF.1020 |  | Piles PB65 | 2d | 2023-04-27 A | 2023-04-28 A | P3.PD.1020 | 100% |  |  | N | 605 | CONS - PILES |
| P3.RF.1030 |  | Piles PB66 | 2d | 2023-04-28 A | 2023-05-01 A | P3.PD.1030 | 100% |  |  | N | 606 | CONS - PILES |
| P3.RF.1130 |  | Piles PB54 | 2d | 2023-04-28 A | 2023-05-01 A | P3.PD.1130 | 100% | 2023-05-10 | 2023-05-11 | N | 616 | CONS - PILES |
| P3.RF.1040 |  | Piles PB67 | 2d | 2023-05-01 A | 2023-05-02 A | P3.PD.1040 | 100% |  |  | N | 607 | CONS - PILES |
| P3.RF.1140 |  | Piles PB53 | 2d | 2023-05-01 A | 2023-05-02 A | P3.PD.1140 | 100% | 2023-05-11 | 2023-05-12 | N | 617 | CONS - PILES |
| P3.RF.1150 |  | Piles PB52 | 2d | 2023-05-01 A | 2023-05-04 A | P3.PD.1150 | 100% | 2023-05-11 | 2023-05-12 | N | 618 | CONS - PILES |
| P3.RF.1160 |  | Piles PB51 | 2d | 2023-05-01 A | 2023-05-03 A | P3.PD.1160 | 100% | 2023-05-12 | 2023-05-15 | N | 619 | CONS - PILES |
| P3.RF.1050 |  | Piles PB68 | 2d | 2023-05-02 A | 2023-05-03 A | P3.PD.1050 | 100% |  |  | N | 608 | CONS - PILES |
| P3.RF.1210 |  | Piles PB55 | 2d | 2023-05-02 A | 2023-05-05 A | P3.PD.1210 | 100% | 2023-05-16 | 2023-05-17 | N | 624 | CONS - PILES |
| P3.RF.1060 |  | Piles PB69 | 2d | 2023-05-03 A | 2023-05-04 A | P3.PD.1060 | 100% |  |  | N | 609 | CONS - PILES |
| P3.RF.1070 |  | Piles PB70 | 2d | 2023-05-04 A | 2023-05-05 A | P3.PD.1070 | 100% |  |  | N | 610 | CONS - PILES |
| P3.RF.1080 |  | Piles PB71 | 2d | 2023-05-05 A | 2023-05-08 A | P3.PD.1080 | 100% |  |  | N | 611 | CONS - PILES |
| P3.RF.1090 |  | Piles PB72 | 2d | 2023-05-08 A | 2023-05-11 A | P3.PD.1090 | 100% | 2023-05-08 | 2023-05-09 | N | 612 | CONS - PILES |
| P3.RF.1220 |  | Piles PB50 | 2d | 2023-05-08 A | 2023-05-09 A | P3.PD.1220 | 100% | 2023-05-16 | 2023-05-17 | N | 625 | CONS - PILES |
| P3.RF.1170 |  | Piles PB59 | 2d | 2023-05-10 A | 2023-05-12 A | P3.PD.1170 | 100% | 2023-05-12 | 2023-05-15 | N | 620 | CONS - PILES |
| P3.RF.1100 |  | Piles PB56 | 2d | 2023-05-15 A | 2023-05-16 A | P3.PD.1100 | 100% |  |  | N | 613 | CONS - PILES |
| P3.RF.1110 |  | Piles PB57 | 2d | 2023-05-16 A | 2023-05-17 A | P3.PD.1110, P3.RF.1100 SS+1d | 100% |  |  | N | 614 | CONS - PILES |
| P3.RF.1120 |  | Piles PB58 | 2d | 2023-05-17 A | 2023-05-18 A | P3.PD.1120, P3.RF.1110 SS+1d | 100% |  |  | N | 615 | CONS - PILES |
| P3.RF.1230 |  | Piles PB49 | 2d | 2023-05-18 A | 2023-05-19 A | P3.PD.1230, P3.RF.1120 SS+1d | 100% |  |  | N | 626 | CONS - PILES |
| P3.RF.1240 |  | Piles PB48 | 2d | 2023-05-18 A | 2023-05-19 A | P3.RF.1230 SS, P3.PD.1240 | 100% |  |  | N | 627 | CONS - PILES |
| P3.RF.1250 |  | Piles PB47 | 2d | 2023-05-19 A | 2023-05-19 A | P3.RF.1240 SS+1d, P3.PD.1250 | 100% | 2023-05-19 | 2023-05-22 | N | 628 | CONS - PILES |
| P3.RF.1260 |  | Piles PB46 | 2d | 2023-05-19 A | 2023-05-19 A | P3.RF.1250 SS, P3.PD.1260 | 100% | 2023-05-19 | 2023-05-22 | N | 629 |  |

| ID | WBS | Activity | Duration | Start | Finish | Predecessors | Complete | Planned start | Planned finish | Requested Expected Finish Approved | MSP Activity ID | Department |
| --- | --- | --- | --- | --- | --- | --- | --- | --- | --- | --- | --- | --- |
|  | 2 | **Racking Foundation QC** |  | 2023-05-01 | 2023-06-06 |  |  |  |  |  |  |  |
| A18880 |  | Phase 3 Pile QC | 25d | 2023-05-01 A | 2023-06-06 A | A18860, P3.RF.1260 FF+5d, P3.RF.1000 SS+4d | 100% |  |  |  |  |  |
|  | WBS20 | **Racking** |  | 2023-05-15 | 2023-07-12 |  |  |  |  |  |  |  |
|  | 1 | **Racking Install** |  | 2023-05-15 | 2023-06-30 |  |  |  |  |  |  |  |
| P3.RA.1000 |  | Racking PB63 | 2d | 2023-05-15 A | 2023-05-23 A | P3.RF.1000 FS+10d, PRO.1670 SS+50d, A18880 SS+5d | 100% | 2023-05-22 | 2023-05-24 | N | 631 | CONS - RACK |
| P3.RA.1010 |  | Racking PB64 | 2d | 2023-05-18 A | 2023-05-30 A | P3.RA.1000 SS, P3.RF.1010 | 100% | 2023-05-24 | 2023-05-30 | N | 632 | CONS - RACK |
| P3.RA.1020 |  | Racking PB65 | 2d | 2023-05-19 A | 2023-05-30 A | P3.RA.1010 SS+1d, P3.RF.1020 | 100% | 2023-05-25 | 2023-05-31 | N | 633 | CONS - RACK |
| P3.RA.1030 |  | Racking PB66 | 2d | 2023-05-25 A | 2023-06-02 A | P3.RA.1020 SS, P3.RF.1030 | 100% | 2023-05-23 | 2023-05-25 | N | 634 | CONS - RACK |
| P3.RA.1040 |  | Racking PB67 | 2d | 2023-05-26 A | 2023-06-02 A | P3.RF.1040, P3.RA.1030 SS | 100% | 2023-05-23 | 2023-05-25 | N | 635 | CONS - RACK |
| P3.RA.1050 |  | Racking PB68 | 2d | 2023-05-30 A | 2023-06-05 A | P3.RA.1040 SS, P3.RF.1050 | 100% | 2023-05-30 | 2023-05-31 | N | 636 | CONS - RACK |
| P3.RA.1060 |  | Racking PB69 | 2d | 2023-05-30 A | 2023-06-09 A | P3.RA.1050 SS, P3.RF.1060 | 100% | 2023-05-30 | 2023-05-31 | N | 637 | CONS - RACK |
| P3.RA.1070 |  | Racking PB70 | 2d | 2023-06-01 A | 2023-06-09 A | P3.RA.1060 SS+1d, P3.RF.1070 | 100% | 2023-06-01 | 2023-06-02 | N | 638 | CONS - RACK |
| P3.RA.1080 |  | Racking PB71 | 2d | 2023-06-02 A | 2023-06-12 A | P3.RF.1080, P3.RA.1070 SS | 100% | 2023-06-02 | 2023-06-05 | N | 639 | CONS - RACK |
| P3.RA.1090 |  | Racking PB72 | 2d | 2023-06-03 A | 2023-06-13 A | P3.RF.1090, P3.RA.1080 SS+1d | 100% | 2023-06-05 | 2023-06-06 | N | 640 | CONS - RACK |
| P3.RA.1200 |  | Racking PB62 | 2d | 2023-06-05 A | 2023-06-13 A | P3.RF.1200, P3.RA.1090 SS | 100% | 2023-06-05 | 2023-06-06 | N | 651 | CONS - RACK |
| P3.RA.1190 |  | Racking PB61 | 2d | 2023-06-06 A | 2023-06-14 A | P3.RF.1190, P3.RA.1200 SS | 100% | 2023-06-06 | 2023-06-07 | N | 650 |  |
| P3.RA.1170 |  | Racking PB59 | 2d | 2023-06-07 A | 2023-06-15 A | P3.RF.1170 | 100% | 2023-06-07 | 2023-06-08 | N | 648 | CONS - RACK |
| P3.RA.1180 |  | Racking PB60 | 2d | 2023-06-07 A | 2023-06-15 A | P3.RF.1180, P3.RA.1170 SS | 100% | 2023-06-07 | 2023-06-08 | N | 649 | CONS - RACK |
| P3.RA.1210 |  | Racking PB55 | 2d | 2023-06-08 A | 2023-06-20 A | P3.RF.1210 | 100% | 2023-06-08 | 2023-06-09 | N | 652 | CONS - RACK |
| P3.RA.1130 |  | Racking PB54 | 7d | 2023-06-12 A | 2023-06-16 A | P3.RF.1130 | 100% | 2023-06-12 | 2023-06-22 | N | 644 | CONS - RACK |
| P3.RA.1140 |  | Racking PB53 | 6d | 2023-06-13 A | 2023-06-19 A | P3.RF.1140, P3.RA.1130 SS+1d | 100% | 2023-06-13 | 2023-06-22 | N | 645 | CONS - RACK |
| P3.RA.1120 |  | Racking PB58 | 6d | 2023-06-14 A | 2023-06-30 A | P3.RF.1120 | 100% | 2023-06-14 | 2023-06-23 | N | 643 | CONS - RACK |
| P3.RA.1150 |  | Racking PB52 | 6d | 2023-06-14 A | 2023-06-19 A | P3.RF.1150, P3.RA.1140 SS+1d | 100% | 2023-06-14 | 2023-06-23 | N | 646 | CONS - RACK |
| P3.RA.1160 |  | Racking PB51 | 6d | 2023-06-15 A | 2023-06-19 A | P3.RA.1150 SS+1d, P3.RF.1160 | 100% | 2023-06-15 | 2023-06-26 | N | 647 | CONS - RACK |
| P3.RA.1220 |  | Racking PB50 | 6d | 2023-06-15 A | 2023-06-19 A | P3.RF.1220, P3.RA.1120 SS+1d | 100% | 2023-06-15 | 2023-06-26 | N | 653 | CONS - RACK |
| P3.RA.1230 |  | Racking PB49 | 6d | 2023-06-16 A | 2023-06-20 A | P3.RA.1220 SS+1d, P3.RF.1230 | 100% | 2023-06-20 | 2023-06-27 | N | 654 | CONS - RACK |
| P3.RA.1240 |  | Racking PB48 | 6d | 2023-06-19 A | 2023-06-26 A | P3.RA.1230 SS+1d, P3.RF.1240 | 100% | 2023-06-21 | 2023-06-28 | N | 655 | CONS - RACK |
| P3.RA.1250 |  | Racking PB47 | 6d | 2023-06-20 A | 2023-06-26 A | P3.RA.1240 SS+1d, P3.RF.1250 | 100% | 2023-06-22 | 2023-06-29 | N | 656 | CONS - RACK |
| P3.RA.1260 |  | Racking PB46 | 6d | 2023-06-21 A | 2023-06-26 A | P3.RA.1250 SS+1d, P3.RF.1260, A18880 FF | 100% | 2023-06-23 | 2023-06-30 | N | 657 |  |
| P3.RA.1100 |  | Racking PB56 | 6d | 2023-06-22 A | 2023-06-30 A | P3.RF.1100, P3.RA.1260 SS+1d | 100% | 2023-06-12 | 2023-06-21 | N | 641 | CONS - RACK |
| P3.RA.1110 |  | Racking PB57 | 6d | 2023-06-23 A | 2023-06-27 A | P3.RF.1110, P3.RA.1100 SS+1d | 100% | 2023-06-23 | 2023-06-30 | N | 642 | CONS - RACK |

| ID | WBS | Activity | Duration | Start | Finish | Predecessors | Complete | Remaining | Planned start | Planned finish | Total float | Free float | Constraint | Expected finish | Requested Expected Finish Approved | MSP Activity ID | Department |
| --- | --- | --- | --- | --- | --- | --- | --- | --- | --- | --- | --- | --- | --- | --- | --- | --- | --- |
|  | 2 | **Racking QC** |  | 2023-06-05 | 2023-07-12 |  |  |  |  |  |  |  |  |  |  |  |  |
| A18900 |  | Phase 3 Racking QC | 19d | 2023-06-05 A | 2023-07-12 | A18870 FF, P3.RA.1100 FF+5d, P3.RA.1120 FF+5d, P3.RA.1000 SS+5d | 84% | 3d | 2023-06-12 | 2023-07-12 | 15d | 0d |  | 2023-07-12 |  |  |  |
|  | WBS30 | **Module Install** |  | 2023-07-10 | 2023-09-05 |  |  |  |  |  |  |  |  |  |  |  |  |
|  | API | **API** |  | 2023-07-10 | 2023-09-05 |  |  |  |  |  |  |  |  |  |  |  |  |
| P3.MO.1000 |  | Mods PB63 | 4d | 2023-07-10 | 2023-07-13 | PRO.1100 SS+45d, P3.RA.1000, A18900 SS+5d |  |  |  |  | 15d | 0d | start on or after 2023-07-10 |  | N | 659 | CONS - MODS |
| P3.MO.1010 |  | Mods PB64 | 4d | 2023-07-14 | 2023-07-19 | P3.MO.1000, P3.RA.1010 |  |  |  |  | 18d | 0d |  |  | N | 660 | CONS - MODS |
| P3.MO.1020 |  | Mods PB65 | 4d | 2023-07-20 | 2023-07-25 | P3.RA.1020, P3.MO.1010 |  |  |  |  | 18d | 0d |  |  | N | 661 | CONS - MODS |
| P3.MO.1030 |  | Mods PB66 | 4d | 2023-07-26 | 2023-07-31 | P3.MO.1020, P3.RA.1030 |  |  |  |  | 18d | 0d |  |  | N | 662 | CONS - MODS |
| P3.MO.1040 |  | Mods PB67 | 4d | 2023-08-01 | 2023-08-04 | P3.MO.1030, P3.RA.1040 |  |  |  |  | 18d | 0d |  |  | N | 663 | CONS - MODS |
| P3.MO.1050 |  | Mods PB68 | 4d | 2023-08-07 | 2023-08-10 | P3.MO.1040, P3.RA.1050 |  |  |  |  | 18d | 0d |  |  | N | 664 | CONS - MODS |
| P3.MO.1060 |  | Mods PB69 | 4d | 2023-08-14 | 2023-08-17 | P3.RA.1060, P3.MO.1050 |  |  |  |  | 18d | 0d |  |  | N | 665 | CONS - MODS |
| P3.MO.1070 |  | Mods PB70 | 4d | 2023-08-18 | 2023-08-23 | P3.MO.1060, P3.RA.1070 |  |  |  |  | 18d | 0d |  |  | N | 666 | CONS - MODS |
| P3.MO.1080 |  | Mods PB71 | 4d | 2023-08-24 | 2023-08-29 | P3.RA.1080, P3.MO.1070 |  |  |  |  | 18d | 0d |  |  | N | 667 | CONS - MODS |
| P3.MO.1090 |  | Mods PB72 | 4d | 2023-08-30 | 2023-09-05 | P3.MO.1080, P3.RA.1090 |  |  |  |  | 18d |  |  |  | N | 668 | CONS - MODS |
|  | BRP | **BRP** |  | 2023-07-28 | 2023-09-05 |  |  |  |  |  |  |  |  |  |  |  |  |
| P3.MO.1100 |  | Mods PB56 | 2d | 2023-07-28 | 2023-07-31 | P3.RA.1100, P2.MO.1140 |  |  |  |  | 20.5d | 0d |  |  | N | 669 | CONS - MODS |
| P3.MO.1110 |  | Mods PB57 | 2d | 2023-08-01 | 2023-08-02 | P3.MO.1100, P3.RA.1110 |  |  |  |  | 20.5d | 0d |  |  | N | 670 | CONS - MODS |
| P3.MO.1120 |  | Mods PB58 | 2d | 2023-08-03 | 2023-08-04 | P3.MO.1110, P3.RA.1120 |  |  |  |  | 20.5d | 0d |  |  | N | 671 | CONS - MODS |
| P3.MO.1130 |  | Mods PB54 | 2d | 2023-08-07 | 2023-08-08 | P3.RA.1130, P3.MO.1120 |  |  |  |  | 20.5d | 0d |  |  | N | 672 | CONS - MODS |
| P3.MO.1140 |  | Mods PB53 | 2d | 2023-08-09 | 2023-08-10 | P3.MO.1130, P3.RA.1140 |  |  |  |  | 20.5d | 0d |  |  | N | 673 | CONS - MODS |
| P3.MO.1150 |  | Mods PB52 | 2d | 2023-08-14 | 2023-08-15 | P3.RA.1150, P3.MO.1140 |  |  |  |  | 20.5d | 0d |  |  | N | 674 | CONS - MODS |
| P3.MO.1160 |  | Mods PB51 | 2d | 2023-08-16 | 2023-08-17 | P3.MO.1150, P3.RA.1160 |  |  |  |  | 20.5d | 0d |  |  | N | 675 | CONS - MODS |
| P3.MO.1170 |  | Mods PB59 | 2d | 2023-08-18 | 2023-08-21 | P3.MO.1160, P3.RA.1170 |  |  |  |  | 20.5d | 0d |  |  | N | 676 | CONS - MODS |
| P3.MO.1180 |  | Mods PB60 | 1.5d | 2023-08-22 | 2023-08-23 | P3.MO.1170, P3.RA.1180 |  |  |  |  | 20.5d | 0d |  |  | N | 677 | CONS - MODS |
| P3.MO.1190 |  | Mods PB61 | 1.5d | 2023-08-23 | 2023-08-24 | P3.MO.1180, P3.RA.1190 |  |  |  |  | 20.5d | 0d |  |  | N | 678 |  |
| P3.MO.1200 |  | Mods PB62 | 1d | 2023-08-25 | 2023-08-25 | P3.MO.1190, P3.RA.1200 |  |  |  |  | 20.5d | 0d |  |  | N | 679 | CONS - MODS |
| P3.MO.1210 |  | Mods PB55 | 1d | 2023-08-28 | 2023-08-28 | P3.MO.1200, P3.RA.1210 |  |  |  |  | 20.5d | 0d |  |  | N | 680 | CONS - MODS |
| P3.MO.1220 |  | Mods PB50 | 1d | 2023-08-29 | 2023-08-29 | P3.MO.1210, P3.RA.1220 |  |  |  |  | 20.5d | 0d |  |  | N | 681 | CONS - MODS |
| P3.MO.1230 |  | Mods PB49 | 1d | 2023-08-30 | 2023-08-30 | P3.MO.1220, P3.RA.1230 |  |  |  |  | 20.5d | 0d |  |  | N | 682 | CONS - MODS |
| P3.MO.1240 |  | Mods PB48 | 1d | 2023-08-31 | 2023-08-31 | P3.MO.1230, P3.RA.1240 |  |  |  |  | 20.5d | 0d |  |  | N | 683 | CONS - MODS |
| P3.MO.1250 |  | Mods PB47 | 1d | 2023-09-01 | 2023-09-01 | P3.MO.1240, P3.RA.1250 |  |  |  |  | 22d | 0d |  |  | N | 684 | CONS - MODS |
| P3.MO.1260 |  | Mods PB46 | 1d | 2023-09-05 | 2023-09-05 | P3.MO.1250, P3.RA.1260, A18900 FF |  |  |  |  | 22d | 0d |  |  | N | 566 |  |

| ID | WBS | Activity | Duration | Start | Finish | Predecessors | Complete | Planned start | Planned finish | Total float | Free float | Constraint | Requested Expected Finish Approved | MSP Activity ID | Department |
| --- | --- | --- | --- | --- | --- | --- | --- | --- | --- | --- | --- | --- | --- | --- | --- |
|  | WBS5 | **Phase 3 Electrical** |  | 2023-03-16 | 2023-10-25 |  |  |  |  |  |  |  |  |  |  |
|  | WBS1 | **Equipment Pad** |  | 2023-03-16 | 2023-10-20 |  |  |  |  |  |  |  |  |  |  |
| P3.SP.1000 |  | Skid Pile Install Phase 3 | 12d | 2023-03-16 A | 2023-04-03 A | P4.SP.1000 SS+10d | 100% | 2023-03-24 | 2023-04-10 |  |  |  | N | 564 | CONS - PV_ELEC |
| P3.SF.1000 |  | Skid Foundations Phase 3 | 20d | 2023-03-24 A | 2023-05-22 A | P3.SP.1000 FF+7d, P3.SP.1000 SS+1d | 100% | 2023-03-24 | 2023-04-20 |  |  |  | N | 691 | CONS - PV_ELEC |
| P3.IT.1000 |  | Inverters Term Phase 3 | 32d | 2023-09-07 | 2023-10-20 | P3.FP.1000 FF+2d, P3.FP.1000 SS+3d, P3.SK.1000, P3.SK.1260 FF+1d, P2.IT.1000, P3.SK.1110 FF, P3.SK.1100 FF |  |  |  | 11d | 0d |  | N | 687 | CONS - PV_ELEC |
|  | WBS1177 | **Skid Pile Install** |  |  |  |  |  |  |  |  |  |  |  |  |  |
|  | WBS10 | **Skid Foundations Roughed In** |  |  |  |  |  |  |  |  |  |  |  |  |  |
|  | WBS20 | **Skid Set (INV/XFMR/SCADA)** |  | 2023-04-03 | 2023-07-17 |  |  |  |  |  |  |  |  |  |  |
| P3.SK.1000 |  | Skid Install PB63 | 0.2d | 2023-04-03 A | 2023-04-03 A | P3.SF.1000 SS+5d, P2.SK.1190 | 100% |  |  |  |  |  | N | 689 | CONS - PV_ELEC |
| P3.SK.1010 |  | Skid Install PB64 | 0.2d | 2023-04-03 A | 2023-04-03 A | P3.SK.1000 | 100% |  |  |  |  |  | N | 695 | CONS - PV_ELEC |
| P3.SK.1020 |  | Skid Install PB65 | 0.2d | 2023-04-03 A | 2023-04-03 A | P3.SK.1010 | 100% |  |  |  |  |  | N | 696 | CONS - PV_ELEC |
| P3.SK.1030 |  | Skid Install PB66 | 0.2d | 2023-04-03 A | 2023-04-03 A | P3.SK.1020 | 100% |  |  |  |  |  | N | 697 | CONS - PV_ELEC |
| P3.SK.1040 |  | Skid Install PB67 | 0.2d | 2023-04-04 A | 2023-04-04 A | P3.SK.1030 | 100% |  |  |  |  |  | N | 698 | CONS - PV_ELEC |
| P3.SK.1050 |  | Skid Install PB68 | 0.2d | 2023-04-04 A | 2023-04-04 A | P3.SK.1040 | 100% |  |  |  |  |  | N | 699 | CONS - PV_ELEC |
| P3.SK.1060 |  | Skid Install PB69 | 0.2d | 2023-04-04 A | 2023-04-04 A | P3.SK.1050 | 100% |  |  |  |  |  | N | 700 | CONS - PV_ELEC |
| P3.SK.1070 |  | Skid Install PB70 | 0.2d | 2023-04-04 A | 2023-04-04 A | P3.SK.1060 | 100% |  |  |  |  |  | N | 701 | CONS - PV_ELEC |
| P3.SK.1080 |  | Skid Install PB71 | 0.2d | 2023-04-04 A | 2023-04-04 A | P3.SK.1070 | 100% |  |  |  |  |  | N | 702 | CONS - PV_ELEC |
| P3.SK.1090 |  | Skid Install PB72 | 0.2d | 2023-04-05 A | 2023-04-05 A | P3.SK.1080 | 100% |  |  |  |  |  | N | 703 | CONS - PV_ELEC |
| P3.SK.1210 |  | Skid Install PB55 | 0.2d | 2023-04-05 A | 2023-04-05 A | P3.SK.1090 | 100% | 2023-04-24 | 2023-04-24 |  |  |  | N | 715 | CONS - PV_ELEC |
| P3.SK.1170 |  | Skid Install PB59 | 0.2d | 2023-04-06 A | 2023-04-06 A |  | 100% |  |  |  |  |  | N | 711 | CONS - PV_ELEC |
| P3.SK.1180 |  | Skid Install PB60 | 0.2d | 2023-04-06 A | 2023-04-06 A | P3.SK.1170, P3.SK.1210 | 100% |  |  |  |  |  | N | 712 | CONS - PV_ELEC |
| P3.SK.1190 |  | Skid Install PB61 | 0.2d | 2023-04-07 A | 2023-04-07 A | P3.SK.1180 | 100% |  |  |  |  |  | N | 713 |  |
| P3.SK.1200 |  | Skid Install PB62 | 0.2d | 2023-04-07 A | 2023-04-07 A | P3.SK.1190 | 100% |  |  |  |  |  | N | 714 | CONS - PV_ELEC |
| P3.SK.1120 |  | Skid Install PB58 | 0d | 2023-04-19 A | 2023-04-19 A | P3.SK.1200 | 100% | 2023-06-26 | 2023-06-26 |  |  |  | N | 706 | CONS - PV_ELEC |
| P3.SK.1130 |  | Skid Install PB54 | 0d | 2023-04-19 A | 2023-04-19 A | P3.SK.1120 | 100% | 2023-06-26 | 2023-06-26 |  |  |  | N | 707 | CONS - PV_ELEC |
| P3.SK.1140 |  | Skid Install PB53 | 0d | 2023-04-19 A | 2023-04-19 A | P3.SK.1130 | 100% | 2023-06-26 | 2023-06-26 |  |  |  | N | 708 | CONS - PV_ELEC |
| P3.SK.1150 |  | Skid Install PB52 | 0d | 2023-04-19 A | 2023-04-19 A | P3.SK.1140 | 100% | 2023-06-26 | 2023-06-26 |  |  |  | N | 709 | CONS - PV_ELEC |
| P3.SK.1160 |  | Skid Install PB51 | 0d | 2023-04-19 A | 2023-04-19 A | P3.SK.1150 | 100% | 2023-06-26 | 2023-06-26 |  |  |  | N | 710 | CONS - PV_ELEC |
| P3.SK.1220 |  | Skid Install PB50 | 0.2d | 2023-05-12 A | 2023-05-12 A | P3.SK.1160 | 100% | 2023-06-26 | 2023-06-26 |  |  |  | N | 716 | CONS - PV_ELEC |
| P3.SK.1230 |  | Skid Install PB49 | 0.2d | 2023-05-12 A | 2023-05-12 A | P3.SK.1220 | 100% | 2023-06-26 | 2023-06-26 |  |  |  | N | 717 | CONS - PV_ELEC |
| P3.SK.1240 |  | Skid Install PB48 | 0.2d | 2023-05-12 A | 2023-05-12 A | P3.SK.1230 | 100% | 2023-06-26 | 2023-06-26 |  |  |  | N | 718 | CONS - PV_ELEC |
| P3.SK.1250 |  | Skid Install PB47 | 0.2d | 2023-05-12 A | 2023-05-12 A | P3.SK.1240 | 100% | 2023-06-26 | 2023-06-26 |  |  |  | N | 719 | CONS - PV_ELEC |
| P3.SK.1260 |  | Skid Install PB46 | 0.2d | 2023-05-12 A | 2023-05-12 A | P3.SK.1250 | 100% | 2023-06-26 | 2023-06-26 |  |  |  | N | 690 |  |
| P3.SK.1110 |  | Skid Install PB57 | 0d | 2023-07-10 | 2023-07-10 |  |  |  |  | 84d | 73d |  | N | 705 | CONS - PV_ELEC |
| P3.SK.1100 |  | Skid Install PB56 | 0d | 2023-07-17 | 2023-07-17 |  |  |  |  | 79d | 68d | start on or after 2023-07-17 | N | 704 | CONS - PV_ELEC |

| ID | WBS | Activity | Duration | Start | Finish | Predecessors | Complete | Total float | Free float | Requested Expected Finish Approved | MSP Activity ID | Department |
| --- | --- | --- | --- | --- | --- | --- | --- | --- | --- | --- | --- | --- |
|  | WBS30 | **Set Central Inverters** |  |  |  |  |  |  |  |  |  |  |
|  | WBS40 | **Set MV Transformers** |  |  |  |  |  |  |  |  |  |  |
|  | WBS50 | **Inverter's DC Terminated** |  |  |  |  |  |  |  |  |  |  |
|  | WBS60 | **Transformer's DC Terminated** |  |  |  |  |  |  |  |  |  |  |
|  | WBS2 | **DC Wiring** |  | 2023-08-14 | 2023-10-25 |  |  |  |  |  |  |  |
| P3.CAB.1000 |  | CAB Installation Phase 3 | 36d | 2023-08-14 | 2023-10-03 | PRO.1760 FF+5d, P2.CAB.1000, P3.MO.1000 FS+5d, P3.MO.1090 FF+2d |  | 0d |  | N | 726 | CONS - PV_ELEC |
| P3.DM.1000 |  | DC Disco Mount Phase 3 | 35d | 2023-08-18 | 2023-10-06 | PRO.1250 SS+5d, P3.RF.1000, P3.RF.1260 FF+5d, P2.DM.1000 |  | 22d | 0d | N | 728 | CONS - PV_ELEC |
| P3.CO.1000 |  | DC Feeder UG Phase 3 | 35d | 2023-08-22 | 2023-10-10 | PRO.1730 SS+4d, P2.CO.1000 |  | 11d | 0d | N | 727 | CONS - PV_ELEC |
| P3.FP.1000 |  | Feeders Pull Phase 3 | 32d | 2023-09-01 | 2023-10-17 | PRO.1730 SS+4d, P3.CO.1000 SS+5d, P3.CO.1000 FF+5d, P2.FP.1000 |  | 11d | 0d | N | 688 | CONS - PV_ELEC |
| P3.FT.1000 |  | Feeders Term Phase 3 | 32d | 2023-09-06 | 2023-10-19 | P2.FT.1000, P3.FP.1000 SS+2d, P3.FP.1000 FF+2d |  | 17d | 0d | N | 39 | CONS - PV_ELEC |
| P3.BLA.1000 |  | BLA Phase 3 | 20d | 2023-09-08 | 2023-10-05 | P3.CAB.1000 FF+2d, PRO.1190 SS+10d, P3.CAB.1000 SS+2d, P2.BLA.1000 |  | 6d | 0d | N | 725 | CONS - PV_ELEC |
| P3.DT.1000 |  | DC Disco Term Phase 3 | 32d | 2023-09-11 | 2023-10-24 | P3.FP.1000 FF+2d, P3.DM.1000 FF+3d, P3.FP.1000 SS+2d, P3.DM.1000 SS+3d, P3.CX.1010 FF, P3.CX.1010 SS, P2.DT.1000 |  | 13d | 0d | N | 729 | CONS - PV_ELEC |
| P3.SW.1000 |  | String Wire Phase 3 | 27d | 2023-09-11 | 2023-10-17 | PRO.1730 SS+4d, P3.MO.1000, P3.MO.1250 FF+3d, P2.SW.1000, P3.FP.1000 SS+5d |  | 12d | 0d | N | 731 | CONS - PV_ELEC |
| P3.MT.1000 |  | Mod Term Phase 3 | 31d | 2023-09-12 | 2023-10-24 | P3.MO.1000, P3.MO.1250 FF+2d, P2.MT.1000, P3.SW.1000 SS |  | 13d | 0d | N | 43 | CONS - PV_ELEC |
| P3.WM.1000 |  | Wire Management Phase 3 | 27d | 2023-09-19 | 2023-10-25 | P3.MT.1000 FF+1d, P2.WM.1000, P3.DT.1000 FF+1d, P3.IT.1000 FF+1d |  | 13d | 0d | N | 42 | CONS - PV_ELEC |
|  | WBS10 | **UG Conduit** |  |  |  |  |  |  |  |  |  |  |
|  | WBS20 | **DC Feeders Pulled** |  |  |  |  |  |  |  |  |  |  |
|  | WBS30 | **DC Feeders Terminated** |  |  |  |  |  |  |  |  |  |  |
|  | WBS40 | **String Wire Installed** |  |  |  |  |  |  |  |  |  |  |
|  | WBS50 | **DC Disconnect Boxes Mounted** |  |  |  |  |  |  |  |  |  |  |
|  | WBS80 | **SCADA/Monitoring Terminated** |  |  |  |  |  |  |  |  |  |  |
|  | WBS55 | **CAB Hangers Installed** |  |  |  |  |  |  |  |  |  |  |
|  | WBS60 | **DC BLA Installed** |  |  |  |  |  |  |  |  |  |  |
|  | WBS70 | **DC Disconnect Boxes Terminated** |  |  |  |  |  |  |  |  |  |  |
|  | WBS92 | **Module Terminations** |  |  |  |  |  |  |  |  |  |  |
|  | WBS93 | **Wire Management** |  |  |  |  |  |  |  |  |  |  |
|  | WBS6 | **MV/ISP to Power Blocks** |  | 2023-04-24 | 2023-10-23 |  |  |  |  |  |  |  |
| P3.MV.1000 |  | MV/ISP to PB Phase 3 | 22d | 2023-04-24 A | 2023-05-23 A | PRO.1700 FF+5d, P2.MV.1000, P4.MV.1000 | 100% |  |  | N | 569 | CONS - PV_ELEC |
| P3.MV.1010 |  | MV/ISP Terminations Phase 3 | 20d | 2023-09-07 | 2023-10-04 | P3.MV.1000, P2.MV.1010, P3.SK.1000, P3.SK.1260 FF, P3.IT.1000 SS |  | 15d | 0d | N | 747 | CONS - PV_ELEC |
| P3.MV.1020 |  | MV/ISP Testing Phase 3 | 10d | 2023-10-10 | 2023-10-23 | P3.MV.1010 FS+3d |  | 15d | 2d | N | 748 | CONS - PV_ELEC |

| ID | WBS | Activity | Type | Duration | Start | Finish | Predecessors | Complete | Remaining | Planned start | Planned finish | Total float | Free float | Constraint | Expected finish | Calendar | Requested Expected Finish Approved | MSP Activity ID | Department | Executive Level Reporting |
| --- | --- | --- | --- | --- | --- | --- | --- | --- | --- | --- | --- | --- | --- | --- | --- | --- | --- | --- | --- | --- |
|  | WBS100 | **Phase 3 Commissioning** |  |  | 2023-05-19 | 2024-01-29 |  |  |  |  |  |  |  |  |  |  |  |  |  |  |
|  | WBS1 | **Cable Insulation Resistant Test (IRT)** |  |  | 2023-09-11 | 2023-10-17 |  |  |  |  |  |  |  |  |  |  |  |  |  |  |
| P3.CX.1010 |  | BLA Cable Insulation Resistant Test (IRT) |  | 20d | 2023-09-11 | 2023-10-06 | P3.BLA.1000 SS+1d, P3.BLA.1000 FF+1d |  |  |  |  | 13d | 0d |  |  |  | N | 730 | QA |  |
| P3.CX.1020 |  | String Cable Insulation Resistant Test (IRT) |  | 27d | 2023-09-11 | 2023-10-17 | P3.SW.1000 FF, P3.SW.1000 SS |  |  |  |  | 17d | 0d |  |  |  | N | 732 | QA |  |
|  | WBS2 | **Open Circuit Voltage Testing Data (VOC)** |  |  | 2023-09-13 | 2023-10-19 |  |  |  |  |  |  |  |  |  |  |  |  |  |  |
| P3.CX.1030 |  | Feeder Level VOC |  | 27d | 2023-09-13 | 2023-10-19 | P3.FT.1000 FF, P3.FT.1000 SS |  |  |  |  | 17d | 4d |  |  |  | N | 752 | QA |  |
| P3.CX.1040 |  | String Level VOC |  | 27d | 2023-09-13 | 2023-10-19 | P3.CX.1020 SS+2d, P3.CX.1020 FF+2d |  |  |  |  | 17d | 4d |  |  |  | N | 753 | QA |  |
|  | WBS4 | **Tracker Commissioning** |  |  | 2023-09-06 | 2024-01-05 |  |  |  |  |  |  |  |  |  |  |  |  |  |  |
| P3.CX.1050 |  | Tracker Cold Commissioning |  | 27d | 2023-09-06 | 2023-10-12 | P3.MO.1260 |  |  |  |  | 22d | 0d |  |  |  | N | 41 | QA |  |
| P3.CX.1060 |  | Tracker Hot Commissioning |  | 27d | 2023-11-17 | 2024-01-05 | P2.CX.1060, P3.CX.1050, P3.CX.1120 |  |  |  |  | 13d | 0d |  |  |  | N | 755 | QA |  |
|  | WBS3 | **Inverter DC Commissioning** |  |  | 2023-05-19 | 2024-01-05 |  |  |  |  |  |  |  |  |  |  |  |  |  |  |
| P3.CX.1070 |  | Inverter Cold Commissioning |  | 15d | 2023-05-19 A | 2023-07-20 | P3.SK.1260, P2.CX.1070 | 100% | 0d | 2023-05-19 | 2023-06-12 | 81d | 0d |  | 2023-06-12 |  | N | 38 | QA |  |
| P3.CX.1080 |  | Inverter Hot Commissioning |  | 27d | 2023-11-17 | 2024-01-05 | P3.CX.1110, P3.CX.1120 |  |  |  |  | 13d | 0d |  |  |  | N | 758 | QA |  |
|  | WBS6 | **Commissioning Milestones** |  |  | 2023-08-07 | 2024-01-29 |  |  |  |  |  |  |  |  |  |  |  |  |  |  |
| P3.CX.1090 |  | ISU Transformer Testing (NETA) Field Test |  | 14d | 2023-08-07 | 2023-08-25 | P3.SK.1260, P2.CX.1090 |  |  |  |  | 55d | 0d |  |  |  | N | 40 | QA |  |
| P3.CX.1110 |  | Permission to Energize |  | 5d | 2023-10-26 | 2023-11-01 | P3.CX.1090, PM1080 |  |  |  |  | 13d | 0d |  |  |  | N | 759 | QA |  |
| P3.CX.1120 |  | Utility In Service/ Energize / Limited Back-Feed Array |  | 10d | 2023-11-02 | 2023-11-16 | P3.CX.1110, SUB1320 |  |  |  |  | 13d | 0d |  |  |  | N | 756 | QA |  |
| P3.CX.1130 |  | Monitoring/SCADA Array Commissioning |  | 20d | 2023-11-21 | 2023-12-20 | P3.CX.1120 FS+2d |  |  |  |  | 18d | 5d |  |  |  | N | 762 | QA |  |
| P3.CX.1140 |  | Utility Testing |  | 15d | 2024-01-08 | 2024-01-29 | P3.CX.1080, P3.CX.1120, P3.CX.1110, P3.CX.1060, P3.CX.1130 |  |  |  |  | 13d | 0d |  |  |  | N | 763 | QA |  |
| P3.CX.1150 |  | Placed In Service Phase 3 | milestone | 0d | 2024-01-29 | 2024-01-29 | P3.CX.1140 FF |  |  |  |  | 13d | 0d |  |  |  | N | 60 | QA |  |
|  | WBS270 | **Phase 4** |  |  | 2022-07-05 | 2024-02-15 |  |  |  |  |  |  |  |  |  |  |  |  |  |  |
|  | WBS2 | **Phase 4 Civil** |  |  | 2022-07-05 | 2023-04-28 |  |  |  |  |  |  |  |  |  |  |  |  |  |  |
| P4.CIV.1000 |  | PV Construction Start / Mobilization |  | 10d | 2022-07-05 A | 2022-07-18 A |  | 100% |  | 2022-07-11 | 2022-07-21 |  |  | start on or after 2022-07-05 |  | Foggia_6x8 No Holidays | N | 7 | CONS - Civil | Level 1 |
| P4.CIV.1050 |  | Road Install |  | 40d | 2022-09-13 A | 2023-04-24 A | P4.CIV.1000, A18690 FF | 100% |  | 2022-10-04 | 2022-11-19 |  |  |  |  | Foggia_6x8 w/ Holidays | N | 777 | CONS - Civil |  |
| P4.CIV.1010 |  | Clearing & Grubbing |  | 17d | 2023-03-27 A | 2023-04-05 A | P4.CIV.1000 SS, P3.CIV.1010, A18690 FF, P3.CIV.1030, P3.CIV.1060 | 100% |  | 2023-03-25 | 2023-04-13 |  |  |  |  | Foggia_6x8 No Holidays | N | 775 | CONS - Civil |  |
| P4.CIV.1030 |  | SWPP - Site Stormwater - Install measures |  | 29d | 2023-03-27 A | 2023-04-24 A | P4.CIV.1010 SS, A18690 FF, P3.CIV.1030, P3.CIV.1060 | 100% |  | 2023-03-25 | 2023-04-27 |  |  |  |  | Foggia_6x8 No Holidays | N | 776 | CONS - Civil |  |
| P4.CIV.1060 |  | Site Grade, Cut & Fill, Seed & Straw |  | 30d | 2023-04-01 A | 2023-04-28 A | ENG.1180, P4.CIV.1030 SS+10d, A18690 FF, SUB1010 FF | 100% |  | 2023-04-01 | 2023-05-05 |  |  |  |  | Foggia_6x8 No Holidays | N | 766 | CONS - Civil | Level 1 |

| ID | WBS | Activity | Duration | Start | Finish | Predecessors | Complete | Remaining | Planned start | Planned finish | Total float | Free float | Expected finish | Requested Expected Finish Approved | MSP Activity ID | Department |
| --- | --- | --- | --- | --- | --- | --- | --- | --- | --- | --- | --- | --- | --- | --- | --- | --- |
|  | WBS4 | **Phase 4 Mechanical** |  | 2023-04-24 | 2023-09-29 |  |  |  |  |  |  |  |  |  |  |  |
|  | WBS101 | **Pre-Drill** |  | 2023-04-24 | 2023-05-19 |  |  |  |  |  |  |  |  |  |  |  |
| P4.PD.1000 |  | Pre-Drill PB73 | 1d | 2023-04-24 A | 2023-04-25 A | P3.PD.1260 SS+2d, P3.PD.1210 SS+2d | 100% |  | 2023-04-24 | 2023-04-24 |  |  |  | N | 768 | CONS - PILES |
| P4.PD.1010 |  | Pre-Drill PB74 | 1d | 2023-04-26 A | 2023-04-27 A | P4.PD.1000 SS+1d | 100% |  | 2023-04-25 | 2023-04-25 |  |  |  | N | 780 | CONS - PILES |
| P4.PD.1030 |  | Pre-Drill PB76 | 1d | 2023-04-26 A | 2023-04-26 A | P4.PD.1020 SS | 100% |  |  |  |  |  |  | N | 782 | CONS - PILES |
| P4.PD.1020 |  | Pre-Drill PB75 | 1d | 2023-04-28 A | 2023-04-28 A | P4.PD.1010 | 100% |  | 2023-04-26 | 2023-04-26 |  |  |  | N | 781 | CONS - PILES |
| P4.PD.1040 |  | Pre-Drill PB77 | 1d | 2023-05-01 A | 2023-05-01 A | P4.PD.1030 | 100% |  | 2023-04-27 | 2023-04-27 |  |  |  | N | 783 | CONS - PILES |
| P4.PD.1050 |  | Pre-Drill PB78 | 1d | 2023-05-02 A | 2023-05-02 A | P4.PD.1040 | 100% |  | 2023-04-28 | 2023-04-28 |  |  |  | N | 784 | CONS - PILES |
| P4.PD.1070 |  | Pre-Drill PB80 | 1d | 2023-05-02 A | 2023-05-02 A | P4.PD.1060 | 100% |  |  |  |  |  |  | N | 786 | CONS - PILES |
| P4.PD.1060 |  | Pre-Drill PB79 | 1d | 2023-05-03 A | 2023-05-04 A | P4.PD.1050 | 100% |  | 2023-05-01 | 2023-05-01 |  |  |  | N | 785 | CONS - PILES |
| P4.PD.1110 |  | Pre-Drill PB84 | 1d | 2023-05-04 A | 2023-05-08 A | P4.PD.1060 SS | 100% |  | 2023-05-08 | 2023-05-08 |  |  |  | N | 790 | CONS - PILES |
| P4.PD.1120 |  | Pre-Drill PB85 | 1.5d | 2023-05-09 A | 2023-05-11 A | P4.PD.1110 SS | 100% |  | 2023-05-09 | 2023-05-10 |  |  |  | N | 791 | CONS - PILES |
| P4.PD.1080 |  | Pre-Drill PB81 | 1d | 2023-05-12 A | 2023-05-15 A | P4.PD.1070 | 100% |  | 2023-05-12 | 2023-05-12 |  |  |  | N | 787 | CONS - PILES |
| P4.PD.1090 |  | Pre-Drill PB82 | 1d | 2023-05-16 A | 2023-05-16 A | P4.PD.1080 | 100% |  |  |  |  |  |  | N | 788 | CONS - PILES |
| P4.PD.1100 |  | Pre-Drill PB83 | 1d | 2023-05-17 A | 2023-05-17 A | P4.PD.1090 | 100% |  |  |  |  |  |  | N | 789 | CONS - PILES |
| P4.PD.1130 |  | Pre-Drill PB86 | 1.5d | 2023-05-18 A | 2023-05-19 A | P4.PD.1100 | 100% |  |  |  |  |  |  | N | 792 | CONS - PILES |
|  | WBS10 | **Racking Foundation** |  | 2023-05-15 | 2023-07-21 |  |  |  |  |  |  |  |  |  |  |  |
|  | 1 | **Racking Foundation Install** |  | 2023-05-15 | 2023-07-10 |  |  |  |  |  |  |  |  |  |  |  |
| P4.RF.1120 |  | Piles PB85 | 2d | 2023-05-15 A | 2023-05-30 A | P4.PD.1120 | 100% |  | 2023-06-20 | 2023-06-21 |  |  |  | N | 806 | CONS - PILES |
| P4.RF.1110 |  | Piles PB84 | 2d | 2023-05-22 A | 2023-06-02 A | P4.PD.1110, P4.RF.1120 SS | 100% |  | 2023-05-22 | 2023-05-23 |  |  |  | N | 805 | CONS - PILES |
| P4.RF.1050 |  | Piles PB78 | 2d | 2023-05-30 A | 2023-06-05 A | P4.PD.1050, P4.RF.1110 SS, P4.RF.1110 FF | 100% |  | 2023-05-30 | 2023-05-31 |  |  |  | N | 799 | CONS - PILES |
| P4.RF.1000 |  | Piles PB73 | 4d | 2023-06-01 A | 2023-06-12 A | PRO.1640 SS+8d, P4.PD.1000, P4.CIV.1050, P4.CIV.1060 SS+12d, P4.RF.1120, P4.RF.1110, P4.RF.1050 SS, P4.RF.1030 FF | 100% |  | 2023-06-01 | 2023-06-06 |  |  |  | N | 794 | CONS - PILES |
| P4.RF.1010 |  | Piles PB74 | 4d | 2023-06-01 A | 2023-06-12 A | P4.PD.1010, P4.RF.1050 SS, P4.RF.1040 FF | 100% |  | 2023-06-01 | 2023-06-06 |  |  |  | N | 795 | CONS - PILES |
| P4.RF.1030 |  | Piles PB76 | 3d | 2023-06-01 A | 2023-06-07 A | P4.PD.1030, P4.RF.1050 SS, P4.RF.1050 FF | 100% |  | 2023-06-01 | 2023-06-05 |  |  |  | N | 797 | CONS - PILES |
| P4.RF.1040 |  | Piles PB77 | 2d | 2023-06-02 A | 2023-06-06 A | P4.PD.1040, P4.RF.1030 SS | 100% |  | 2023-06-02 | 2023-06-05 |  |  |  | N | 798 | CONS - PILES |
| P4.RF.1020 |  | Piles PB75 | 2d | 2023-06-06 A | 2023-06-12 A | P4.PD.1020, P4.RF.1040 SS, P4.RF.1000 FF, P4.RF.1010 FF | 100% |  | 2023-06-06 | 2023-06-07 |  |  |  | N | 796 | CONS - PILES |
| P4.RF.1060 |  | Piles PB79 | 2d | 2023-06-09 A | 2023-06-14 A | P4.PD.1060, P4.RF.1020 SS, P4.RF.1020 FF | 100% |  | 2023-06-09 | 2023-06-12 |  |  |  | N | 800 | CONS - PILES |
| P4.RF.1070 |  | Piles PB80 | 3d | 2023-06-15 A | 2023-06-21 A | P4.RF.1060, P4.PD.1070 | 100% |  |  |  |  |  |  | N | 801 | CONS - PILES |
| P4.RF.1080 |  | Piles PB81 | 3d | 2023-06-20 A | 2023-06-22 A | P4.RF.1070 SS+1d, P4.PD.1080 | 100% |  |  |  |  |  |  | N | 802 | CONS - PILES |
| P4.RF.1090 |  | Piles PB82 | 3d | 2023-06-21 A | 2023-07-05 A | P4.RF.1080 SS+1d, P4.PD.1090 | 100% |  | 2023-06-21 | 2023-06-23 |  |  |  | N | 803 | CONS - PILES |
| P4.RF.1130 |  | Piles PB86 | 4d | 2023-06-23 A | 2023-06-28 A | A14030 FF, P4.PD.1130, P4.RF.1090 SS+1d | 100% |  |  |  |  |  |  | N | 807 | CONS - PILES |
| P4.RF.1100 |  | Piles PB83 | 6d | 2023-06-30 A | 2023-07-10 | P4.PD.1100, P4.RF.1130 SS+1d | 83% | 1d | 2023-06-30 | 2023-07-11 | 60.5d | 0d | 2023-07-10 | N | 804 | CONS - PILES |

| ID | WBS | Activity | Type | Duration | Start | Finish | Predecessors | Complete | Remaining | Planned start | Planned finish | Total float | Free float | Expected finish | Calendar | Requested Expected Finish Approved | MSP Activity ID | Department |
| --- | --- | --- | --- | --- | --- | --- | --- | --- | --- | --- | --- | --- | --- | --- | --- | --- | --- | --- |
|  | 2 | **Racking Foundation QC** |  |  | 2023-06-19 | 2023-07-21 |  |  |  |  |  |  |  |  |  |  |  |  |
| A18890 |  | Phase 4 Pile QC |  | 15d | 2023-06-19 A | 2023-07-21 | A18880, P4.RF.1000 SS+5d, P4.RF.1100 FF+5d | 33% | 10d | 2023-06-12 | 2023-07-06 | 56.5d | 0d | 2023-07-21 |  |  |  |  |
|  | WBS20 | **Racking** |  |  | 2023-06-28 | 2023-08-02 |  |  |  |  |  |  |  |  |  |  |  |  |
|  | 1 | **Racking Install** |  |  | 2023-06-28 | 2023-07-25 |  |  |  |  |  |  |  |  |  |  |  |  |
| P4.RA.1110 |  | Racking PB84 |  | 2d | 2023-06-28 A | 2023-07-10 | P4.RF.1110, A18890 SS+5d | 50% | 1d | 2023-06-28 | 2023-06-29 | 79d | 0d | 2023-07-10 |  | N | 820 | CONS - RACK |
| P4.RA.1120 |  | Racking PB85 |  | 2d | 2023-06-28 A | 2023-07-10 | P4.RA.1110 SS, P4.RF.1120 | 50% | 1d | 2023-06-28 | 2023-06-29 | 79d | 0d | 2023-07-10 |  | N | 821 | CONS - RACK |
| P4.RA.1040 |  | Racking PB77 |  | 2d | 2023-06-30 A | 2023-07-11 | P4.RF.1040, P4.RA.1120 SS+1d |  | 2d | 2023-06-30 | 2023-07-05 | 79d | 0d | 2023-07-11 |  | N | 813 | CONS - RACK |
| P4.RA.1050 |  | Racking PB78 |  | 2d | 2023-06-30 A | 2023-07-11 | P4.RF.1050, P4.RA.1040 SS |  | 2d | 2023-06-30 | 2023-07-05 | 80.5d | 0d | 2023-07-11 |  | N | 814 | CONS - RACK |
| P4.RA.1030 |  | Racking PB76 |  | 2d | 2023-07-05 A | 2023-07-14 | P4.RA.1020 SS+2d, P4.RF.1030 | 100% | 0d | 2023-07-05 | 2023-07-06 | 75.5d | 0d | 2023-07-12 |  | N | 812 | CONS - RACK |
| P4.RA.1000 |  | Racking PB73 |  | 2d | 2023-07-10 | 2023-07-11 | PRO.1670 SS, P4.RF.1000 FS+10d |  |  |  |  | 56.5d | 0d |  |  | N | 809 | CONS - RACK |
| P4.RA.1010 |  | Racking PB74 |  | 2d | 2023-07-11 | 2023-07-12 | P4.RF.1010, P4.RA.1000 SS+1d |  |  |  |  | 59.5d | 0d |  |  | N | 810 | CONS - RACK |
| P4.RA.1020 |  | Racking PB75 |  | 2d | 2023-07-12 | 2023-07-13 | P4.RF.1020, P4.RA.1010 SS+1d |  |  |  |  | 59.5d | 0d |  |  | N | 811 | CONS - RACK |
| P4.RA.1060 |  | Racking PB79 |  | 2d | 2023-07-13 | 2023-07-14 | P4.RF.1060, P4.RA.1020 SS+1d |  |  |  |  | 59.5d | 0d |  |  | N | 815 | CONS - RACK |
| P4.RA.1070 |  | Racking PB80 |  | 2d | 2023-07-14 | 2023-07-17 | P4.RF.1070, P4.RA.1060 SS+1d |  |  |  |  | 59.5d | 0d |  |  | N | 816 | CONS - RACK |
| P4.RA.1080 |  | Racking PB81 |  | 2d | 2023-07-14 | 2023-07-17 | P4.RF.1080, P4.RA.1070 SS |  |  |  |  | 59.5d | 0d |  |  | N | 817 | CONS - RACK |
| P4.RA.1090 |  | Racking PB82 |  | 2d | 2023-07-17 | 2023-07-18 | P4.RA.1080 SS+1d, P4.RF.1090 |  |  |  |  | 59.5d | 0d |  |  | N | 818 | CONS - RACK |
| P4.RA.1100 |  | Racking PB83 |  | 2d | 2023-07-18 | 2023-07-19 | P4.RA.1090 SS+1d, P4.RF.1100 |  |  |  |  | 59.5d | 3d |  |  | N | 819 | CONS - RACK |
| P4.RA.1130 |  | Racking PB86 |  | 2d | 2023-07-24 | 2023-07-25 | P4.RF.1130, A14040 FF, P4.RA.1100 SS+1d, A18890 FF+2d |  |  |  |  | 56.5d | 6d |  |  | N | 822 | CONS - RACK |
|  | 2 | **Racking QC** |  |  | 2023-07-13 | 2023-08-02 |  |  |  |  |  |  |  |  |  |  |  |  |
| A18910 |  | Phase 4 Racking QC |  | 15d | 2023-07-13 | 2023-08-02 | A18900, P4.RA.1130 FF |  |  |  |  | 50.5d | 30d |  |  |  |  |  |
|  | WBS30 | **Module Install** |  |  | 2023-09-01 | 2023-09-29 |  |  |  |  |  |  |  |  |  |  |  |  |
| A400 |  | Summary | WBS summary | 21d | 2023-09-01 | 2023-09-29 |  |  |  |  |  | 38d | 302d |  | Foggia_5x8 No Holidays |  |  |  |
| P4.MO.1000 |  | Mods PB73 |  | 1.5d | 2023-09-01 | 2023-09-05 | PRO.1100 SS, P4.RA.1000, A18910 SS+5d, P3.MO.1240 |  |  |  |  | 20.5d | 0d |  |  | N | 824 | CONS - MODS |
| P4.MO.1010 |  | Mods PB74 |  | 1.5d | 2023-09-05 | 2023-09-06 | P4.MO.1000, P4.RA.1010 |  |  |  |  | 37d | 0d |  |  | N | 825 | CONS - MODS |
| P4.MO.1020 |  | Mods PB75 |  | 1.5d | 2023-09-07 | 2023-09-08 | P4.RA.1020, P4.MO.1010 |  |  |  |  | 37d | 0d |  |  | N | 826 | CONS - MODS |
| P4.MO.1030 |  | Mods PB76 |  | 1.5d | 2023-09-08 | 2023-09-11 | P4.RA.1030, P4.MO.1020 |  |  |  |  | 37d | 0d |  |  | N | 827 | CONS - MODS |
| P4.MO.1040 |  | Mods PB77 |  | 1.5d | 2023-09-12 | 2023-09-13 | P4.RA.1040, P4.MO.1030 |  |  |  |  | 37d | 0d |  |  | N | 828 | CONS - MODS |
| P4.MO.1050 |  | Mods PB78 |  | 1.5d | 2023-09-13 | 2023-09-14 | P4.RA.1050, P4.MO.1040 |  |  |  |  | 37d | 0d |  |  | N | 829 | CONS - MODS |
| P4.MO.1060 |  | Mods PB79 |  | 1.5d | 2023-09-15 | 2023-09-18 | P4.RA.1060, P4.MO.1050 |  |  |  |  | 37d | 0d |  |  | N | 830 | CONS - MODS |
| P4.MO.1070 |  | Mods PB80 |  | 1.5d | 2023-09-18 | 2023-09-19 | P4.MO.1060, P4.RA.1070 |  |  |  |  | 37d | 0d |  |  | N | 831 | CONS - MODS |
| P4.MO.1080 |  | Mods PB81 |  | 1.5d | 2023-09-20 | 2023-09-21 | P4.RA.1080, P4.MO.1070 |  |  |  |  | 37d | 0d |  |  | N | 832 | CONS - MODS |
| P4.MO.1090 |  | Mods PB82 |  | 1.5d | 2023-09-21 | 2023-09-22 | P4.RA.1090, P4.MO.1080 |  |  |  |  | 37d | 0d |  |  | N | 833 | CONS - MODS |
| P4.MO.1100 |  | Mods PB83 |  | 1.5d | 2023-09-25 | 2023-09-26 | P4.MO.1090, P4.RA.1100 |  |  |  |  | 37d | 0d |  |  | N | 834 | CONS - MODS |
| P4.MO.1110 |  | Mods PB84 |  | 1.5d | 2023-09-26 | 2023-09-27 | P4.MO.1100, P4.RA.1110 |  |  |  |  | 37d | 0d |  |  | N | 835 | CONS - MODS |
| P4.MO.1120 |  | Mods PB85 |  | 1d | 2023-09-28 | 2023-09-28 | P4.MO.1110, P4.RA.1120 |  |  |  |  | 37d | 0d |  |  | N | 836 | CONS - MODS |
| P4.MO.1130 |  | Mods PB86 |  | 1d | 2023-09-29 | 2023-09-29 | P4.MO.1120, P4.RA.1130, A14060 FF, A14050 FF, A18910 FF |  |  |  |  | 37d | 9d |  |  | N | 769 | CONS - MODS |

| ID | WBS | Activity | Duration | Start | Finish | Predecessors | Complete | Planned start | Planned finish | Total float | Free float | Constraint | Requested Expected Finish Approved | MSP Activity ID | Department |
| --- | --- | --- | --- | --- | --- | --- | --- | --- | --- | --- | --- | --- | --- | --- | --- |
|  | WBS5 | **Phase 4 Electrical** |  | 2023-02-28 | 2023-12-21 |  |  |  |  |  |  |  |  |  |  |
|  | WBS1 | **Equipment Pad** |  | 2023-02-28 | 2023-11-20 |  |  |  |  |  |  |  |  |  |  |
| P4.SP.1000 |  | Skid Pile Install Phase 4 | 6d | 2023-02-28 A | 2023-03-24 A | P2.SP.1000 | 100% | 2023-03-06 | 2023-03-13 |  |  |  | N | 770 | CONS - PV_ELEC |
| P4.SF.1000 |  | Skid Foundations Phase 4 | 16d | 2023-03-14 A | 2023-04-07 A | P4.SP.1000 FF+1d, P4.SP.1000 SS+1d | 100% | 2023-03-09 | 2023-03-30 |  |  |  | N | 843 | CONS - PV_ELEC |
| P4.IT.1000 |  | Inverters Term Phase 4 | 20d | 2023-10-23 | 2023-11-20 | P4.FP.1000 SS+3d, P4.SK.1000, P4.FP.1000 FF+2d, P4.SK.1130 FF+1.5d, P3.IT.1000 |  |  |  | 11d | 0d |  | N | 839 | CONS - PV_ELEC |
|  | WBS1177 | **Skid Pile Install** |  |  |  |  |  |  |  |  |  |  |  |  |  |
|  | WBS10 | **Skid Foundations Roughed In** |  |  |  |  |  |  |  |  |  |  |  |  |  |
|  | WBS20 | **Skid Set (INV/XFMR/SCADA)** |  | 2023-03-31 | 2023-07-18 |  |  |  |  |  |  |  |  |  |  |
| P4.SK.1000 |  | Skid Install PB73 | 0.2d | 2023-03-31 A | 2023-03-31 A | P2.SK.1190, P4.SF.1000 | 100% |  |  |  |  |  | N | 840 | CONS - PV_ELEC |
| P4.SK.1010 |  | Skid Install PB74 | 0.2d | 2023-03-31 A | 2023-03-31 A | P4.SK.1000 | 100% |  |  |  |  |  | N | 847 | CONS - PV_ELEC |
| P4.SK.1020 |  | Skid Install PB75 | 0.2d | 2023-03-31 A | 2023-03-31 A | P4.SK.1010 | 100% |  |  |  |  |  | N | 848 | CONS - PV_ELEC |
| P4.SK.1030 |  | Skid Install PB76 | 0.2d | 2023-03-31 A | 2023-03-31 A | P4.SK.1020 | 100% |  |  |  |  |  | N | 849 | CONS - PV_ELEC |
| P4.SK.1040 |  | Skid Install PB77 | 0.2d | 2023-03-31 A | 2023-03-31 A | P4.SK.1030 | 100% |  |  |  |  |  | N | 850 | CONS - PV_ELEC |
| P4.SK.1050 |  | Skid Install PB78 | 0.2d | 2023-04-03 A | 2023-04-03 A | P4.SK.1040 | 100% |  |  |  |  |  | N | 851 | CONS - PV_ELEC |
| P4.SK.1060 |  | Skid Install PB79 | 0.2d | 2023-04-03 A | 2023-04-03 A | P4.SK.1050 | 100% |  |  |  |  |  | N | 852 | CONS - PV_ELEC |
| P4.SK.1070 |  | Skid Install PB80 | 0.2d | 2023-04-03 A | 2023-04-03 A | P4.SK.1060 | 100% |  |  |  |  |  | N | 853 | CONS - PV_ELEC |
| P4.SK.1080 |  | Skid Install PB81 | 0.2d | 2023-04-03 A | 2023-04-03 A | P4.SK.1070 | 100% |  |  |  |  |  | N | 854 | CONS - PV_ELEC |
| P4.SK.1090 |  | Skid Install PB82 | 0.2d | 2023-04-03 A | 2023-04-03 A | P4.SK.1080 | 100% |  |  |  |  |  | N | 855 | CONS - PV_ELEC |
| P4.SK.1100 |  | Skid Install PB79 | 0.2d | 2023-04-04 A | 2023-04-04 A | P4.SK.1090 | 100% |  |  |  |  |  | N | 856 | CONS - PV_ELEC |
| P4.SK.1110 |  | Skid Install PB80 | 0.2d | 2023-04-04 A | 2023-04-04 A | P4.SK.1100 | 100% |  |  |  |  |  | N | 857 | CONS - PV_ELEC |
| P4.SK.1120 |  | Skid Install PB81 | 0.2d | 2023-04-04 A | 2023-04-04 A | P4.SK.1110 | 100% |  |  |  |  |  | N | 858 | CONS - PV_ELEC |
| P4.SK.1130 |  | Skid Install PB83 | 1d | 2023-07-17 | 2023-07-18 | P4.SK.1120 |  |  |  | 93.8d | 1.8d | start on or after 2023-07-17 | N | 842 | CONS - PV_ELEC |
|  | WBS30 | **Set Central Inverters** |  |  |  |  |  |  |  |  |  |  |  |  |  |
|  | WBS40 | **Set MV Transformers** |  |  |  |  |  |  |  |  |  |  |  |  |  |
|  | WBS50 | **Inverter's DC Terminated** |  |  |  |  |  |  |  |  |  |  |  |  |  |
|  | WBS60 | **Transformer's DC Terminated** |  |  |  |  |  |  |  |  |  |  |  |  |  |
|  | WBS2 | **DC Wiring** |  | 2023-10-04 | 2023-12-21 |  |  |  |  |  |  |  |  |  |  |
| P4.CAB.1000 |  | CAB Installation Phase 4 | 20d | 2023-10-04 | 2023-10-31 | PRO.1760 FF+5d, P3.CAB.1000, P4.MO.1000 |  |  |  | 0d |  |  | N | 865 | CONS - PV_ELEC |
| P4.DM.1000 |  | DC Disco Mount Phase 4 | 19d | 2023-10-09 | 2023-11-02 | PRO.1250 SS+5d, P4.RF.1000, P4.RF.1130 FF+5d, P3.DM.1000 |  |  |  | 28d | 9d |  | N | 867 | CONS - PV_ELEC |
| P4.CO.1000 |  | DC Feeder UG Phase 4 | 19d | 2023-10-11 | 2023-11-06 | PRO.1730 SS+3d, P3.CO.1000 |  |  |  | 11d | 0d |  | N | 866 | CONS - PV_ELEC |
| P4.BLA.1000 |  | BLA Phase 4 | 14d | 2023-10-16 | 2023-11-02 | P4.CAB.1000 SS+2d, P4.CAB.1000 FF+2d, PRO.1190 SS+10d, P3.BLA.1000 |  |  |  | 0d |  |  | N | 864 | CONS - PV_ELEC |
| P4.FP.1000 |  | Feeders Pull Phase 4 | 20d | 2023-10-18 | 2023-11-15 | P4.CO.1000 FF+5d, PRO.1730 SS+4d, P4.CO.1000 SS+5d, P4.CAB.1000 FF+5d, P3.FP.1000 |  |  |  | 11d | 0d |  | N | 841 | CONS - PV_ELEC |
| P4.FT.1000 |  | Feeders Term Phase 4 | 20d | 2023-10-20 | 2023-11-17 | P3.FT.1000, P4.FP.1000 SS+2d, P4.FP.1000 FF+2d |  |  |  | 22d | 0d |  | N | 48 | CONS - PV_ELEC |
| P4.DT.1000 |  | DC Disco Term Phase 4 | 20d | 2023-10-25 | 2023-11-22 | P4.DM.1000 SS+3d, P4.FP.1000 SS+2d, P4.DM.1000 FF+3d, P4.CX.1010 FF, P4.CX.1010 SS, P4.FP.1000 FF+2d, P3.DT.1000 |  |  |  | 19d |  |  | N | 868 | CONS - PV_ELEC |
| P4.SW.1000 |  | String Wire Phase 4 | 18d | 2023-11-03 | 2023-12-01 | PRO.1730 SS+4d, P4.MO.1000, P4.MO.1130 FF+5d, P3.SW.1000, P4.BLA.1000 |  |  |  | 0d |  |  | N | 869 | CONS - PV_ELEC |
| P4.MT.1000 |  | Mod Term Phase 4 | 14d | 2023-11-20 | 2023-12-11 | P4.MO.1000, P4.MO.1130 FF+5d, P3.MT.1000, P4.SW.1000 SS+10d, P4.SW.1000 FF+6d |  |  |  | 0d |  |  | N | 49 | CONS - PV_ELEC |
| P4.WM.1000 |  | Wire Management Phase 4 | 20d | 2023-11-22 | 2023-12-21 | P4.MT.1000 FF+5d, P4.DT.1000 FF, P4.IT.1000 FF+5d, P4.MT.1000 SS+2d |  |  |  | 0d |  |  | N | 46 | CONS - PV_ELEC |

| ID | WBS | Activity | Duration | Start | Finish | Predecessors | Complete | Planned start | Planned finish | Total float | Free float | Requested Expected Finish Approved | MSP Activity ID | Department |
| --- | --- | --- | --- | --- | --- | --- | --- | --- | --- | --- | --- | --- | --- | --- |
|  | WBS10 | **UG Conduit** |  |  |  |  |  |  |  |  |  |  |  |  |
|  | WBS20 | **DC Feeders Pulled** |  |  |  |  |  |  |  |  |  |  |  |  |
|  | WBS30 | **DC Feeders Terminated** |  |  |  |  |  |  |  |  |  |  |  |  |
|  | WBS40 | **String Wire Installed** |  |  |  |  |  |  |  |  |  |  |  |  |
|  | WBS50 | **DC Disconnect Boxes Mounted** |  |  |  |  |  |  |  |  |  |  |  |  |
|  | WBS80 | **SCADA/Monitoring Terminated** |  |  |  |  |  |  |  |  |  |  |  |  |
|  | WBS55 | **CAB Hangers Installed** |  |  |  |  |  |  |  |  |  |  |  |  |
|  | WBS60 | **DC BLA Installed** |  |  |  |  |  |  |  |  |  |  |  |  |
|  | WBS70 | **DC Disconnect Boxes Terminated** |  |  |  |  |  |  |  |  |  |  |  |  |
|  | WBS92 | **Module Terminations** |  |  |  |  |  |  |  |  |  |  |  |  |
|  | WBS93 | **Wire Management** |  |  |  |  |  |  |  |  |  |  |  |  |
|  | WBS6 | **MV/ISP to Power Blocks** |  | 2023-03-01 | 2023-12-06 |  |  |  |  |  |  |  |  |  |
| P4.MV.1000 |  | MV/ISP to PB Phase 4 | 28d | 2023-03-01 A | 2023-04-14 A | PRO.1700 FF+5d, P2.MV.1000 SS | 100% | 2023-03-06 | 2023-04-12 |  |  | N | 746 | CONS - PV_ELEC |
| P4.MV.1010 |  | MV/ISP Terminations Phase 4 | 17d | 2023-10-23 | 2023-11-15 | P4.MV.1000, P4.IT.1000 SS, P3.MV.1010 |  |  |  | 11d | 0d | N | 885 | CONS - PV_ELEC |
| P4.MV.1020 |  | MV/ISP Testing Phase 4 | 10d | 2023-11-21 | 2023-12-06 | P4.MV.1010 FS+3d |  |  |  | 11d |  | N | 886 | CONS - PV_ELEC |
|  | WBS100 | **Phase 4 Commissioning** |  | 2023-07-20 | 2024-02-15 |  |  |  |  |  |  |  |  |  |
|  | WBS1 | **Cable Insulation Resistant Test (IRT)** |  | 2023-10-17 | 2023-12-05 |  |  |  |  |  |  |  |  |  |
| P4.CX.1010 |  | BLA Cable Insulation Resistant Test (IRT) | 14d | 2023-10-17 | 2023-11-03 | P4.BLA.1000 SS+1d, P4.BLA.1000 FF+1d |  |  |  | 25d | 6d | N | 871 | QA |
| P4.CX.1020 |  | String Cable Insulation Resistant Test (IRT) | 14d | 2023-11-14 | 2023-12-05 | P4.SW.1000 SS+2d, P4.SW.1000 FF+2d |  |  |  | 10d | 0d | N | 870 | QA |
|  | WBS2 | **Open Circuit Voltage Testing Data (VOC)** |  | 2023-10-30 | 2023-12-07 |  |  |  |  |  |  |  |  |  |
| P4.CX.1030 |  | Feeder Level VOC | 14d | 2023-10-30 | 2023-11-17 | P4.FT.1000 SS, P4.FT.1000 FF |  |  |  | 22d |  | N | 890 | QA |
| P4.CX.1040 |  | String Level VOC | 14d | 2023-11-16 | 2023-12-07 | P4.CX.1020 FF+2d, P4.CX.1020 SS+2d |  |  |  | 10d |  | N | 891 | QA |
|  | WBS4 | **Tracker Commissioning** |  | 2023-10-13 | 2024-02-08 |  |  |  |  |  |  |  |  |  |
| P4.CX.1050 |  | Tracker Cold Commissioning | 14d | 2023-10-13 | 2023-11-01 | P3.CX.1050, P4.MO.1130 |  |  |  | 33d |  | N | 50 | QA |
| P4.CX.1060 |  | Tracker Hot Commissioning | 14d | 2024-01-22 | 2024-02-08 | P4.CX.1050, P4.CX.1120, P4.CX.1070 |  |  |  | 5d |  | N | 893 | QA |

| ID | WBS | Activity | Type | Duration | Start | Finish | Predecessors | Complete | Remaining | Planned start | Planned finish | Total float | Free float | Constraint | Expected finish | Calendar | Requested Expected Finish Approved | MSP Activity ID | Department | Substation Activities | Executive Level Reporting | LEVELS | Scope | Execution Teams | Key Milestone? | ETL Milestones |
| --- | --- | --- | --- | --- | --- | --- | --- | --- | --- | --- | --- | --- | --- | --- | --- | --- | --- | --- | --- | --- | --- | --- | --- | --- | --- | --- |
|  | WBS3 | **Inverter DC Commissioning** |  |  | 2023-07-20 | 2024-02-08 |  |  |  |  |  |  |  |  |  |  |  |  |  |  |  |  |  |  |  |  |
| P4.CX.1070 |  | Inverter Cold Commissioning |  | 14d | 2023-07-20 | 2023-08-08 | P4.SK.1130, P3.CX.1070 |  |  |  |  | 92d |  |  |  |  | N | 47 | QA |  |  |  |  |  |  |  |
| P4.CX.1080 |  | Inverter Hot Commissioning |  | 14d | 2024-01-22 | 2024-02-08 | P4.CX.1120, P4.CX.1110, P4.CX.1070, P4.CX.1100 |  |  |  |  | 0d |  |  |  |  | N | 896 | QA |  |  |  |  |  |  |  |
|  | WBS6 | **Commissioning Milestones** |  |  | 2023-08-28 | 2024-02-15 |  |  |  |  |  |  |  |  |  |  |  |  |  |  |  |  |  |  |  |  |
| P4.CX.1100 |  | ISU Transformer Testing (NETA) Field Test |  | 7d | 2023-08-28 | 2023-09-06 | P4.SK.1130, P3.CX.1090 |  |  |  |  | 73d |  |  |  |  | N | 45 | QA |  |  |  |  |  |  |  |
| P4.CX.1110 |  | Permission to Energize |  | 5d | 2023-12-22 | 2024-01-08 | P4.CX.1100, P4.CX.1070, PM1090 |  |  |  |  | 0d |  |  |  |  | N | 897 | QA |  |  |  |  |  |  |  |
| P4.CX.1120 |  | Utility In Service/ Energize / Limited Back-Feed Array |  | 8d | 2024-01-09 | 2024-01-19 | P4.CX.1110, SUB1320 |  |  |  |  | 0d |  |  |  |  | N | 894 | QA |  |  |  |  |  |  |  |
| P4.CX.1130 |  | Monitoring/SCADA Array Commissioning |  | 10d | 2024-01-24 | 2024-02-06 | P4.CX.1120 FS+2d |  |  |  |  | 2d |  |  |  |  | N | 900 | QA |  |  |  |  |  |  |  |
| P4.CX.1140 |  | Utility Testing |  | 5d | 2024-02-09 | 2024-02-15 | P4.CX.1080, P4.CX.1110, P4.CX.1120, P4.CX.1130 |  |  |  |  | 0d |  |  |  |  | N | 901 | QA |  |  |  |  |  |  |  |
| P4.CX.1150 |  | Placed In Service Phase 4 | milestone | 0d | 2024-02-15 | 2024-02-15 | P4.CX.1140 FF, P4.WM.1000 FF, P4.CX.1060 FF, P4.CX.1080 FF |  |  |  |  | 0d |  |  |  |  | N | 54 | QA |  |  |  |  |  |  |  |
|  | WBS1 | **Substation Civil** |  |  | 2022-08-22 | 2022-10-17 |  |  |  |  |  |  |  |  |  |  |  |  |  |  |  |  |  |  |  |  |
| SUB1000 |  | Substation Civil Start / Mobilization |  | 1d | 2022-08-22 A | 2022-08-23 A | ENG.1190 | 100% |  | 2022-09-06 | 2022-09-06 |  |  |  |  |  | N | 903 | CONS - Civil | True |  |  |  |  |  |  |
| SUB1010 |  | SWPP - Site Stormwater - Install measures |  | 15d | 2022-08-23 A | 2022-09-23 A | SUB1000 | 100% |  | 2022-09-07 | 2022-09-27 |  |  |  |  |  | N | 904 | CONS - Civil |  |  |  |  |  |  |  |
| SUB1020 |  | Site Grade, Cut & Fill, Seed & Straw |  | 27d | 2022-09-01 A | 2022-10-01 A | SUB1000 FS+1d | 100% |  | 2022-09-08 | 2022-10-14 |  |  |  |  |  | N | 905 | CONS - Civil |  |  |  |  |  |  |  |
| SUB1030 |  | Road Install |  | 25d | 2022-09-05 A | 2022-10-17 A | SUB1020 SS+2d | 100% |  | 2022-09-12 | 2022-10-14 |  |  |  |  |  | N | 906 | CONS - Civil |  |  |  |  |  |  |  |
| SUB1040 |  | Substation Building Pad Delivery | milestone | 0d | 2022-10-17 A | 2022-10-17 A | SUB1010 FF, SUB1030 FF | 100% |  | 2022-11-21 | 2022-11-21 |  |  |  |  |  | N | 9 | CONS - Civil | True | Level 1 |  |  |  |  |  |
|  | WBS7 | **Substation Install** |  |  | 2023-03-09 | 2023-09-20 |  |  |  |  |  |  |  |  |  |  |  |  |  |  |  |  |  |  |  |  |
| A18830 |  | Substation Installation | WBS summary | 127.5d | 2023-03-09 A | 2023-09-20 |  | 60% | 51d | 2023-03-15 | 2023-09-20 | 34d | 294d |  |  |  |  | 932 |  |  |  | LV1 | SUB |  |  |  |
| SUB1050 |  | Pre-Construction Meeting |  | 1d | 2023-03-09 A | 2023-03-09 A | A18780 FS+5d, SUB1040 | 100% |  | 2023-03-15 | 2023-03-16 |  |  |  |  |  | N | 76 | CONS - POI | True |  |  |  |  |  |  |
| SUB1070 |  | Substation Construction Mobilization |  | 2d | 2023-03-20 A | 2023-03-20 A | SUB1050 FS+10d | 100% |  | 2023-03-23 | 2023-03-27 |  |  |  |  |  | N | 909 | CONS - POI | True |  |  |  | Blue Team | True | SubMob |
| SUB1100 |  | GSU Foundation Install |  | 7d | 2023-03-20 A | 2023-04-01 A | SUB1070 | 100% |  | 2023-04-11 | 2023-04-19 |  |  |  |  |  | N | 912 | CONS - POI | True |  |  |  |  |  |  |
| SUB1080 |  | Foundation Installation |  | 25d | 2023-03-20 A | 2023-05-05 A | SUB1070 SS, SUB1050 FS+5d | 100% |  | 2023-03-27 | 2023-05-01 |  |  |  |  |  | N | 910 | CONS - POI | True |  |  |  |  |  |  |
| SUB1120 |  | GSU Foundation Curing Time |  | 20d | 2023-04-02 A | 2023-04-28 A | SUB1100 | 100% |  | 2023-04-20 | 2023-05-09 |  |  |  |  | Foggia_7x8 No Holidays | N | 914 | CONS - POI | True |  |  |  |  |  |  |
| SUB1110 |  | Install UG Conduit |  | 27d | 2023-04-24 A | 2023-06-26 A | SUB1100 | 100% |  | 2023-04-24 | 2023-06-01 |  |  | start on or after 2023-04-17 |  |  | N | 913 | CONS - POI | True |  |  |  |  |  |  |
| SUB1140 |  | Foundation Curing Time |  | 28d | 2023-04-24 A | 2023-05-08 A | SUB1080 SS | 100% |  | 2023-04-24 | 2023-05-21 |  |  | start on or after 2023-04-15 |  | Foggia_7x8 No Holidays | N | 916 | CONS - POI | True |  |  |  |  |  |  |
| SUB1150 |  | UG Ground Grid Start |  | 15d | 2023-04-24 A | 2023-05-17 A | SUB1110 SS, SUB1100 | 100% |  | 2023-04-24 | 2023-05-12 |  |  |  |  |  | N | 917 | CONS - POI | True |  |  |  |  |  |  |
| SUB1250 |  | MV Breakers Set/Assemble |  | 2d | 2023-05-09 A | 2023-05-18 A | SUB1140, PRO.1460 | 100% |  | 2023-06-09 | 2023-06-12 |  |  |  |  |  | N | 926 | CONS - POI | True |  |  |  |  |  |  |
| SUB1190 |  | UG Ground Grid Complete |  | 4d | 2023-05-19 A | 2023-06-26 A | SUB1150 | 100% |  | 2023-05-19 | 2023-05-24 |  |  |  |  |  | N | 921 | CONS - POI | True |  |  |  |  |  |  |
| SUB1200 |  | Structures and Equipment |  | 33d | 2023-05-19 A | 2023-07-24 | SUB1140 FS+5d, SUB1120, PRO.1520 SS, PRO.1520 FF+5d, SUB1250 | 67% | 11d | 2023-05-19 | 2023-07-12 | 34d | 0d |  | 2023-07-24 |  | N | 922 | CONS - POI | True |  |  |  |  |  |  |
| SUB1130 |  | Control House Set/Assemble |  | 7d | 2023-06-02 A | 2023-06-28 A | SUB1080, PRO.1550 SS | 100% |  | 2023-06-12 | 2023-06-22 |  |  |  |  |  | N | 915 | CONS - POI | True |  |  |  |  |  |  |
| SUB1160 |  | Sub Relay Panel installation |  | 7d | 2023-06-02 A | 2023-06-28 A | PRO.1580 SS, SUB1130 SS | 100% |  | 2023-06-13 | 2023-06-23 |  |  |  |  |  | N | 918 | CONS - POI | True |  |  |  |  |  |  |
| SUB1240 |  | GSU XFMR Installation |  | 17d | 2023-06-06 A | 2023-07-21 | SUB1190 FF, PRO.1400 SS, SUB1120 | 41% | 10d | 2023-06-15 | 2023-07-13 | 43d | 0d |  |  |  | N | 925 | CONS - POI | True |  |  |  |  |  |  |
| SUB1280 |  | Above Ground Grounding |  | 12d | 2023-07-10 | 2023-07-25 | SUB1110, SUB1200 SS |  |  |  |  | 43d | 9d |  |  |  | N | 929 | CONS - POI | True |  |  |  |  |  |  |
| SUB1230 |  | Install Control Wiring/Fiber |  | 12d | 2023-07-24 | 2023-08-08 | SUB1110, SUB1130, SUB1160 FF, SUB1200 SS, SUB1240 |  |  |  |  | 43d | 0d |  |  |  | N | 924 | CONS - POI | True |  |  |  |  |  |  |
| SUB1220 |  | HV & MV Conductors |  | 10d | 2023-07-25 | 2023-08-07 | SUB1200 |  |  |  |  | 34d | 0d |  |  |  | N | 923 | CONS - POI | True |  |  |  |  |  |  |
| SUB1270 |  | HV Breakers Set/Assemble |  | 2d | 2023-08-01 | 2023-08-02 | SUB1140, PRO.1490 SS, SUB1120, SUB1220 SS+5d |  |  |  |  | 37d | 3d |  |  |  | N | 928 | CONS - POI | True |  |  |  |  |  |  |
| SUB1290 |  | Commissioning (by Engineering) |  | 10d | 2023-08-08 | 2023-08-22 | SUB1250, SUB1220, SUB1110, SUB1270, SUB1280 |  |  |  |  | 34d | 0d |  |  |  | N | 75 | CONS - POI | True |  |  |  |  |  |  |
| SUB1300 |  | Substation Construction Complete (MC) | milestone | 0d | 2023-08-08 | 2023-08-08 | SUB1220 FF, SUB1230 FF, PRO.1370 FF |  |  |  |  | 43d | 9d |  |  |  | N | 930 | CONS - POI | True |  |  |  |  |  |  |
| SUB1260 |  | NETA/NERC Testing |  | 10d | 2023-08-23 | 2023-09-06 | SUB1240, SUB1290, SUB1300 |  |  |  |  | 34d | 0d |  |  |  | N | 927 | CONS - POI | True |  |  |  |  |  |  |
| SUB1310 |  | Ready for Energization |  | 3d | 2023-09-07 | 2023-09-11 | SUB1260 |  |  |  |  | 34d | 0d |  |  |  | N | 931 | CONS - POI | True |  |  |  | Blue Team | True |  |
| SUB1320 |  | Utility Customer Check (In Service-Inspection) |  | 7d | 2023-09-12 | 2023-09-20 | SUB1310 |  |  |  |  | 34d | 0d |  |  |  | N | 387 | CONS - POI | True |  |  |  | Blue Team | True |  |

| ID | WBS | Activity | Type | Duration | Start | Finish | Predecessors | Total float | Calendar | MSP Activity ID | LEVELS | Scope | Requested Expected Finish Approved | Department | Substation Activities | ETL Milestones |
| --- | --- | --- | --- | --- | --- | --- | --- | --- | --- | --- | --- | --- | --- | --- | --- | --- |
|  | WBS8-2 | **Commissioning** |  |  | 2024-02-16 | 2024-06-04 |  |  |  |  |  |  |  |  |  |  |
| A18800 |  | COD Contingency |  | 26d | 2024-02-16 | 2024-03-25 | P1.CX.1150, P2.CX.1150, P3.CX.1150, P4.CX.1150, PM1100, PM1130, PM1120, PM1110 | 0d |  | 935 | LV1 | CX |  |  |  |  |
| CX1010 |  | Commercial Operation Date | milestone | 0d | 2024-03-25 | 2024-03-25 | A18800 FF | 0d |  | 11 | LV1 | CX | N | QA | True |  |
| CX1000 |  | Thermal Flight |  | 20d | 2024-03-26 | 2024-04-22 | KM1070 | 0d |  | 934 | LV1 | CX | N |  |  |  |
| CX1040 |  | Pre-Capacity Testing Preparation |  | 25d | 2024-03-26 | 2024-04-29 | CX1000 SS | 0d | Foggia_5x8 No Holidays | 937 | LV1 | CX | N | QA |  |  |
| CX1020 |  | Capacity Testing |  | 36d | 2024-04-30 | 2024-06-04 | CX1040 | 0d | Foggia_7x8 No Holidays | 936 | LV1 | CX | N | QA |  |  |
| CX1030 |  | Substantial Completion | milestone | 0d | 2024-06-04 | 2024-06-04 | CX1040 FF, CX1020 FF | 0d | Foggia_7x8 No Holidays | 14 | LV1 | CX | N |  | True | SC |
|  | WBS9 | **Final Acceptance** |  |  | 2024-06-05 | 2024-11-25 |  |  |  |  |  |  |  |  |  |  |
| FA1000 |  | Final Seed, Grade and Landscape |  | 60d | 2024-06-05 | 2024-08-29 | CX1030 | 0d |  | 939 |  |  | N |  |  |  |
| FA1010 |  | Punch List Complete |  | 60d | 2024-06-05 | 2024-08-29 | CX1030, FA1000 FF, KM1090 | 0d |  | 940 |  |  | N |  |  |  |
| FA1020 |  | Subcontractor Demobilization |  | 20d | 2024-08-30 | 2024-09-26 | FA1000, FA1010 | 0d |  | 941 |  |  | N |  | True |  |
| FA1030 |  | Site Clean-up Complete |  | 30d | 2024-09-27 | 2024-11-07 | FA1020, FA1010 | 0d |  | 942 |  |  | N |  | True |  |
| FA1040 |  | Record Drawings |  | 15d | 2024-10-11 | 2024-10-31 | FA1030 SS+10d | 18d |  | 943 |  |  | N |  | True |  |
| FA1070 |  | Obtain/Submit Lien Waivers |  | 5d | 2024-10-18 | 2024-10-24 | FA1030 SS+15d | 23d |  | 946 |  |  | N |  |  |  |
| FA1050 |  | Demobilization |  | 12d | 2024-11-08 | 2024-11-25 | FA1030 | 0d |  | 944 |  |  | N |  | True |  |
| FA1060 |  | As-built ALTA |  | 2d | 2024-11-08 | 2024-11-11 | FA1030, FA1040 SS | 11d |  | 945 |  |  | N |  |  |  |
|  | WBS10 | **Close Out** |  |  | 2024-11-20 | 2024-11-26 |  |  |  |  |  |  |  |  |  |  |
| PC1000 |  | Project Close out |  | 5d | 2024-11-20 | 2024-11-26 | FA1070 FF, FA1060 FF, FA1040 FF, FA1050 FF+1d | 0d |  | 17 |  |  | N |  |  |  |

## Activity codes

| Code | Value | Meaning |
| --- | --- | --- |
| Department | CONS - Civil | Civil |
| Department | CONS - MODS | Modules |
| Department | CONS - PILES | Piles |
| Department | CONS - POI | POI |
| Department | CONS - PV_ELEC | PV Electric |
| Department | CONS - RACK | Racking |
| Department | ENG | Engineering |
| Department | LOG | Logistics |
| Department | PROC | Procurement |
| Department | QA | Quality Assurance |
| ETL Milestones | COD | Commercial Operation |
| ETL Milestones | CS | Construction Start / Mobilization |
| ETL Milestones | CX | Commissioning LoE Activity |
| ETL Milestones | Civil | Civil LoE Activity |
| ETL Milestones | Constr | Construction LoE Activity |
| ETL Milestones | EKO | EPC Kickoff |
| ETL Milestones | ENG RFP | Engineering RFP |
| ETL Milestones | ElecLoE | Electrical LoE Activity |
| ETL Milestones | FC | Final Completion |
| ETL Milestones | MC | Mechanical Completion |
| ETL Milestones | Mech | Mechanical LoE Activity |
| ETL Milestones | Modules | Module LoE Activity |
| ETL Milestones | PIS | Placed In Service |
| ETL Milestones | POI | POI LoE Activity |
| ETL Milestones | Piles | Pile LoE Activity |
| ETL Milestones | RFC | Ready for Construction |
| ETL Milestones | Racking | Racking LoE Activity |
| ETL Milestones | SC | Substantial Completion |
| ETL Milestones | SubMob | Substation Construction Mobilization |
| ETL Procurement Scope | 01 | GSU |
| ETL Procurement Scope | 02 | Racking |
| ETL Procurement Scope | 03 | Modules |
| ETL Procurement Scope | 04 | Inverters |
| ETL Procurement Scope | 05 | Structures & Equipment |
| ETL Procurement Scope | 06 | BLA / Combiner Boxes |
| ETL Procurement Scope | 07 | DC Disconnect Boxes |
| ETL Procurement Scope | 08 | DC Wire |
| ETL Procurement Scope | 09 | MV Wire |
| ETL Procurement Scope | 12 | SCADA |
| ETL Procurement Task | PT01 | Quote/PO |
| ETL Procurement Task | PT02 | Order/Lead Time |
| ETL Procurement Task | PT04 | Delivery |
| Execution Teams | Blue Team | Blue |
| LEVELS | LV1 | Level 1 |
| PBB | PBB_BLA | Combiner Box/BLA |
| PBB | PBB_DCW | DC Wire |
| PBB | PBB_ENCLOSURE | Control Enclosure |
| PBB | PBB_GSU | GSU |
| PBB | PBB_HVB | HV Breaker |
| PBB | PBB_IFC_ELEC | IFC_ELEC |
| PBB | PBB_IFP_ELEC | IFP_ELEC |
| PBB | PBB_INV | Inverter |
| PBB | PBB_MODS | Modules |
| PBB | PBB_MVB | MV Breaker |
| PBB | PBB_MVW | MV Wire |
| PBB | PBB_POST | Posts |
| PBB | PBB_PRESET | PRESET |
| PBB | PBB_Pre-Con SLD | Pre-Con SLD |
| PBB | PBB_RACK | Racking |
| PBB | PBB_RELAY | Relay Panel |
| PBB | PBB_S&E | Structures & Equipment |
| PBB | PBB_SCADA | SCADA |
| PBB | PBB_XFMR | XFMR |
| Pre-requisites | ENG_PREREQ | Engineering Pre-requisite |
| Pre-requisites | PROC_PREREQ | Procurement Pre-requisite |
| Scope | CX | Final Comissioning |
| Scope | KEY | Key Milestones |
| Scope | MC | Mechanical Completion |
| Scope | PIS | Places in Service |
| Scope | PROC | Procurement |
| Scope | SUB | Substation |
