# Z2 Project Sheet Piling Works Plan - Bund

Schedule from Primavera P6, 2026-04-01 to 2026-07-31, data date 2026-04-01, costs in INR.

## Calendars

- Z2 7-Day 8h Workweek: Mon-Sun 08:00-16:00.

## Resources

| Resource | Group |
| --- | --- |
| Sub-Agency | labor |
| Vibro Hammer Machine | equipment |
| Sheet Pile Crew | labor |

## Schedule

| ID | WBS | Activity | Type | Duration | Start | Finish | Predecessors | Total float | Resources | Cost | Quantity Nos | Area SqMtr |
| --- | --- | --- | --- | --- | --- | --- | --- | --- | --- | --- | --- | --- |
| A1001 |  | Project Start Milestone | milestone | 0d | 2026-04-01 | 2026-04-01 |  | 0d |  |  |  |  |
| A9999 |  | Project Finish Milestone | milestone | 0d | 2026-07-31 | 2026-07-31 | A4710, A4810, A4910, A5010, A3010, A3020, A3030, A2030 | 0d |  |  |  |  |
|  | MOB | **Z2 Sheetpile installation Plan by Zone & Priority** |  |  | 2026-04-01 | 2026-06-01 |  |  |  |  |  |  |
| A1010 |  | LOI Issuance to balance 02 Agency |  | 43d | 2026-04-01 | 2026-05-14 | A1001 | 0d | Sub-Agency [344 h] | 344 |  |  |
| A1020 |  | Deploy 3 Sub-Agencies at Site |  | 44d | 2026-04-01 | 2026-05-15 | A1001 | 0d | Sub-Agency [1056 h] | 1,056 |  |  |
| A1040 |  | Mobilize Next 4 Machines with Vibro Hammer |  | 53d | 2026-04-01 | 2026-05-24 | A1001 | 0d |  |  |  |  |
| A1050 |  | Mobilize Next 8 Machines with Vibro Hammer |  | 61d | 2026-04-01 | 2026-06-01 | A1001 | 0d |  |  |  |  |
| A1030 |  | Initial 3 Machines with Vibro Hammer Available | milestone | 0d | 2026-04-01 | 2026-04-01 | A1001 | 0d |  |  |  |  |
| A1060 |  | Working Hour Step-Up 8 Hr Shift May W-3 | milestone | 0d | 2026-05-18 | 2026-05-18 | A1001 FS+47d | 0d |  |  |  |  |
| A1070 |  | Working Hour Step-Up 12 Hr Shift May W-4 | milestone | 0d | 2026-05-25 | 2026-05-25 | A1001 FS+54d | 0d |  |  |  |  |
| A1080 |  | Working Hour Step-Up 16 Hr 2-Shift Jun W-1 | milestone | 0d | 2026-06-01 | 2026-06-01 | A1050 | 0d |  |  |  |  |
|  | MATL | **2 Overall Material Delivery Plan** |  |  | 2026-04-01 | 2026-07-31 |  |  |  |  |  |  |
|  | MATL1 | **2.1 Sheet-01 Hongzhi China - 121770 Nos** |  |  | 2026-04-01 | 2026-04-26 |  |  |  |  |  |  |
| A2010 |  | Sheet-01 Hongzhi China Material Delivery 121770 Nos |  | 25d | 2026-04-01 | 2026-04-26 | A1001 | 0d |  |  | 121770 | 286888 |
|  | MATL2 | **2.2 Sheet-02 ZHIZHENG - 34040 Nos** |  |  | 2026-04-01 | 2026-06-14 |  |  |  |  |  |  |
| A2020 |  | Sheet-02 ZHIZHENG Material Delivery 34040 Nos |  | 74d | 2026-04-01 | 2026-06-14 | A1001 | 0d |  |  | 34040 | 96948 |
|  | MATL3 | **2.3 Sheet-03 EIETRUCGA - 9120 Nos** |  |  | 2026-04-13 | 2026-07-31 |  |  |  |  |  |  |
| A2030 |  | Sheet-03 EIETRUCGA Material Delivery 9120 Nos |  | 109d | 2026-04-13 | 2026-07-31 | A1001 FS+12d | 0d |  |  | 9120 | 18000 |
|  | INST | **3 Overall Installation Plan** |  |  | 2026-04-01 | 2026-07-31 |  |  |  |  |  |  |
|  | INST1 | **3.1 Sheet-01 Installation** |  |  | 2026-04-01 | 2026-06-07 |  |  |  |  |  |  |
| A3010 |  | Sheet-01 Installation Plan 121770 Nos |  | 67d | 2026-04-01 | 2026-06-07 | A1001, A2010 SS | 0d | Vibro Hammer Machine [13496 h]; Sheet Pile Crew [94472 h] | 107,968 | 121770 | 286888 |
|  | INST2 | **3.2 Sheet-02 Installation** |  |  | 2026-04-01 | 2026-06-14 |  |  |  |  |  |  |
| A3020 |  | Sheet-02 Installation Plan 34040 Nos |  | 74d | 2026-04-01 | 2026-06-14 | A1001, A2020 SS | 0d | Vibro Hammer Machine [3696 h]; Sheet Pile Crew [25872 h] | 29,568 | 34040 | 96948 |
|  | INST3 | **3.3 Sheet-03 Installation** |  |  | 2026-05-01 | 2026-07-31 |  |  |  |  |  |  |
| A3030 |  | Sheet-03 Installation Plan 9120 Nos |  | 91d | 2026-05-01 | 2026-07-31 | A2030 SS | 0d | Vibro Hammer Machine [1680 h]; Sheet Pile Crew [11760 h] | 13,440 | 9120 | 18000 |

Notes:
- A1001: Notes: Z2 Sheet Piling - Source notes. Productivity per machine: 4/hr; 32/8h; 48/12h; 64/16h. Manpower per machine: 6/shift; 11/2-shift. Night efficiency 0.6. Sheet areas SqM: Sheet-1=286888 Sheet-2=96948 Sheet-3=18000. Conversion SqM/No: Sheet-1=2.356 Sheet-2=2.848 Sheet-3=1.974. Note 1: Required complete availability with all accessories for each set of machines. Note 2: Priority zones to be handed over 2 days before scheduled start. Note 3: Machine tools and manpower deployment per schedule.
- A1010: Notes: LOI to balance 02 agency by 14-May-26
- A1020: Notes: All 3 sub-agencies deployed by 15-May-26
- A1040: Notes: Next 4 machines by 24-May-26
- A1050: Notes: Next 8 machines by 1-Jun-26; enables 2-shift 16h working
- A1030: Notes: 3 machines already at site
- A1060: Notes: May W-3 8 hr/day
- A1070: Notes: May W-4 12 hr/day 6am-12 and 3-9pm
- A1080: Notes: Jun W-1 onwards 16 hr/day 2 shifts
- A2010: Notes: Weekly: 80325 22895 12770 5778
- A2020: Notes: Spread over 12 weeks
- A2030: Notes: Intermittent weekly deliveries
- A3010: Notes: Peak 25 machines 175 manpower 241 machine-weeks
- A3020: Notes: Peak 7 machines 49 manpower 66 machine-weeks
- A3030: Notes: Peak 5 machines 35 manpower 30 machine-weeks

| ID | WBS | Activity | Duration | Start | Finish | Predecessors | Total float | Resources | Cost | Quantity Nos | Pile Type | Length Km |
| --- | --- | --- | --- | --- | --- | --- | --- | --- | --- | --- | --- | --- |
|  | PRIO | **4 Priority Zone Plan Bund Sheet Pile** |  | 2026-05-17 | 2026-07-31 |  |  |  |  |  |  |  |
|  | Z35P1 | **4.01 Zone-35 Priority-01 Length 5.07 Km** |  | 2026-05-17 | 2026-06-24 |  |  |  |  |  |  |  |
| A4103 |  | Material Delivery Sheet Pile 12X735X5.5 Zone-35 - 3500 Nos | 23d | 2026-05-17 | 2026-06-09 |  | 0d |  |  | 3500 | 12X735X5.5 | 5.07 |
| A4110 |  | Zone-35 Sheet Pile Installation P-01 5.07 Km 6221 Nos | 38d | 2026-05-17 | 2026-06-24 | A4101 SS+26d, A4102 SS+23d, A4103 SS, A1030 | 0d | Vibro Hammer Machine [1064 h]; Sheet Pile Crew [6384 h] | 7,448 | 6221 |  | 5.07 |
| A4102 |  | Material Delivery Sheet Pile 10.4X735X5 Zone-35 - 544 Nos | 3d | 2026-06-09 | 2026-06-12 |  | 0d |  |  | 544 | 10.4X735X5 | 5.07 |
| A4101 |  | Material Delivery Sheet Pile 10.4X735X4.75 Zone-35 - 2177 Nos | 12d | 2026-06-12 | 2026-06-24 |  | 0d |  |  | 2177 | 10.4X735X4.75 | 5.07 |
|  | Z30P2 | **4.02 Zone-30 Priority-02 Length 3.98 Km** |  | 2026-05-25 | 2026-06-15 |  |  |  |  |  |  |  |
| A4201 |  | Material Delivery Sheet Pile 7.2X606X4.5 Zone-30 - 1323 Nos | 12d | 2026-05-25 | 2026-06-06 |  | 0d |  |  | 1323 | 7.2X606X4.5 | 3.98 |
| A4210 |  | Zone-30 Sheet Pile Installation P-02 3.98 Km 2163 Nos | 21d | 2026-05-25 | 2026-06-15 | A4201 SS, A4202 SS+12d, A4203 SS+13d, A1010, A4110 SS+8d | 0d | Vibro Hammer Machine [392 h]; Sheet Pile Crew [2352 h] | 2,744 | 2163 |  | 3.98 |
| A4202 |  | Material Delivery Sheet Pile 10.4X735X5.25 Zone-30 - 24 Nos | 1d | 2026-06-06 | 2026-06-07 |  | 0d |  |  | 24 | 10.4X735X5.25 | 3.98 |
| A4203 |  | Material Delivery Sheet Pile 10.4X735X5 Zone-30 - 816 Nos | 8d | 2026-06-07 | 2026-06-15 |  | 0d |  |  | 816 | 10.4X735X5 | 3.98 |
|  | Z39P3 | **4.03 Zone-39 Priority-03 Length 1.55 Km** |  | 2026-05-25 | 2026-06-08 |  |  |  |  |  |  |  |
| A4302 |  | Material Delivery Sheet Pile 12X735X5.5 Zone-39 - 719 Nos | 11d | 2026-05-25 | 2026-06-05 |  | 0d |  |  | 719 | 12X735X5.5 | 1.55 |
| A4310 |  | Zone-39 Sheet Pile Installation P-03 1.55 Km 1429 Nos | 14d | 2026-05-25 | 2026-06-08 | A4301 SS+11d, A4302 SS, A1010, A4210 SS | 0d | Vibro Hammer Machine [336 h]; Sheet Pile Crew [2016 h] | 2,352 | 1429 |  | 1.55 |
| A4301 |  | Material Delivery Sheet Pile 10.4X735X4.75 Zone-39 - 710 Nos | 3d | 2026-06-05 | 2026-06-08 |  | 0d |  |  | 710 | 10.4X735X4.75 | 1.55 |
|  | Z25P4 | **4.04 Zone-25 Priority-04 Length 4.07 Km** |  | 2026-06-02 | 2026-06-29 |  |  |  |  |  |  |  |
| A4401 |  | Material Delivery Sheet Pile 7.2X606X3.75 Zone-25 - 618 Nos | 3d | 2026-06-02 | 2026-06-05 |  | 0d |  |  | 618 | 7.2X606X3.75 | 4.07 |
| A4410 |  | Zone-25 Sheet Pile Installation P-04 4.07 Km 1943 Nos | 27d | 2026-06-02 | 2026-06-29 | A4401 SS, A4402 SS+3d, A4403 SS+6d, A4404 SS+15d, A1020, A1040, A4310 SS+8d | 0d | Vibro Hammer Machine [336 h]; Sheet Pile Crew [2016 h] | 2,352 | 1943 |  | 4.07 |
| A4402 |  | Material Delivery Sheet Pile 10.4X735X4.75 Zone-25 - 329 Nos | 1d | 2026-06-05 | 2026-06-06 |  | 0d |  |  | 329 | 10.4X735X4.75 | 4.07 |
| A4403 |  | Material Delivery Sheet Pile 10.4X735X3.75 Zone-25 - 378 Nos | 9d | 2026-06-08 | 2026-06-17 |  | 0d |  |  | 378 | 10.4X735X3.75 | 4.07 |
| A4404 |  | Material Delivery Sheet Pile 7.2X606X3.5 Zone-25 - 618 Nos | 12d | 2026-06-17 | 2026-06-29 |  | 0d |  |  | 618 | 7.2X606X3.5 | 4.07 |
|  | Z38P5 | **4.05 Zone-38 Priority-05 Length 3.14 Km** |  | 2026-06-01 | 2026-06-22 |  |  |  |  |  |  |  |
| A4501 |  | Material Delivery Sheet Pile 7.2X606X4.5 Zone-38 - 3733 Nos | 14d | 2026-06-01 | 2026-06-15 |  | 0d |  |  | 3733 | 7.2X606X4.5 | 3.14 |
| A4510 |  | Zone-38 Sheet Pile Installation P-05 3.14 Km 5168 Nos | 21d | 2026-06-01 | 2026-06-22 | A4501 SS, A4502 SS+15d, A4503 SS+20d, A1020, A1040, A4410 SS | 0d | Vibro Hammer Machine [784 h]; Sheet Pile Crew [4704 h] | 5,488 | 5168 |  | 3.14 |
| A4502 |  | Material Delivery Sheet Pile 7.2X606X4.75 Zone-38 - 512 Nos | 5d | 2026-06-16 | 2026-06-21 |  | 0d |  |  | 512 | 7.2X606X4.75 | 3.14 |
| A4503 |  | Material Delivery Sheet Pile 10.4X735X4.75 Zone-38 - 923 Nos | 1d | 2026-06-21 | 2026-06-22 |  | 0d |  |  | 923 | 10.4X735X4.75 | 3.14 |

Notes:
- A4103: Notes: Zone-35 Priority-01
- A4110: Notes: Zone-35 Priority-01 length 5.07 Km; peak 4 machines 24 manpower; 19 machine-weeks
- A4102: Notes: Zone-35 Priority-01
- A4101: Notes: Zone-35 Priority-01 length 5.07 Km
- A4201: Notes: Zone-30 Priority-02 length 3.98 Km
- A4210: Notes: Zone-30 Priority-02 length 3.98 Km; peak 2 machines 12 manpower; 7 machine-weeks
- A4202: Notes: Zone-30 Priority-02
- A4203: Notes: Zone-30 Priority-02
- A4302: Notes: Zone-39 Priority-03
- A4310: Notes: Zone-39 Priority-03 length 1.55 Km; peak 2 machines 12 manpower; 6 machine-weeks
- A4301: Notes: Zone-39 Priority-03
- A4401: Notes: Zone-25 Priority-04
- A4410: Notes: Zone-25 Priority-04 length 4.07 Km; peak 2 machines 12 manpower; 6 machine-weeks
- A4402: Notes: Zone-25 Priority-04
- A4403: Notes: Zone-25 Priority-04
- A4404: Notes: Zone-25 Priority-04
- A4501: Notes: Zone-38 Priority-05
- A4510: Notes: Zone-38 Priority-05 length 3.14 Km; peak 4 machines 24 manpower; 14 machine-weeks
- A4502: Notes: Zone-38 Priority-05
- A4503: Notes: Zone-38 Priority-05

| ID | WBS | Activity | Duration | Start | Finish | Predecessors | Total float | Resources | Cost | Quantity Nos | Pile Type | Length Km |
| --- | --- | --- | --- | --- | --- | --- | --- | --- | --- | --- | --- | --- |
|  | Z24P6 | **4.06 Zone-24 Priority-06 Length 3.07 Km** |  | 2026-06-01 | 2026-07-04 |  |  |  |  |  |  |  |
| A4601 |  | Material Delivery Sheet Pile 7.2X606X4.5 Zone-24 - 3135 Nos | 28d | 2026-06-01 | 2026-06-29 |  | 0d |  |  | 3135 | 7.2X606X4.5 | 3.07 |
| A4610 |  | Zone-24 Sheet Pile Installation P-06 3.07 Km 4167 Nos | 33d | 2026-06-01 | 2026-07-04 | A4601 SS, A4602 SS+28d, A1020, A1040, A4510 SS | 0d | Vibro Hammer Machine [840 h]; Sheet Pile Crew [5040 h] | 5,880 | 4167 |  | 3.07 |
| A4602 |  | Material Delivery Sheet Pile 10.4X735X4.75 Zone-24 - 1032 Nos | 5d | 2026-06-29 | 2026-07-04 |  | 0d |  |  | 1032 | 10.4X735X4.75 | 3.07 |
|  | Z37P7 | **4.07 Zone-37 Priority-07 Length 3.56 Km** |  | 2026-06-14 | 2026-07-04 |  |  |  |  |  |  |  |
| A4701 |  | Material Delivery Sheet Pile 7.2X606X4.5 Zone-37 - 5876 Nos | 20d | 2026-06-14 | 2026-07-04 |  | 0d |  |  | 5876 | 7.2X606X4.5 | 3.56 |
| A4710 |  | Zone-37 Sheet Pile Installation P-07 3.56 Km 5876 Nos | 20d | 2026-06-14 | 2026-07-04 | A4701 SS, A1050, A4610 SS+13d | 0d | Vibro Hammer Machine [1512 h]; Sheet Pile Crew [9072 h] | 10,584 | 5876 |  | 3.56 |
|  | Z36P8 | **4.08 Zone-36 Priority-08 Length 4.59 Km** |  | 2026-06-21 | 2026-07-04 |  |  |  |  |  |  |  |
| A4801 |  | Material Delivery Sheet Pile 7.2X606X4.5 Zone-36 - 615 Nos | 13d | 2026-06-21 | 2026-07-04 |  | 0d |  |  | 615 | 7.2X606X4.5 | 4.59 |
| A4810 |  | Zone-36 Sheet Pile Installation P-08 4.59 Km 615 Nos | 13d | 2026-06-21 | 2026-07-04 | A4801 SS, A1050, A4710 SS+7d | 0d | Vibro Hammer Machine [168 h]; Sheet Pile Crew [1008 h] | 1,176 | 615 |  | 4.59 |
|  | Z31P9 | **4.09 Zone-31 Priority-09 Length 1.74 Km** |  | 2026-06-21 | 2026-07-31 |  |  |  |  |  |  |  |
| A4901 |  | Material Delivery Sheet Pile 7.2X606X4.5 Zone-31 | 40d | 2026-06-21 | 2026-07-31 |  | 0d |  |  | 4586 | 7.2X606X4.5 | 1.74 |
| A4910 |  | Zone-31 Sheet Pile Installation P-09 1.74 Km | 40d | 2026-06-21 | 2026-07-31 | A4901 SS, A1050, A4810 SS | 0d | Vibro Hammer Machine [280 h]; Sheet Pile Crew [1680 h] | 1,960 | 4586 |  | 1.74 |
|  | Z26P10 | **4.10 Zone-26 Priority-10 Length 3.96 Km** |  | 2026-07-01 | 2026-07-31 |  |  |  |  |  |  |  |
| A5001 |  | Material Delivery Sheet Pile 7.2X606X4.5 Zone-26 | 30d | 2026-07-01 | 2026-07-31 |  | 0d |  |  |  | 7.2X606X4.5 | 3.96 |
| A5010 |  | Zone-26 Sheet Pile Installation P-10 3.96 Km | 30d | 2026-07-01 | 2026-07-31 | A5001 SS, A1050, A4910 SS+10d | 0d |  |  |  |  | 3.96 |

Notes:
- A4601: Notes: Zone-24 Priority-06
- A4610: Notes: Zone-24 Priority-06 length 3.07 Km; peak 4 machines 24 manpower; 15 machine-weeks
- A4602: Notes: Zone-24 Priority-06
- A4701: Notes: Zone-37 Priority-07
- A4710: Notes: Zone-37 Priority-07 length 3.56 Km; peak 9 machines 54 manpower; 27 machine-weeks
- A4801: Notes: Zone-36 Priority-08
- A4810: Notes: Zone-36 Priority-08 length 4.59 Km; peak 1 machine 6 manpower; 3 machine-weeks
- A4901: Notes: Zone-31 Priority-09 length 1.74 Km; dates inferred from weekly numbers
- A4910: Notes: Zone-31 Priority-09 length 1.74 Km; dates inferred from source weekly numbers
- A5001: Notes: Zone-26 Priority-10 length 3.96 Km; not scheduled in source
- A5010: Notes: Zone-26 Priority-10 length 3.96 Km; not scheduled in source
